| activity_id | wbs | phase | scope | title | duration_workdays | duration_basis | quantity_basis | crew_category | crew_basis | source_refs | status | logic_type | lag_workdays | planned_start_workday | planned_finish_workday | latest_finish_workday | latest_start_workday | total_float_workdays | critical | predecessor_ids | engineering_hold | quantity | quantity_unit |
| --- | --- | --- | --- | --- | --- | --- | --- | --- | --- | --- | --- | --- | --- | --- | --- | --- | --- | --- | --- | --- | --- | --- | --- |
| HAR-0001 | HAR.MILESTONES.START | MILESTONES | START | Start of provisional planning reference | 0 | MILESTONE_ZERO_DURATION | NOT_MEASURED | GENERAL_CIVIL_REFERENCE | REFERENCE_ONLY_NOT_ACTUAL_SITE_ALLOCATION | OWNER-DIRECTION-2026-11-13 | PROPOSED_NOT_ADMITTED_TO_APPROVED_WBS | FS | 0 | 0 | 0 | 0 | 0 | 0 | True |  |  |  |  |
| HAR-0002 | HAR.PRECONSTRUCTION.GOV | PRECONSTRUCTION | GOV | Establish project document register | 1 | ILLUSTRATIVE_CREW_PLANNING_SEED_NOT_APPROVED | NOT_MEASURED | GENERAL_CIVIL_REFERENCE | REFERENCE_ONLY_NOT_ACTUAL_SITE_ALLOCATION | ARC-2026, STR-2026, RPT-2083, OWNER-DIRECTION-2026-11-13 | PROPOSED_NOT_ADMITTED_TO_APPROVED_WBS | FS | 0 | 0 | 1 | 1 | 0 | 0 | True | HAR-0001 |  |  |  |
| HAR-0003 | HAR.PRECONSTRUCTION.GOV | PRECONSTRUCTION | GOV | Archive received source versions and preserve filenames | 1 | ILLUSTRATIVE_CREW_PLANNING_SEED_NOT_APPROVED | NOT_MEASURED | GENERAL_CIVIL_REFERENCE | REFERENCE_ONLY_NOT_ACTUAL_SITE_ALLOCATION | ARC-2026, STR-2026, RPT-2083, OWNER-DIRECTION-2026-11-13 | PROPOSED_NOT_ADMITTED_TO_APPROVED_WBS | FS | 0 | 1 | 2 | 2 | 1 | 0 | True | HAR-0002 |  |  |  |
| HAR-0004 | HAR.PRECONSTRUCTION.GOV | PRECONSTRUCTION | GOV | Record report M25 precedence and M20 supersession | 1 | ILLUSTRATIVE_CREW_PLANNING_SEED_NOT_APPROVED | NOT_MEASURED | GENERAL_CIVIL_REFERENCE | REFERENCE_ONLY_NOT_ACTUAL_SITE_ALLOCATION | ARC-2026, STR-2026, RPT-2083, OWNER-DIRECTION-2026-11-13 | PROPOSED_NOT_ADMITTED_TO_APPROVED_WBS | FS | 0 | 2 | 3 | 3 | 2 | 0 | True | HAR-0003 |  |  |  |
| HAR-0005 | HAR.PRECONSTRUCTION.GOV | PRECONSTRUCTION | GOV | Confirm without-basement construction scenario | 1 | ILLUSTRATIVE_CREW_PLANNING_SEED_NOT_APPROVED | NOT_MEASURED | GENERAL_CIVIL_REFERENCE | REFERENCE_ONLY_NOT_ACTUAL_SITE_ALLOCATION | ARC-2026, STR-2026, RPT-2083, OWNER-DIRECTION-2026-11-13 | PROPOSED_NOT_ADMITTED_TO_APPROVED_WBS | FS | 0 | 3 | 4 | 4 | 3 | 0 | True | HAR-0004 | True |  |  |
| HAR-0006 | HAR.PRECONSTRUCTION.GOV | PRECONSTRUCTION | GOV | Review permit, municipal conditions and allowable site works | 2 | ILLUSTRATIVE_CREW_PLANNING_SEED_NOT_APPROVED | NOT_MEASURED | GENERAL_CIVIL_REFERENCE | REFERENCE_ONLY_NOT_ACTUAL_SITE_ALLOCATION | ARC-2026, STR-2026, RPT-2083, OWNER-DIRECTION-2026-11-13 | PROPOSED_NOT_ADMITTED_TO_APPROVED_WBS | FS | 0 | 4 | 6 | 6 | 4 | 0 | True | HAR-0005 |  |  |  |
| HAR-0007 | HAR.PRECONSTRUCTION.GOV | PRECONSTRUCTION | GOV | Check project boundaries against registered land survey | 3 | ILLUSTRATIVE_CREW_PLANNING_SEED_NOT_APPROVED | NOT_MEASURED | GENERAL_CIVIL_REFERENCE | REFERENCE_ONLY_NOT_ACTUAL_SITE_ALLOCATION | ARC-2026, STR-2026, RPT-2083, OWNER-DIRECTION-2026-11-13 | PROPOSED_NOT_ADMITTED_TO_APPROVED_WBS | FS | 0 | 6 | 9 | 9 | 6 | 0 | True | HAR-0006 |  |  |  |
| HAR-0008 | HAR.PRECONSTRUCTION.GOV | PRECONSTRUCTION | GOV | Reconcile architectural ground footprint and working grid | 3 | ILLUSTRATIVE_CREW_PLANNING_SEED_NOT_APPROVED | NOT_MEASURED | GENERAL_CIVIL_REFERENCE | REFERENCE_ONLY_NOT_ACTUAL_SITE_ALLOCATION | ARC-2026, STR-2026, RPT-2083, OWNER-DIRECTION-2026-11-13 | PROPOSED_NOT_ADMITTED_TO_APPROVED_WBS | FS | 0 | 9 | 12 | 12 | 9 | 0 | True | HAR-0007 | True |  |  |
| HAR-0009 | HAR.PRECONSTRUCTION.GOV | PRECONSTRUCTION | GOV | Review geotechnical test status and founding-level assumption | 2 | ILLUSTRATIVE_CREW_PLANNING_SEED_NOT_APPROVED | NOT_MEASURED | GENERAL_CIVIL_REFERENCE | REFERENCE_ONLY_NOT_ACTUAL_SITE_ALLOCATION | ARC-2026, STR-2026, RPT-2083, OWNER-DIRECTION-2026-11-13 | PROPOSED_NOT_ADMITTED_TO_APPROVED_WBS | FS | 0 | 12 | 14 | 14 | 12 | 0 | True | HAR-0008 |  |  |  |
| HAR-0010 | HAR.PRECONSTRUCTION.GOV | PRECONSTRUCTION | GOV | Confirm governing structural report design inputs and seismic conditions | 3 | ILLUSTRATIVE_CREW_PLANNING_SEED_NOT_APPROVED | NOT_MEASURED | GENERAL_CIVIL_REFERENCE | REFERENCE_ONLY_NOT_ACTUAL_SITE_ALLOCATION | ARC-2026, STR-2026, RPT-2083, OWNER-DIRECTION-2026-11-13 | PROPOSED_NOT_ADMITTED_TO_APPROVED_WBS | FS | 0 | 14 | 17 | 17 | 14 | 0 | True | HAR-0009 | True |  |  |
| HAR-0011 | HAR.PRECONSTRUCTION.GOV | PRECONSTRUCTION | GOV | Confirm review authority and inspection hold points | 1 | ILLUSTRATIVE_CREW_PLANNING_SEED_NOT_APPROVED | NOT_MEASURED | GENERAL_CIVIL_REFERENCE | REFERENCE_ONLY_NOT_ACTUAL_SITE_ALLOCATION | ARC-2026, STR-2026, RPT-2083, OWNER-DIRECTION-2026-11-13 | PROPOSED_NOT_ADMITTED_TO_APPROVED_WBS | FS | 0 | 17 | 18 | 18 | 17 | 0 | True | HAR-0010 | True |  |  |
| HAR-0012 | HAR.PRECONSTRUCTION.GOV | PRECONSTRUCTION | GOV | Review footing profile / taper edge dimensions | 2 | ILLUSTRATIVE_CREW_PLANNING_SEED_NOT_APPROVED | NOT_MEASURED | GENERAL_CIVIL_REFERENCE | REFERENCE_ONLY_NOT_ACTUAL_SITE_ALLOCATION | ARC-2026, STR-2026, RPT-2083, OWNER-DIRECTION-2026-11-13 | PROPOSED_NOT_ADMITTED_TO_APPROVED_WBS | FS | 0 | 18 | 20 | 20 | 18 | 0 | True | HAR-0011 |  |  |  |
| HAR-0013 | HAR.PRECONSTRUCTION.GOV | PRECONSTRUCTION | GOV | Review column confinement / six-legged hoop details and BBS | 2 | ILLUSTRATIVE_CREW_PLANNING_SEED_NOT_APPROVED | NOT_MEASURED | GENERAL_CIVIL_REFERENCE | REFERENCE_ONLY_NOT_ACTUAL_SITE_ALLOCATION | ARC-2026, STR-2026, RPT-2083, OWNER-DIRECTION-2026-11-13 | PROPOSED_NOT_ADMITTED_TO_APPROVED_WBS | FS | 0 | 20 | 22 | 22 | 20 | 0 | True | HAR-0012 |  |  |  |
| HAR-0014 | HAR.PRECONSTRUCTION.GOV | PRECONSTRUCTION | GOV | Reconcile beam, slab and shear-wall rebar details | 3 | ILLUSTRATIVE_CREW_PLANNING_SEED_NOT_APPROVED | NOT_MEASURED | GENERAL_CIVIL_REFERENCE | REFERENCE_ONLY_NOT_ACTUAL_SITE_ALLOCATION | ARC-2026, STR-2026, RPT-2083, OWNER-DIRECTION-2026-11-13 | PROPOSED_NOT_ADMITTED_TO_APPROVED_WBS | FS | 0 | 22 | 25 | 25 | 22 | 0 | True | HAR-0013 | True |  |  |
| HAR-0015 | HAR.PRECONSTRUCTION.GOV | PRECONSTRUCTION | GOV | Reconcile lift pit, tanks, underground services and load paths | 2 | ILLUSTRATIVE_CREW_PLANNING_SEED_NOT_APPROVED | NOT_MEASURED | GENERAL_CIVIL_REFERENCE | REFERENCE_ONLY_NOT_ACTUAL_SITE_ALLOCATION | ARC-2026, STR-2026, RPT-2083, OWNER-DIRECTION-2026-11-13 | PROPOSED_NOT_ADMITTED_TO_APPROVED_WBS | FS | 0 | 25 | 27 | 27 | 25 | 0 | True | HAR-0014 | True |  |  |
| HAR-0016 | HAR.PRECONSTRUCTION.GOV | PRECONSTRUCTION | GOV | Reconcile with-basement BOQ as archived alternate only | 1 | ILLUSTRATIVE_CREW_PLANNING_SEED_NOT_APPROVED | NOT_MEASURED | GENERAL_CIVIL_REFERENCE | REFERENCE_ONLY_NOT_ACTUAL_SITE_ALLOCATION | ARC-2026, STR-2026, RPT-2083, OWNER-DIRECTION-2026-11-13 | PROPOSED_NOT_ADMITTED_TO_APPROVED_WBS | FS | 0 | 27 | 28 | 28 | 27 | 0 | True | HAR-0015 | True |  |  |
| HAR-0017 | HAR.PRECONSTRUCTION.GOV | PRECONSTRUCTION | GOV | Map without-basement BOQ items to planned work packages | 2 | ILLUSTRATIVE_CREW_PLANNING_SEED_NOT_APPROVED | NOT_MEASURED | GENERAL_CIVIL_REFERENCE | REFERENCE_ONLY_NOT_ACTUAL_SITE_ALLOCATION | ARC-2026, STR-2026, RPT-2083, OWNER-DIRECTION-2026-11-13 | PROPOSED_NOT_ADMITTED_TO_APPROVED_WBS | FS | 0 | 28 | 30 | 30 | 28 | 0 | True | HAR-0016 |  |  |  |
| HAR-0018 | HAR.PRECONSTRUCTION.GOV | PRECONSTRUCTION | GOV | Agree subcontractor scopes and measurement rules | 2 | ILLUSTRATIVE_CREW_PLANNING_SEED_NOT_APPROVED | NOT_MEASURED | GENERAL_CIVIL_REFERENCE | REFERENCE_ONLY_NOT_ACTUAL_SITE_ALLOCATION | ARC-2026, STR-2026, RPT-2083, OWNER-DIRECTION-2026-11-13 | PROPOSED_NOT_ADMITTED_TO_APPROVED_WBS | FS | 0 | 30 | 32 | 32 | 30 | 0 | True | HAR-0017 |  |  |  |
| HAR-0019 | HAR.PRECONSTRUCTION.GOV | PRECONSTRUCTION | GOV | Prepare activity-specific safety and quality inspection plan | 2 | ILLUSTRATIVE_CREW_PLANNING_SEED_NOT_APPROVED | NOT_MEASURED | GENERAL_CIVIL_REFERENCE | REFERENCE_ONLY_NOT_ACTUAL_SITE_ALLOCATION | ARC-2026, STR-2026, RPT-2083, OWNER-DIRECTION-2026-11-13 | PROPOSED_NOT_ADMITTED_TO_APPROVED_WBS | FS | 0 | 32 | 34 | 34 | 32 | 0 | True | HAR-0018 |  |  |  |
| HAR-0020 | HAR.PRECONSTRUCTION.GOV | PRECONSTRUCTION | GOV | Prepare concrete test and materials acceptance regime | 2 | ILLUSTRATIVE_CREW_PLANNING_SEED_NOT_APPROVED | NOT_MEASURED | GENERAL_CIVIL_REFERENCE | REFERENCE_ONLY_NOT_ACTUAL_SITE_ALLOCATION | ARC-2026, STR-2026, RPT-2083, OWNER-DIRECTION-2026-11-13 | PROPOSED_NOT_ADMITTED_TO_APPROVED_WBS | FS | 0 | 34 | 36 | 36 | 34 | 0 | True | HAR-0019 |  |  |  |
| HAR-0021 | HAR.PRECONSTRUCTION.GOV | PRECONSTRUCTION | GOV | Confirm working calendar and realistic crew capacities | 1 | ILLUSTRATIVE_CREW_PLANNING_SEED_NOT_APPROVED | NOT_MEASURED | GENERAL_CIVIL_REFERENCE | REFERENCE_ONLY_NOT_ACTUAL_SITE_ALLOCATION | ARC-2026, STR-2026, RPT-2083, OWNER-DIRECTION-2026-11-13 | PROPOSED_NOT_ADMITTED_TO_APPROVED_WBS | FS | 0 | 36 | 37 | 37 | 36 | 0 | True | HAR-0020 | True |  |  |
| HAR-0022 | HAR.PRECONSTRUCTION.GOV | PRECONSTRUCTION | GOV | Review access and storage locations for constrained site logistics | 2 | ILLUSTRATIVE_CREW_PLANNING_SEED_NOT_APPROVED | NOT_MEASURED | GENERAL_CIVIL_REFERENCE | REFERENCE_ONLY_NOT_ACTUAL_SITE_ALLOCATION | ARC-2026, STR-2026, RPT-2083, OWNER-DIRECTION-2026-11-13 | PROPOSED_NOT_ADMITTED_TO_APPROVED_WBS | FS | 0 | 37 | 39 | 39 | 37 | 0 | True | HAR-0021 |  |  |  |
| HAR-0023 | HAR.PRECONSTRUCTION.GOV | PRECONSTRUCTION | GOV | Secure formal scope baseline review milestone | 0 | MILESTONE_ZERO_DURATION | NOT_MEASURED | GENERAL_CIVIL_REFERENCE | REFERENCE_ONLY_NOT_ACTUAL_SITE_ALLOCATION | ARC-2026, STR-2026, RPT-2083, OWNER-DIRECTION-2026-11-13 | PROPOSED_NOT_ADMITTED_TO_APPROVED_WBS | FS | 0 | 39 | 39 | 39 | 39 | 0 | True | HAR-0022 | True |  |  |
| HAR-0024 | HAR.SITE.COMMON | SITE | COMMON | Site access and traffic diversion planning | 2 | ILLUSTRATIVE_CREW_PLANNING_SEED_NOT_APPROVED | NOT_MEASURED | GENERAL_CIVIL_REFERENCE | REFERENCE_ONLY_NOT_ACTUAL_SITE_ALLOCATION | ARC-2026, STR-2026, RPT-2083, NEP-DUDBC-2081 | PROPOSED_NOT_ADMITTED_TO_APPROVED_WBS | FS | 0 | 39 | 41 | 41 | 39 | 0 | True | HAR-0023 |  |  |  |
| HAR-0025 | HAR.SITE.COMMON | SITE | COMMON | Temporary fencing / construction signage | 2 | ILLUSTRATIVE_CREW_PLANNING_SEED_NOT_APPROVED | NOT_MEASURED | GENERAL_CIVIL_REFERENCE | REFERENCE_ONLY_NOT_ACTUAL_SITE_ALLOCATION | ARC-2026, STR-2026, RPT-2083, NEP-DUDBC-2081 | PROPOSED_NOT_ADMITTED_TO_APPROVED_WBS | FS | 0 | 41 | 43 | 43 | 41 | 0 | True | HAR-0024 |  |  |  |
| HAR-0026 | HAR.SITE.COMMON | SITE | COMMON | Temporary electricity, water and meters | 2 | ILLUSTRATIVE_CREW_PLANNING_SEED_NOT_APPROVED | NOT_MEASURED | GENERAL_CIVIL_REFERENCE | REFERENCE_ONLY_NOT_ACTUAL_SITE_ALLOCATION | ARC-2026, STR-2026, RPT-2083, NEP-DUDBC-2081 | PROPOSED_NOT_ADMITTED_TO_APPROVED_WBS | FS | 0 | 43 | 45 | 45 | 43 | 0 | True | HAR-0025 |  |  |  |
| HAR-0027 | HAR.SITE.COMMON | SITE | COMMON | Site office, labour welfare and first aid | 2 | ILLUSTRATIVE_CREW_PLANNING_SEED_NOT_APPROVED | NOT_MEASURED | GENERAL_CIVIL_REFERENCE | REFERENCE_ONLY_NOT_ACTUAL_SITE_ALLOCATION | ARC-2026, STR-2026, RPT-2083, NEP-DUDBC-2081 | PROPOSED_NOT_ADMITTED_TO_APPROVED_WBS | FS | 0 | 45 | 47 | 47 | 45 | 0 | True | HAR-0026 |  |  |  |
| HAR-0028 | HAR.SITE.COMMON | SITE | COMMON | Material storage, covered cement and steel racks | 2 | ILLUSTRATIVE_CREW_PLANNING_SEED_NOT_APPROVED | NOT_MEASURED | GENERAL_CIVIL_REFERENCE | REFERENCE_ONLY_NOT_ACTUAL_SITE_ALLOCATION | ARC-2026, STR-2026, RPT-2083, NEP-DUDBC-2081 | PROPOSED_NOT_ADMITTED_TO_APPROVED_WBS | FS | 0 | 47 | 49 | 49 | 47 | 0 | True | HAR-0027 |  |  |  |
| HAR-0029 | HAR.SITE.COMMON | SITE | COMMON | Establish safety barriers, fall prevention and PPE controls | 2 | ILLUSTRATIVE_CREW_PLANNING_SEED_NOT_APPROVED | NOT_MEASURED | GENERAL_CIVIL_REFERENCE | REFERENCE_ONLY_NOT_ACTUAL_SITE_ALLOCATION | ARC-2026, STR-2026, RPT-2083, NEP-DUDBC-2081 | PROPOSED_NOT_ADMITTED_TO_APPROVED_WBS | FS | 0 | 49 | 51 | 51 | 49 | 0 | True | HAR-0028 |  |  |  |
| HAR-0030 | HAR.SITE.COMMON | SITE | COMMON | Survey benchmark and control point protection | 2 | ILLUSTRATIVE_CREW_PLANNING_SEED_NOT_APPROVED | NOT_MEASURED | GENERAL_CIVIL_REFERENCE | REFERENCE_ONLY_NOT_ACTUAL_SITE_ALLOCATION | ARC-2026, STR-2026, RPT-2083, NEP-DUDBC-2081 | PROPOSED_NOT_ADMITTED_TO_APPROVED_WBS | FS | 0 | 51 | 53 | 53 | 51 | 0 | True | HAR-0029 |  |  |  |
| HAR-0031 | HAR.SITE.COMMON | SITE | COMMON | Existing utilities locate / protection | 2 | ILLUSTRATIVE_CREW_PLANNING_SEED_NOT_APPROVED | NOT_MEASURED | GENERAL_CIVIL_REFERENCE | REFERENCE_ONLY_NOT_ACTUAL_SITE_ALLOCATION | ARC-2026, STR-2026, RPT-2083, NEP-DUDBC-2081 | PROPOSED_NOT_ADMITTED_TO_APPROVED_WBS | FS | 0 | 53 | 55 | 55 | 53 | 0 | True | HAR-0030 |  |  |  |
| HAR-0032 | HAR.SITE.COMMON | SITE | COMMON | Surface clearing within approved boundary | 3 | ILLUSTRATIVE_CREW_PLANNING_SEED_NOT_APPROVED | NOT_MEASURED | GENERAL_CIVIL_REFERENCE | REFERENCE_ONLY_NOT_ACTUAL_SITE_ALLOCATION | ARC-2026, STR-2026, RPT-2083, NEP-DUDBC-2081 | PROPOSED_NOT_ADMITTED_TO_APPROVED_WBS | FS | 0 | 55 | 58 | 58 | 55 | 0 | True | HAR-0031 |  |  |  |
| HAR-0033 | HAR.SITE.COMMON | SITE | COMMON | Topsoil segregation and disposal route | 2 | ILLUSTRATIVE_CREW_PLANNING_SEED_NOT_APPROVED | NOT_MEASURED | GENERAL_CIVIL_REFERENCE | REFERENCE_ONLY_NOT_ACTUAL_SITE_ALLOCATION | ARC-2026, STR-2026, RPT-2083, NEP-DUDBC-2081 | PROPOSED_NOT_ADMITTED_TO_APPROVED_WBS | FS | 0 | 58 | 60 | 60 | 58 | 0 | True | HAR-0032 |  |  |  |
| HAR-0034 | HAR.SITE.COMMON | SITE | COMMON | Footprint setting-out and grid comparison | 2 | ILLUSTRATIVE_CREW_PLANNING_SEED_NOT_APPROVED | NOT_MEASURED | GENERAL_CIVIL_REFERENCE | REFERENCE_ONLY_NOT_ACTUAL_SITE_ALLOCATION | ARC-2026, STR-2026, RPT-2083, NEP-DUDBC-2081 | PROPOSED_NOT_ADMITTED_TO_APPROVED_WBS | FS | 0 | 60 | 62 | 62 | 60 | 0 | True | HAR-0033 |  |  |  |
| HAR-0035 | HAR.SITE.COMMON | SITE | COMMON | Grid/level survey QA hold | 0 | MILESTONE_ZERO_DURATION | NOT_MEASURED | GENERAL_CIVIL_REFERENCE | REFERENCE_ONLY_NOT_ACTUAL_SITE_ALLOCATION | ARC-2026, STR-2026, RPT-2083, NEP-DUDBC-2081 | PROPOSED_NOT_ADMITTED_TO_APPROVED_WBS | FS | 0 | 62 | 62 | 62 | 62 | 0 | True | HAR-0034 | True |  |  |
| HAR-0036 | HAR.SITE.COMMON | SITE | COMMON | Temporary site drainage and erosion protection | 2 | ILLUSTRATIVE_CREW_PLANNING_SEED_NOT_APPROVED | NOT_MEASURED | GENERAL_CIVIL_REFERENCE | REFERENCE_ONLY_NOT_ACTUAL_SITE_ALLOCATION | ARC-2026, STR-2026, RPT-2083, NEP-DUDBC-2081 | PROPOSED_NOT_ADMITTED_TO_APPROVED_WBS | FS | 0 | 62 | 64 | 64 | 62 | 0 | True | HAR-0035 |  |  |  |
| HAR-0037 | HAR.SITE.COMMON | SITE | COMMON | Excavation spoil stacking and vehicle logistics | 1 | ILLUSTRATIVE_CREW_PLANNING_SEED_NOT_APPROVED | NOT_MEASURED | GENERAL_CIVIL_REFERENCE | REFERENCE_ONLY_NOT_ACTUAL_SITE_ALLOCATION | ARC-2026, STR-2026, RPT-2083, NEP-DUDBC-2081 | PROPOSED_NOT_ADMITTED_TO_APPROVED_WBS | FS | 0 | 64 | 65 | 65 | 64 | 0 | True | HAR-0036 |  |  |  |
| HAR-0038 | HAR.SITE.COMMON | SITE | COMMON | Pre-excavation foundation inspection booking | 1 | ILLUSTRATIVE_CREW_PLANNING_SEED_NOT_APPROVED | NOT_MEASURED | GENERAL_CIVIL_REFERENCE | REFERENCE_ONLY_NOT_ACTUAL_SITE_ALLOCATION | ARC-2026, STR-2026, RPT-2083, NEP-DUDBC-2081 | PROPOSED_NOT_ADMITTED_TO_APPROVED_WBS | FS | 0 | 65 | 66 | 66 | 65 | 0 | True | HAR-0037 |  |  |  |
| HAR-0039 | HAR.PROCUREMENT.PROC | PROCUREMENT | PROC | Set up purchase and supplier approval register | 2 | ILLUSTRATIVE_CREW_PLANNING_SEED_NOT_APPROVED | NOT_MEASURED | PROCUREMENT_AND_QA | REFERENCE_ONLY_NOT_ACTUAL_SITE_ALLOCATION | ARC-2026, STR-2026, RPT-2083, NEP-DUDBC-2081 | PROPOSED_NOT_ADMITTED_TO_APPROVED_WBS | FS | 0 | 39 | 41 | 531 | 529 | 490 |  | HAR-0023 |  |  |  |
| HAR-0040 | HAR.PROCUREMENT.STEEL | PROCUREMENT | STEEL | Request approved structural steel certificates and schedule | 2 | ILLUSTRATIVE_CREW_PLANNING_SEED_NOT_APPROVED | NOT_MEASURED | PROCUREMENT_AND_QA | REFERENCE_ONLY_NOT_ACTUAL_SITE_ALLOCATION | ARC-2026, STR-2026, RPT-2083, NEP-DUDBC-2081 | PROPOSED_NOT_ADMITTED_TO_APPROVED_WBS | FS | 0 | 39 | 41 | 66 | 64 | 25 |  | HAR-0023 |  |  |  |
| HAR-0041 | HAR.PROCUREMENT.STEEL | PROCUREMENT | STEEL | Steel quotations and procurement approval | 2 | ILLUSTRATIVE_CREW_PLANNING_SEED_NOT_APPROVED | NOT_MEASURED | PROCUREMENT_AND_QA | REFERENCE_ONLY_NOT_ACTUAL_SITE_ALLOCATION | ARC-2026, STR-2026, RPT-2083, NEP-DUDBC-2081 | PROPOSED_NOT_ADMITTED_TO_APPROVED_WBS | FS | 0 | 41 | 43 | 68 | 66 | 25 |  | HAR-0040 |  |  |  |
| HAR-0042 | HAR.PROCUREMENT.STEEL | PROCUREMENT | STEEL | Place reinforcement procurement order; staged deliveries | 2 | ILLUSTRATIVE_CREW_PLANNING_SEED_NOT_APPROVED | NOT_MEASURED | PROCUREMENT_AND_QA | REFERENCE_ONLY_NOT_ACTUAL_SITE_ALLOCATION | ARC-2026, STR-2026, RPT-2083, NEP-DUDBC-2081 | PROPOSED_NOT_ADMITTED_TO_APPROVED_WBS | FS | 0 | 43 | 45 | 70 | 68 | 25 |  | HAR-0041 |  |  |  |
| HAR-0043 | HAR.PROCUREMENT.STEEL | PROCUREMENT | STEEL | Receive / QA first reinforcement batch | 1 | ILLUSTRATIVE_CREW_PLANNING_SEED_NOT_APPROVED | NOT_MEASURED | PROCUREMENT_AND_QA | REFERENCE_ONLY_NOT_ACTUAL_SITE_ALLOCATION | ARC-2026, STR-2026, RPT-2083, NEP-DUDBC-2081 | PROPOSED_NOT_ADMITTED_TO_APPROVED_WBS | FS | 0 | 45 | 46 | 71 | 70 | 25 |  | HAR-0042 |  |  |  |
| HAR-0044 | HAR.PROCUREMENT.FORM | PROCUREMENT | FORM | Formwork, falsework and scaffolding order | 2 | ILLUSTRATIVE_CREW_PLANNING_SEED_NOT_APPROVED | NOT_MEASURED | PROCUREMENT_AND_QA | REFERENCE_ONLY_NOT_ACTUAL_SITE_ALLOCATION | ARC-2026, STR-2026, RPT-2083, NEP-DUDBC-2081 | PROPOSED_NOT_ADMITTED_TO_APPROVED_WBS | FS | 0 | 39 | 41 | 531 | 529 | 490 |  | HAR-0023 |  |  |  |
| HAR-0045 | HAR.PROCUREMENT.FORM | PROCUREMENT | FORM | Formwork/falsework arrival and condition check | 1 | ILLUSTRATIVE_CREW_PLANNING_SEED_NOT_APPROVED | NOT_MEASURED | PROCUREMENT_AND_QA | REFERENCE_ONLY_NOT_ACTUAL_SITE_ALLOCATION | ARC-2026, STR-2026, RPT-2083, NEP-DUDBC-2081 | PROPOSED_NOT_ADMITTED_TO_APPROVED_WBS | FS | 0 | 41 | 42 | 532 | 531 | 490 |  | HAR-0044 |  |  |  |
| HAR-0046 | HAR.PROCUREMENT.CONCRETE | PROCUREMENT | CONCRETE | Concrete mix designer and testing-lab appointment | 2 | ILLUSTRATIVE_CREW_PLANNING_SEED_NOT_APPROVED | NOT_MEASURED | PROCUREMENT_AND_QA | REFERENCE_ONLY_NOT_ACTUAL_SITE_ALLOCATION | ARC-2026, STR-2026, RPT-2083, NEP-DUDBC-2081 | PROPOSED_NOT_ADMITTED_TO_APPROVED_WBS | FS | 0 | 39 | 41 | 69 | 67 | 28 |  | HAR-0023 |  |  |  |
| HAR-0047 | HAR.PROCUREMENT.CONCRETE | PROCUREMENT | CONCRETE | M25 trial mix, material data and pour programme submission | 4 | ILLUSTRATIVE_CREW_PLANNING_SEED_NOT_APPROVED | NOT_MEASURED | PROCUREMENT_AND_QA | REFERENCE_ONLY_NOT_ACTUAL_SITE_ALLOCATION | ARC-2026, STR-2026, RPT-2083, NEP-DUDBC-2081 | PROPOSED_NOT_ADMITTED_TO_APPROVED_WBS | FS | 0 | 41 | 45 | 73 | 69 | 28 |  | HAR-0046 |  |  |  |
| HAR-0048 | HAR.PROCUREMENT.CONCRETE | PROCUREMENT | CONCRETE | Concrete mix acceptance and testing plan review | 0 | MILESTONE_ZERO_DURATION | NOT_MEASURED | PROCUREMENT_AND_QA | REFERENCE_ONLY_NOT_ACTUAL_SITE_ALLOCATION | ARC-2026, STR-2026, RPT-2083, NEP-DUDBC-2081 | PROPOSED_NOT_ADMITTED_TO_APPROVED_WBS | FS | 0 | 45 | 45 | 73 | 73 | 28 |  | HAR-0047 | True |  |  |
| HAR-0049 | HAR.PROCUREMENT.PCC | PROCUREMENT | PCC | PCC materials availability check | 1 | ILLUSTRATIVE_CREW_PLANNING_SEED_NOT_APPROVED | NOT_MEASURED | PROCUREMENT_AND_QA | REFERENCE_ONLY_NOT_ACTUAL_SITE_ALLOCATION | ARC-2026, STR-2026, RPT-2083, NEP-DUDBC-2081 | PROPOSED_NOT_ADMITTED_TO_APPROVED_WBS | FS | 0 | 39 | 40 | 532 | 531 | 492 |  | HAR-0023 |  |  |  |
| HAR-0050 | HAR.PROCUREMENT.MASONRY | PROCUREMENT | MASONRY | Masonry units and mortar constituents sample approval | 2 | ILLUSTRATIVE_CREW_PLANNING_SEED_NOT_APPROVED | NOT_MEASURED | PROCUREMENT_AND_QA | REFERENCE_ONLY_NOT_ACTUAL_SITE_ALLOCATION | ARC-2026, STR-2026, RPT-2083, NEP-DUDBC-2081 | PROPOSED_NOT_ADMITTED_TO_APPROVED_WBS | FS | 0 | 39 | 41 | 532 | 530 | 491 |  | HAR-0023 |  |  |  |
| HAR-0051 | HAR.PROCUREMENT.WATERPROOF | PROCUREMENT | WATERPROOF | Waterproofing system submittal and sample review | 2 | ILLUSTRATIVE_CREW_PLANNING_SEED_NOT_APPROVED | NOT_MEASURED | PROCUREMENT_AND_QA | REFERENCE_ONLY_NOT_ACTUAL_SITE_ALLOCATION | ARC-2026, STR-2026, RPT-2083, NEP-DUDBC-2081 | PROPOSED_NOT_ADMITTED_TO_APPROVED_WBS | FS | 0 | 39 | 41 | 443 | 441 | 402 |  | HAR-0023 |  |  |  |
| HAR-0052 | HAR.PROCUREMENT.JOINERY | PROCUREMENT | JOINERY | Window/door schedules, manufacturing lead time review | 3 | ILLUSTRATIVE_CREW_PLANNING_SEED_NOT_APPROVED | NOT_MEASURED | PROCUREMENT_AND_QA | REFERENCE_ONLY_NOT_ACTUAL_SITE_ALLOCATION | ARC-2026, STR-2026, RPT-2083, NEP-DUDBC-2081 | PROPOSED_NOT_ADMITTED_TO_APPROVED_WBS | FS | 0 | 39 | 42 | 468 | 465 | 426 |  | HAR-0023 |  |  |  |
| HAR-0053 | HAR.PROCUREMENT.JOINERY | PROCUREMENT | JOINERY | Window/door shop drawing review and approval hold | 0 | MILESTONE_ZERO_DURATION | NOT_MEASURED | PROCUREMENT_AND_QA | REFERENCE_ONLY_NOT_ACTUAL_SITE_ALLOCATION | ARC-2026, STR-2026, RPT-2083, NEP-DUDBC-2081 | PROPOSED_NOT_ADMITTED_TO_APPROVED_WBS | FS | 0 | 42 | 42 | 468 | 468 | 426 |  | HAR-0052 | True |  |  |
| HAR-0054 | HAR.PROCUREMENT.PLUMBING | PROCUREMENT | PLUMBING | Plumbing pipes and sanitaryware selection / ordering | 3 | ILLUSTRATIVE_CREW_PLANNING_SEED_NOT_APPROVED | NOT_MEASURED | PROCUREMENT_AND_QA | REFERENCE_ONLY_NOT_ACTUAL_SITE_ALLOCATION | ARC-2026, STR-2026, RPT-2083, NEP-DUDBC-2081 | PROPOSED_NOT_ADMITTED_TO_APPROVED_WBS | FS | 0 | 39 | 42 | 419 | 416 | 377 |  | HAR-0023 |  |  |  |
| HAR-0055 | HAR.PROCUREMENT.ELECTRICAL | PROCUREMENT | ELECTRICAL | Electrical cable, distribution boards and conduit submittals | 3 | ILLUSTRATIVE_CREW_PLANNING_SEED_NOT_APPROVED | NOT_MEASURED | PROCUREMENT_AND_QA | REFERENCE_ONLY_NOT_ACTUAL_SITE_ALLOCATION | ARC-2026, STR-2026, RPT-2083, NEP-DUDBC-2081 | PROPOSED_NOT_ADMITTED_TO_APPROVED_WBS | FS | 0 | 39 | 42 | 419 | 416 | 377 |  | HAR-0023 |  |  |  |
| HAR-0056 | HAR.PROCUREMENT.FIRE | PROCUREMENT | FIRE | Fire, life-safety and emergency systems design review | 3 | ILLUSTRATIVE_CREW_PLANNING_SEED_NOT_APPROVED | NOT_MEASURED | PROCUREMENT_AND_QA | REFERENCE_ONLY_NOT_ACTUAL_SITE_ALLOCATION | ARC-2026, STR-2026, RPT-2083, NEP-DUDBC-2081 | PROPOSED_NOT_ADMITTED_TO_APPROVED_WBS | FS | 0 | 39 | 42 | 419 | 416 | 377 |  | HAR-0023 | True |  |  |
| HAR-0057 | HAR.PROCUREMENT.LIFT | PROCUREMENT | LIFT | Lift specialist coordination, shaft/embedded interfaces review | 3 | ILLUSTRATIVE_CREW_PLANNING_SEED_NOT_APPROVED | NOT_MEASURED | PROCUREMENT_AND_QA | REFERENCE_ONLY_NOT_ACTUAL_SITE_ALLOCATION | ARC-2026, STR-2026, RPT-2083, NEP-DUDBC-2081 | PROPOSED_NOT_ADMITTED_TO_APPROVED_WBS | FS | 0 | 39 | 42 | 416 | 413 | 374 |  | HAR-0023 |  |  |  |
| HAR-0058 | HAR.PROCUREMENT.LIFT | PROCUREMENT | LIFT | Lift supplier appointment and confirmed delivery programme | 3 | ILLUSTRATIVE_CREW_PLANNING_SEED_NOT_APPROVED | NOT_MEASURED | PROCUREMENT_AND_QA | REFERENCE_ONLY_NOT_ACTUAL_SITE_ALLOCATION | ARC-2026, STR-2026, RPT-2083, NEP-DUDBC-2081 | PROPOSED_NOT_ADMITTED_TO_APPROVED_WBS | FS | 0 | 42 | 45 | 419 | 416 | 374 |  | HAR-0057 |  |  |  |
| HAR-0059 | HAR.PROCUREMENT.FINISHES | PROCUREMENT | FINISHES | Finishes materials mock-up and approved sample register | 3 | ILLUSTRATIVE_CREW_PLANNING_SEED_NOT_APPROVED | NOT_MEASURED | PROCUREMENT_AND_QA | REFERENCE_ONLY_NOT_ACTUAL_SITE_ALLOCATION | ARC-2026, STR-2026, RPT-2083, NEP-DUDBC-2081 | PROPOSED_NOT_ADMITTED_TO_APPROVED_WBS | FS | 0 | 39 | 42 | 532 | 529 | 490 |  | HAR-0023 |  |  |  |
| HAR-0060 | HAR.PROCUREMENT.PROC | PROCUREMENT | PROC | Procurement controls, lead-time and stock review | 1 | ILLUSTRATIVE_CREW_PLANNING_SEED_NOT_APPROVED | NOT_MEASURED | PROCUREMENT_AND_QA | REFERENCE_ONLY_NOT_ACTUAL_SITE_ALLOCATION | ARC-2026, STR-2026, RPT-2083, NEP-DUDBC-2081 | PROPOSED_NOT_ADMITTED_TO_APPROVED_WBS | FS | 0 | 41 | 42 | 532 | 531 | 490 |  | HAR-0039 |  |  |  |
| HAR-0061 | HAR.SUBSTRUCTURE_FOOTINGS.A1 | SUBSTRUCTURE_FOOTINGS | A1 | Grid set-out and pad footprint check | 1 | ILLUSTRATIVE_CREW_PLANNING_SEED_NOT_APPROVED | NOT_MEASURED | SURVEY | REFERENCE_ONLY_NOT_ACTUAL_SITE_ALLOCATION | STR-01/02, CAD-R000002-PROVISIONAL | PROPOSED_NOT_ADMITTED_TO_APPROVED_WBS | FS | 0 | 66 | 67 | 67 | 66 | 0 | True | HAR-0038 |  |  |  |
| HAR-0062 | HAR.SUBSTRUCTURE_FOOTINGS.A1 | SUBSTRUCTURE_FOOTINGS | A1 | Controlled pad excavation, shoring and spoil transfer | 2 | ILLUSTRATIVE_CREW_PLANNING_SEED_NOT_APPROVED | NOT_MEASURED | EARTHWORK | REFERENCE_ONLY_NOT_ACTUAL_SITE_ALLOCATION | STR-01/02, CAD-R000002-PROVISIONAL | PROPOSED_NOT_ADMITTED_TO_APPROVED_WBS | FS | 0 | 67 | 69 | 69 | 67 | 0 | True | HAR-0061 |  |  |  |
| HAR-0063 | HAR.SUBSTRUCTURE_FOOTINGS.A1 | SUBSTRUCTURE_FOOTINGS | A1 | Confirm soil founding level / bearing and soft spots | 0 | MILESTONE_ZERO_DURATION | NOT_MEASURED | ENGINEER_INSPECTION | REFERENCE_ONLY_NOT_ACTUAL_SITE_ALLOCATION | STR-01/02, CAD-R000002-PROVISIONAL | PROPOSED_NOT_ADMITTED_TO_APPROVED_WBS | FS | 0 | 69 | 69 | 69 | 69 | 0 | True | HAR-0062 | True |  |  |
| HAR-0064 | HAR.SUBSTRUCTURE_FOOTINGS.A1 | SUBSTRUCTURE_FOOTINGS | A1 | Stone soling / subbase preparation | 1 | ILLUSTRATIVE_CREW_PLANNING_SEED_NOT_APPROVED | NOT_MEASURED | GENERAL_CIVIL_REFERENCE | REFERENCE_ONLY_NOT_ACTUAL_SITE_ALLOCATION | STR-01/02, CAD-R000002-PROVISIONAL | PROPOSED_NOT_ADMITTED_TO_APPROVED_WBS | FS | 0 | 69 | 70 | 70 | 69 | 0 | True | HAR-0063 |  |  |  |
| HAR-0065 | HAR.SUBSTRUCTURE_FOOTINGS.A1 | SUBSTRUCTURE_FOOTINGS | A1 | 75 mm PCC bed placement and level inspection | 1 | ILLUSTRATIVE_CREW_PLANNING_SEED_NOT_APPROVED | NOT_MEASURED | CONCRETE | REFERENCE_ONLY_NOT_ACTUAL_SITE_ALLOCATION | STR-01/02, CAD-R000002-PROVISIONAL | PROPOSED_NOT_ADMITTED_TO_APPROVED_WBS | FS | 0 | 70 | 71 | 71 | 70 | 0 | True | HAR-0064 |  |  |  |
| HAR-0066 | HAR.SUBSTRUCTURE_FOOTINGS.A1 | SUBSTRUCTURE_FOOTINGS | A1 | Footing bottom and top mats / spacers / starters fixing | 2 | ILLUSTRATIVE_CREW_PLANNING_SEED_NOT_APPROVED | NOT_MEASURED | REBAR | REFERENCE_ONLY_NOT_ACTUAL_SITE_ALLOCATION | STR-01/02, CAD-R000002-PROVISIONAL | PROPOSED_NOT_ADMITTED_TO_APPROVED_WBS | FS | 0 | 71 | 73 | 73 | 71 | 0 | True | HAR-0065, HAR-0043 |  |  |  |
| HAR-0067 | HAR.SUBSTRUCTURE_FOOTINGS.A1 | SUBSTRUCTURE_FOOTINGS | A1 | Footing and column dowel pre-pour engineer inspection | 0 | MILESTONE_ZERO_DURATION | NOT_MEASURED | ENGINEER_INSPECTION | REFERENCE_ONLY_NOT_ACTUAL_SITE_ALLOCATION | STR-01/02, CAD-R000002-PROVISIONAL | PROPOSED_NOT_ADMITTED_TO_APPROVED_WBS | FS | 0 | 73 | 73 | 73 | 73 | 0 | True | HAR-0066 | True |  |  |
| HAR-0068 | HAR.SUBSTRUCTURE_FOOTINGS.A1 | SUBSTRUCTURE_FOOTINGS | A1 | M25 footing pour / compaction / samples | 1 | ILLUSTRATIVE_CREW_PLANNING_SEED_NOT_APPROVED | PROVISIONAL_GEOMETRY_FROM_SOURCE | CONCRETE | REFERENCE_ONLY_NOT_ACTUAL_SITE_ALLOCATION | RPT-2083, STR-2026 | PROPOSED_NOT_ADMITTED_TO_APPROVED_WBS | FS | 0 | 73 | 74 | 74 | 73 | 0 | True | HAR-0067, HAR-0048 |  | 3.402 | m³ |
| HAR-0069 | HAR.SUBSTRUCTURE_FOOTINGS.A1 | SUBSTRUCTURE_FOOTINGS | A1 | Footing curing / stripping and QA acceptance | 3 | ILLUSTRATIVE_CREW_PLANNING_SEED_NOT_APPROVED | NOT_MEASURED | CONCRETE | REFERENCE_ONLY_NOT_ACTUAL_SITE_ALLOCATION | STR-01/02, CAD-R000002-PROVISIONAL | PROPOSED_NOT_ADMITTED_TO_APPROVED_WBS | FS | 0 | 74 | 77 | 77 | 74 | 0 | True | HAR-0068 |  |  |  |
| HAR-0070 | HAR.SUBSTRUCTURE_FOOTINGS.B1 | SUBSTRUCTURE_FOOTINGS | B1 | Grid set-out and pad footprint check | 1 | ILLUSTRATIVE_CREW_PLANNING_SEED_NOT_APPROVED | NOT_MEASURED | SURVEY | REFERENCE_ONLY_NOT_ACTUAL_SITE_ALLOCATION | STR-01/02, CAD-R000002-PROVISIONAL | PROPOSED_NOT_ADMITTED_TO_APPROVED_WBS | FS | 0 | 67 | 68 | 70 | 69 | 2 |  | HAR-0038, HAR-0061 |  |  |  |

| activity_id | wbs | phase | scope | title | duration_workdays | duration_basis | quantity_basis | crew_category | crew_basis | source_refs | status | logic_type | lag_workdays | planned_start_workday | planned_finish_workday | latest_finish_workday | latest_start_workday | total_float_workdays | critical | predecessor_ids | engineering_hold | quantity | quantity_unit |
| --- | --- | --- | --- | --- | --- | --- | --- | --- | --- | --- | --- | --- | --- | --- | --- | --- | --- | --- | --- | --- | --- | --- | --- |
| HAR-0071 | HAR.SUBSTRUCTURE_FOOTINGS.B1 | SUBSTRUCTURE_FOOTINGS | B1 | Controlled pad excavation, shoring and spoil transfer | 2 | ILLUSTRATIVE_CREW_PLANNING_SEED_NOT_APPROVED | NOT_MEASURED | EARTHWORK | REFERENCE_ONLY_NOT_ACTUAL_SITE_ALLOCATION | STR-01/02, CAD-R000002-PROVISIONAL | PROPOSED_NOT_ADMITTED_TO_APPROVED_WBS | FS | 0 | 69 | 71 | 72 | 70 | 1 |  | HAR-0070, HAR-0062 |  |  |  |
| HAR-0072 | HAR.SUBSTRUCTURE_FOOTINGS.B1 | SUBSTRUCTURE_FOOTINGS | B1 | Confirm soil founding level / bearing and soft spots | 0 | MILESTONE_ZERO_DURATION | NOT_MEASURED | ENGINEER_INSPECTION | REFERENCE_ONLY_NOT_ACTUAL_SITE_ALLOCATION | STR-01/02, CAD-R000002-PROVISIONAL | PROPOSED_NOT_ADMITTED_TO_APPROVED_WBS | FS | 0 | 71 | 71 | 72 | 72 | 1 |  | HAR-0071, HAR-0063 | True |  |  |
| HAR-0073 | HAR.SUBSTRUCTURE_FOOTINGS.B1 | SUBSTRUCTURE_FOOTINGS | B1 | Stone soling / subbase preparation | 1 | ILLUSTRATIVE_CREW_PLANNING_SEED_NOT_APPROVED | NOT_MEASURED | GENERAL_CIVIL_REFERENCE | REFERENCE_ONLY_NOT_ACTUAL_SITE_ALLOCATION | STR-01/02, CAD-R000002-PROVISIONAL | PROPOSED_NOT_ADMITTED_TO_APPROVED_WBS | FS | 0 | 71 | 72 | 73 | 72 | 1 |  | HAR-0072, HAR-0064 |  |  |  |
| HAR-0074 | HAR.SUBSTRUCTURE_FOOTINGS.B1 | SUBSTRUCTURE_FOOTINGS | B1 | 75 mm PCC bed placement and level inspection | 1 | ILLUSTRATIVE_CREW_PLANNING_SEED_NOT_APPROVED | NOT_MEASURED | CONCRETE | REFERENCE_ONLY_NOT_ACTUAL_SITE_ALLOCATION | STR-01/02, CAD-R000002-PROVISIONAL | PROPOSED_NOT_ADMITTED_TO_APPROVED_WBS | FS | 0 | 72 | 73 | 74 | 73 | 1 |  | HAR-0073, HAR-0065 |  |  |  |
| HAR-0075 | HAR.SUBSTRUCTURE_FOOTINGS.B1 | SUBSTRUCTURE_FOOTINGS | B1 | Footing bottom and top mats / spacers / starters fixing | 2 | ILLUSTRATIVE_CREW_PLANNING_SEED_NOT_APPROVED | NOT_MEASURED | REBAR | REFERENCE_ONLY_NOT_ACTUAL_SITE_ALLOCATION | STR-01/02, CAD-R000002-PROVISIONAL | PROPOSED_NOT_ADMITTED_TO_APPROVED_WBS | FS | 0 | 73 | 75 | 76 | 74 | 1 |  | HAR-0074, HAR-0066, HAR-0043 |  |  |  |
| HAR-0076 | HAR.SUBSTRUCTURE_FOOTINGS.B1 | SUBSTRUCTURE_FOOTINGS | B1 | Footing and column dowel pre-pour engineer inspection | 0 | MILESTONE_ZERO_DURATION | NOT_MEASURED | ENGINEER_INSPECTION | REFERENCE_ONLY_NOT_ACTUAL_SITE_ALLOCATION | STR-01/02, CAD-R000002-PROVISIONAL | PROPOSED_NOT_ADMITTED_TO_APPROVED_WBS | FS | 0 | 75 | 75 | 76 | 76 | 1 |  | HAR-0075, HAR-0067 | True |  |  |
| HAR-0077 | HAR.SUBSTRUCTURE_FOOTINGS.B1 | SUBSTRUCTURE_FOOTINGS | B1 | M25 footing pour / compaction / samples | 1 | ILLUSTRATIVE_CREW_PLANNING_SEED_NOT_APPROVED | PROVISIONAL_GEOMETRY_FROM_SOURCE | CONCRETE | REFERENCE_ONLY_NOT_ACTUAL_SITE_ALLOCATION | RPT-2083, STR-2026 | PROPOSED_NOT_ADMITTED_TO_APPROVED_WBS | FS | 0 | 75 | 76 | 77 | 76 | 1 |  | HAR-0076, HAR-0068, HAR-0048 |  | 3.9015 | m³ |
| HAR-0078 | HAR.SUBSTRUCTURE_FOOTINGS.B1 | SUBSTRUCTURE_FOOTINGS | B1 | Footing curing / stripping and QA acceptance | 3 | ILLUSTRATIVE_CREW_PLANNING_SEED_NOT_APPROVED | NOT_MEASURED | CONCRETE | REFERENCE_ONLY_NOT_ACTUAL_SITE_ALLOCATION | STR-01/02, CAD-R000002-PROVISIONAL | PROPOSED_NOT_ADMITTED_TO_APPROVED_WBS | FS | 0 | 77 | 80 | 80 | 77 | 0 | True | HAR-0077, HAR-0069 |  |  |  |
| HAR-0079 | HAR.SUBSTRUCTURE_FOOTINGS.F1 | SUBSTRUCTURE_FOOTINGS | F1 | Grid set-out and pad footprint check | 1 | ILLUSTRATIVE_CREW_PLANNING_SEED_NOT_APPROVED | NOT_MEASURED | SURVEY | REFERENCE_ONLY_NOT_ACTUAL_SITE_ALLOCATION | STR-01/02, CAD-R000002-PROVISIONAL | PROPOSED_NOT_ADMITTED_TO_APPROVED_WBS | FS | 0 | 68 | 69 | 73 | 72 | 4 |  | HAR-0038, HAR-0070 |  |  |  |
| HAR-0080 | HAR.SUBSTRUCTURE_FOOTINGS.F1 | SUBSTRUCTURE_FOOTINGS | F1 | Controlled pad excavation, shoring and spoil transfer | 2 | ILLUSTRATIVE_CREW_PLANNING_SEED_NOT_APPROVED | NOT_MEASURED | EARTHWORK | REFERENCE_ONLY_NOT_ACTUAL_SITE_ALLOCATION | STR-01/02, CAD-R000002-PROVISIONAL | PROPOSED_NOT_ADMITTED_TO_APPROVED_WBS | FS | 0 | 71 | 73 | 75 | 73 | 2 |  | HAR-0079, HAR-0071 |  |  |  |
| HAR-0081 | HAR.SUBSTRUCTURE_FOOTINGS.F1 | SUBSTRUCTURE_FOOTINGS | F1 | Confirm soil founding level / bearing and soft spots | 0 | MILESTONE_ZERO_DURATION | NOT_MEASURED | ENGINEER_INSPECTION | REFERENCE_ONLY_NOT_ACTUAL_SITE_ALLOCATION | STR-01/02, CAD-R000002-PROVISIONAL | PROPOSED_NOT_ADMITTED_TO_APPROVED_WBS | FS | 0 | 73 | 73 | 75 | 75 | 2 |  | HAR-0080, HAR-0072 | True |  |  |
| HAR-0082 | HAR.SUBSTRUCTURE_FOOTINGS.F1 | SUBSTRUCTURE_FOOTINGS | F1 | Stone soling / subbase preparation | 1 | ILLUSTRATIVE_CREW_PLANNING_SEED_NOT_APPROVED | NOT_MEASURED | GENERAL_CIVIL_REFERENCE | REFERENCE_ONLY_NOT_ACTUAL_SITE_ALLOCATION | STR-01/02, CAD-R000002-PROVISIONAL | PROPOSED_NOT_ADMITTED_TO_APPROVED_WBS | FS | 0 | 73 | 74 | 76 | 75 | 2 |  | HAR-0081, HAR-0073 |  |  |  |
| HAR-0083 | HAR.SUBSTRUCTURE_FOOTINGS.F1 | SUBSTRUCTURE_FOOTINGS | F1 | 75 mm PCC bed placement and level inspection | 1 | ILLUSTRATIVE_CREW_PLANNING_SEED_NOT_APPROVED | NOT_MEASURED | CONCRETE | REFERENCE_ONLY_NOT_ACTUAL_SITE_ALLOCATION | STR-01/02, CAD-R000002-PROVISIONAL | PROPOSED_NOT_ADMITTED_TO_APPROVED_WBS | FS | 0 | 74 | 75 | 77 | 76 | 2 |  | HAR-0082, HAR-0074 |  |  |  |
| HAR-0084 | HAR.SUBSTRUCTURE_FOOTINGS.F1 | SUBSTRUCTURE_FOOTINGS | F1 | Footing bottom and top mats / spacers / starters fixing | 2 | ILLUSTRATIVE_CREW_PLANNING_SEED_NOT_APPROVED | NOT_MEASURED | REBAR | REFERENCE_ONLY_NOT_ACTUAL_SITE_ALLOCATION | STR-01/02, CAD-R000002-PROVISIONAL | PROPOSED_NOT_ADMITTED_TO_APPROVED_WBS | FS | 0 | 75 | 77 | 79 | 77 | 2 |  | HAR-0083, HAR-0075, HAR-0043 |  |  |  |
| HAR-0085 | HAR.SUBSTRUCTURE_FOOTINGS.F1 | SUBSTRUCTURE_FOOTINGS | F1 | Footing and column dowel pre-pour engineer inspection | 0 | MILESTONE_ZERO_DURATION | NOT_MEASURED | ENGINEER_INSPECTION | REFERENCE_ONLY_NOT_ACTUAL_SITE_ALLOCATION | STR-01/02, CAD-R000002-PROVISIONAL | PROPOSED_NOT_ADMITTED_TO_APPROVED_WBS | FS | 0 | 77 | 77 | 79 | 79 | 2 |  | HAR-0084, HAR-0076 | True |  |  |
| HAR-0086 | HAR.SUBSTRUCTURE_FOOTINGS.F1 | SUBSTRUCTURE_FOOTINGS | F1 | M25 footing pour / compaction / samples | 1 | ILLUSTRATIVE_CREW_PLANNING_SEED_NOT_APPROVED | PROVISIONAL_GEOMETRY_FROM_SOURCE | CONCRETE | REFERENCE_ONLY_NOT_ACTUAL_SITE_ALLOCATION | RPT-2083, STR-2026 | PROPOSED_NOT_ADMITTED_TO_APPROVED_WBS | FS | 0 | 77 | 78 | 80 | 79 | 2 |  | HAR-0085, HAR-0077, HAR-0048 |  | 3.402 | m³ |
| HAR-0087 | HAR.SUBSTRUCTURE_FOOTINGS.F1 | SUBSTRUCTURE_FOOTINGS | F1 | Footing curing / stripping and QA acceptance | 3 | ILLUSTRATIVE_CREW_PLANNING_SEED_NOT_APPROVED | NOT_MEASURED | CONCRETE | REFERENCE_ONLY_NOT_ACTUAL_SITE_ALLOCATION | STR-01/02, CAD-R000002-PROVISIONAL | PROPOSED_NOT_ADMITTED_TO_APPROVED_WBS | FS | 0 | 80 | 83 | 83 | 80 | 0 | True | HAR-0086, HAR-0078 |  |  |  |
| HAR-0088 | HAR.SUBSTRUCTURE_FOOTINGS.A2 | SUBSTRUCTURE_FOOTINGS | A2 | Grid set-out and pad footprint check | 1 | ILLUSTRATIVE_CREW_PLANNING_SEED_NOT_APPROVED | NOT_MEASURED | SURVEY | REFERENCE_ONLY_NOT_ACTUAL_SITE_ALLOCATION | STR-01/02, CAD-R000002-PROVISIONAL | PROPOSED_NOT_ADMITTED_TO_APPROVED_WBS | FS | 0 | 69 | 70 | 76 | 75 | 6 |  | HAR-0038, HAR-0079 |  |  |  |
| HAR-0089 | HAR.SUBSTRUCTURE_FOOTINGS.A2 | SUBSTRUCTURE_FOOTINGS | A2 | Controlled pad excavation, shoring and spoil transfer | 2 | ILLUSTRATIVE_CREW_PLANNING_SEED_NOT_APPROVED | NOT_MEASURED | EARTHWORK | REFERENCE_ONLY_NOT_ACTUAL_SITE_ALLOCATION | STR-01/02, CAD-R000002-PROVISIONAL | PROPOSED_NOT_ADMITTED_TO_APPROVED_WBS | FS | 0 | 73 | 75 | 78 | 76 | 3 |  | HAR-0088, HAR-0080 |  |  |  |
| HAR-0090 | HAR.SUBSTRUCTURE_FOOTINGS.A2 | SUBSTRUCTURE_FOOTINGS | A2 | Confirm soil founding level / bearing and soft spots | 0 | MILESTONE_ZERO_DURATION | NOT_MEASURED | ENGINEER_INSPECTION | REFERENCE_ONLY_NOT_ACTUAL_SITE_ALLOCATION | STR-01/02, CAD-R000002-PROVISIONAL | PROPOSED_NOT_ADMITTED_TO_APPROVED_WBS | FS | 0 | 75 | 75 | 78 | 78 | 3 |  | HAR-0089, HAR-0081 | True |  |  |
| HAR-0091 | HAR.SUBSTRUCTURE_FOOTINGS.A2 | SUBSTRUCTURE_FOOTINGS | A2 | Stone soling / subbase preparation | 1 | ILLUSTRATIVE_CREW_PLANNING_SEED_NOT_APPROVED | NOT_MEASURED | GENERAL_CIVIL_REFERENCE | REFERENCE_ONLY_NOT_ACTUAL_SITE_ALLOCATION | STR-01/02, CAD-R000002-PROVISIONAL | PROPOSED_NOT_ADMITTED_TO_APPROVED_WBS | FS | 0 | 75 | 76 | 79 | 78 | 3 |  | HAR-0090, HAR-0082 |  |  |  |
| HAR-0092 | HAR.SUBSTRUCTURE_FOOTINGS.A2 | SUBSTRUCTURE_FOOTINGS | A2 | 75 mm PCC bed placement and level inspection | 1 | ILLUSTRATIVE_CREW_PLANNING_SEED_NOT_APPROVED | NOT_MEASURED | CONCRETE | REFERENCE_ONLY_NOT_ACTUAL_SITE_ALLOCATION | STR-01/02, CAD-R000002-PROVISIONAL | PROPOSED_NOT_ADMITTED_TO_APPROVED_WBS | FS | 0 | 76 | 77 | 80 | 79 | 3 |  | HAR-0091, HAR-0083 |  |  |  |
| HAR-0093 | HAR.SUBSTRUCTURE_FOOTINGS.A2 | SUBSTRUCTURE_FOOTINGS | A2 | Footing bottom and top mats / spacers / starters fixing | 2 | ILLUSTRATIVE_CREW_PLANNING_SEED_NOT_APPROVED | NOT_MEASURED | REBAR | REFERENCE_ONLY_NOT_ACTUAL_SITE_ALLOCATION | STR-01/02, CAD-R000002-PROVISIONAL | PROPOSED_NOT_ADMITTED_TO_APPROVED_WBS | FS | 0 | 77 | 79 | 82 | 80 | 3 |  | HAR-0092, HAR-0084, HAR-0043 |  |  |  |
| HAR-0094 | HAR.SUBSTRUCTURE_FOOTINGS.A2 | SUBSTRUCTURE_FOOTINGS | A2 | Footing and column dowel pre-pour engineer inspection | 0 | MILESTONE_ZERO_DURATION | NOT_MEASURED | ENGINEER_INSPECTION | REFERENCE_ONLY_NOT_ACTUAL_SITE_ALLOCATION | STR-01/02, CAD-R000002-PROVISIONAL | PROPOSED_NOT_ADMITTED_TO_APPROVED_WBS | FS | 0 | 79 | 79 | 82 | 82 | 3 |  | HAR-0093, HAR-0085 | True |  |  |
| HAR-0095 | HAR.SUBSTRUCTURE_FOOTINGS.A2 | SUBSTRUCTURE_FOOTINGS | A2 | M25 footing pour / compaction / samples | 1 | ILLUSTRATIVE_CREW_PLANNING_SEED_NOT_APPROVED | PROVISIONAL_GEOMETRY_FROM_SOURCE | CONCRETE | REFERENCE_ONLY_NOT_ACTUAL_SITE_ALLOCATION | RPT-2083, STR-2026 | PROPOSED_NOT_ADMITTED_TO_APPROVED_WBS | FS | 0 | 79 | 80 | 83 | 82 | 3 |  | HAR-0094, HAR-0086, HAR-0048 |  | 3.402 | m³ |
| HAR-0096 | HAR.SUBSTRUCTURE_FOOTINGS.A2 | SUBSTRUCTURE_FOOTINGS | A2 | Footing curing / stripping and QA acceptance | 3 | ILLUSTRATIVE_CREW_PLANNING_SEED_NOT_APPROVED | NOT_MEASURED | CONCRETE | REFERENCE_ONLY_NOT_ACTUAL_SITE_ALLOCATION | STR-01/02, CAD-R000002-PROVISIONAL | PROPOSED_NOT_ADMITTED_TO_APPROVED_WBS | FS | 0 | 83 | 86 | 86 | 83 | 0 | True | HAR-0095, HAR-0087 |  |  |  |
| HAR-0097 | HAR.SUBSTRUCTURE_FOOTINGS.B2 | SUBSTRUCTURE_FOOTINGS | B2 | Grid set-out and pad footprint check | 1 | ILLUSTRATIVE_CREW_PLANNING_SEED_NOT_APPROVED | NOT_MEASURED | SURVEY | REFERENCE_ONLY_NOT_ACTUAL_SITE_ALLOCATION | STR-01/02, CAD-R000002-PROVISIONAL | PROPOSED_NOT_ADMITTED_TO_APPROVED_WBS | FS | 0 | 70 | 71 | 79 | 78 | 8 |  | HAR-0038, HAR-0088 |  |  |  |
| HAR-0098 | HAR.SUBSTRUCTURE_FOOTINGS.B2 | SUBSTRUCTURE_FOOTINGS | B2 | Controlled pad excavation, shoring and spoil transfer | 2 | ILLUSTRATIVE_CREW_PLANNING_SEED_NOT_APPROVED | NOT_MEASURED | EARTHWORK | REFERENCE_ONLY_NOT_ACTUAL_SITE_ALLOCATION | STR-01/02, CAD-R000002-PROVISIONAL | PROPOSED_NOT_ADMITTED_TO_APPROVED_WBS | FS | 0 | 75 | 77 | 81 | 79 | 4 |  | HAR-0097, HAR-0089 |  |  |  |
| HAR-0099 | HAR.SUBSTRUCTURE_FOOTINGS.B2 | SUBSTRUCTURE_FOOTINGS | B2 | Confirm soil founding level / bearing and soft spots | 0 | MILESTONE_ZERO_DURATION | NOT_MEASURED | ENGINEER_INSPECTION | REFERENCE_ONLY_NOT_ACTUAL_SITE_ALLOCATION | STR-01/02, CAD-R000002-PROVISIONAL | PROPOSED_NOT_ADMITTED_TO_APPROVED_WBS | FS | 0 | 77 | 77 | 81 | 81 | 4 |  | HAR-0098, HAR-0090 | True |  |  |
| HAR-0100 | HAR.SUBSTRUCTURE_FOOTINGS.B2 | SUBSTRUCTURE_FOOTINGS | B2 | Stone soling / subbase preparation | 1 | ILLUSTRATIVE_CREW_PLANNING_SEED_NOT_APPROVED | NOT_MEASURED | GENERAL_CIVIL_REFERENCE | REFERENCE_ONLY_NOT_ACTUAL_SITE_ALLOCATION | STR-01/02, CAD-R000002-PROVISIONAL | PROPOSED_NOT_ADMITTED_TO_APPROVED_WBS | FS | 0 | 77 | 78 | 82 | 81 | 4 |  | HAR-0099, HAR-0091 |  |  |  |
| HAR-0101 | HAR.SUBSTRUCTURE_FOOTINGS.B2 | SUBSTRUCTURE_FOOTINGS | B2 | 75 mm PCC bed placement and level inspection | 1 | ILLUSTRATIVE_CREW_PLANNING_SEED_NOT_APPROVED | NOT_MEASURED | CONCRETE | REFERENCE_ONLY_NOT_ACTUAL_SITE_ALLOCATION | STR-01/02, CAD-R000002-PROVISIONAL | PROPOSED_NOT_ADMITTED_TO_APPROVED_WBS | FS | 0 | 78 | 79 | 83 | 82 | 4 |  | HAR-0100, HAR-0092 |  |  |  |
| HAR-0102 | HAR.SUBSTRUCTURE_FOOTINGS.B2 | SUBSTRUCTURE_FOOTINGS | B2 | Footing bottom and top mats / spacers / starters fixing | 2 | ILLUSTRATIVE_CREW_PLANNING_SEED_NOT_APPROVED | NOT_MEASURED | REBAR | REFERENCE_ONLY_NOT_ACTUAL_SITE_ALLOCATION | STR-01/02, CAD-R000002-PROVISIONAL | PROPOSED_NOT_ADMITTED_TO_APPROVED_WBS | FS | 0 | 79 | 81 | 85 | 83 | 4 |  | HAR-0101, HAR-0093, HAR-0043 |  |  |  |
| HAR-0103 | HAR.SUBSTRUCTURE_FOOTINGS.B2 | SUBSTRUCTURE_FOOTINGS | B2 | Footing and column dowel pre-pour engineer inspection | 0 | MILESTONE_ZERO_DURATION | NOT_MEASURED | ENGINEER_INSPECTION | REFERENCE_ONLY_NOT_ACTUAL_SITE_ALLOCATION | STR-01/02, CAD-R000002-PROVISIONAL | PROPOSED_NOT_ADMITTED_TO_APPROVED_WBS | FS | 0 | 81 | 81 | 85 | 85 | 4 |  | HAR-0102, HAR-0094 | True |  |  |
| HAR-0104 | HAR.SUBSTRUCTURE_FOOTINGS.B2 | SUBSTRUCTURE_FOOTINGS | B2 | M25 footing pour / compaction / samples | 1 | ILLUSTRATIVE_CREW_PLANNING_SEED_NOT_APPROVED | PROVISIONAL_GEOMETRY_FROM_SOURCE | CONCRETE | REFERENCE_ONLY_NOT_ACTUAL_SITE_ALLOCATION | RPT-2083, STR-2026 | PROPOSED_NOT_ADMITTED_TO_APPROVED_WBS | FS | 0 | 81 | 82 | 86 | 85 | 4 |  | HAR-0103, HAR-0095, HAR-0048 |  | 3.9015 | m³ |
| HAR-0105 | HAR.SUBSTRUCTURE_FOOTINGS.B2 | SUBSTRUCTURE_FOOTINGS | B2 | Footing curing / stripping and QA acceptance | 3 | ILLUSTRATIVE_CREW_PLANNING_SEED_NOT_APPROVED | NOT_MEASURED | CONCRETE | REFERENCE_ONLY_NOT_ACTUAL_SITE_ALLOCATION | STR-01/02, CAD-R000002-PROVISIONAL | PROPOSED_NOT_ADMITTED_TO_APPROVED_WBS | FS | 0 | 86 | 89 | 89 | 86 | 0 | True | HAR-0104, HAR-0096 |  |  |  |
| HAR-0106 | HAR.SUBSTRUCTURE_FOOTINGS.F2 | SUBSTRUCTURE_FOOTINGS | F2 | Grid set-out and pad footprint check | 1 | ILLUSTRATIVE_CREW_PLANNING_SEED_NOT_APPROVED | NOT_MEASURED | SURVEY | REFERENCE_ONLY_NOT_ACTUAL_SITE_ALLOCATION | STR-01/02, CAD-R000002-PROVISIONAL | PROPOSED_NOT_ADMITTED_TO_APPROVED_WBS | FS | 0 | 71 | 72 | 82 | 81 | 10 |  | HAR-0038, HAR-0097 |  |  |  |
| HAR-0107 | HAR.SUBSTRUCTURE_FOOTINGS.F2 | SUBSTRUCTURE_FOOTINGS | F2 | Controlled pad excavation, shoring and spoil transfer | 2 | ILLUSTRATIVE_CREW_PLANNING_SEED_NOT_APPROVED | NOT_MEASURED | EARTHWORK | REFERENCE_ONLY_NOT_ACTUAL_SITE_ALLOCATION | STR-01/02, CAD-R000002-PROVISIONAL | PROPOSED_NOT_ADMITTED_TO_APPROVED_WBS | FS | 0 | 77 | 79 | 84 | 82 | 5 |  | HAR-0106, HAR-0098 |  |  |  |
| HAR-0108 | HAR.SUBSTRUCTURE_FOOTINGS.F2 | SUBSTRUCTURE_FOOTINGS | F2 | Confirm soil founding level / bearing and soft spots | 0 | MILESTONE_ZERO_DURATION | NOT_MEASURED | ENGINEER_INSPECTION | REFERENCE_ONLY_NOT_ACTUAL_SITE_ALLOCATION | STR-01/02, CAD-R000002-PROVISIONAL | PROPOSED_NOT_ADMITTED_TO_APPROVED_WBS | FS | 0 | 79 | 79 | 84 | 84 | 5 |  | HAR-0107, HAR-0099 | True |  |  |
| HAR-0109 | HAR.SUBSTRUCTURE_FOOTINGS.F2 | SUBSTRUCTURE_FOOTINGS | F2 | Stone soling / subbase preparation | 1 | ILLUSTRATIVE_CREW_PLANNING_SEED_NOT_APPROVED | NOT_MEASURED | GENERAL_CIVIL_REFERENCE | REFERENCE_ONLY_NOT_ACTUAL_SITE_ALLOCATION | STR-01/02, CAD-R000002-PROVISIONAL | PROPOSED_NOT_ADMITTED_TO_APPROVED_WBS | FS | 0 | 79 | 80 | 85 | 84 | 5 |  | HAR-0108, HAR-0100 |  |  |  |
| HAR-0110 | HAR.SUBSTRUCTURE_FOOTINGS.F2 | SUBSTRUCTURE_FOOTINGS | F2 | 75 mm PCC bed placement and level inspection | 1 | ILLUSTRATIVE_CREW_PLANNING_SEED_NOT_APPROVED | NOT_MEASURED | CONCRETE | REFERENCE_ONLY_NOT_ACTUAL_SITE_ALLOCATION | STR-01/02, CAD-R000002-PROVISIONAL | PROPOSED_NOT_ADMITTED_TO_APPROVED_WBS | FS | 0 | 80 | 81 | 86 | 85 | 5 |  | HAR-0109, HAR-0101 |  |  |  |
| HAR-0111 | HAR.SUBSTRUCTURE_FOOTINGS.F2 | SUBSTRUCTURE_FOOTINGS | F2 | Footing bottom and top mats / spacers / starters fixing | 2 | ILLUSTRATIVE_CREW_PLANNING_SEED_NOT_APPROVED | NOT_MEASURED | REBAR | REFERENCE_ONLY_NOT_ACTUAL_SITE_ALLOCATION | STR-01/02, CAD-R000002-PROVISIONAL | PROPOSED_NOT_ADMITTED_TO_APPROVED_WBS | FS | 0 | 81 | 83 | 88 | 86 | 5 |  | HAR-0110, HAR-0102, HAR-0043 |  |  |  |
| HAR-0112 | HAR.SUBSTRUCTURE_FOOTINGS.F2 | SUBSTRUCTURE_FOOTINGS | F2 | Footing and column dowel pre-pour engineer inspection | 0 | MILESTONE_ZERO_DURATION | NOT_MEASURED | ENGINEER_INSPECTION | REFERENCE_ONLY_NOT_ACTUAL_SITE_ALLOCATION | STR-01/02, CAD-R000002-PROVISIONAL | PROPOSED_NOT_ADMITTED_TO_APPROVED_WBS | FS | 0 | 83 | 83 | 88 | 88 | 5 |  | HAR-0111, HAR-0103 | True |  |  |
| HAR-0113 | HAR.SUBSTRUCTURE_FOOTINGS.F2 | SUBSTRUCTURE_FOOTINGS | F2 | M25 footing pour / compaction / samples | 1 | ILLUSTRATIVE_CREW_PLANNING_SEED_NOT_APPROVED | PROVISIONAL_GEOMETRY_FROM_SOURCE | CONCRETE | REFERENCE_ONLY_NOT_ACTUAL_SITE_ALLOCATION | RPT-2083, STR-2026 | PROPOSED_NOT_ADMITTED_TO_APPROVED_WBS | FS | 0 | 83 | 84 | 89 | 88 | 5 |  | HAR-0112, HAR-0104, HAR-0048 |  | 3.402 | m³ |
| HAR-0114 | HAR.SUBSTRUCTURE_FOOTINGS.F2 | SUBSTRUCTURE_FOOTINGS | F2 | Footing curing / stripping and QA acceptance | 3 | ILLUSTRATIVE_CREW_PLANNING_SEED_NOT_APPROVED | NOT_MEASURED | CONCRETE | REFERENCE_ONLY_NOT_ACTUAL_SITE_ALLOCATION | STR-01/02, CAD-R000002-PROVISIONAL | PROPOSED_NOT_ADMITTED_TO_APPROVED_WBS | FS | 0 | 89 | 92 | 92 | 89 | 0 | True | HAR-0113, HAR-0105 |  |  |  |
| HAR-0115 | HAR.SUBSTRUCTURE_FOOTINGS.A3 | SUBSTRUCTURE_FOOTINGS | A3 | Grid set-out and pad footprint check | 1 | ILLUSTRATIVE_CREW_PLANNING_SEED_NOT_APPROVED | NOT_MEASURED | SURVEY | REFERENCE_ONLY_NOT_ACTUAL_SITE_ALLOCATION | STR-01/02, CAD-R000002-PROVISIONAL | PROPOSED_NOT_ADMITTED_TO_APPROVED_WBS | FS | 0 | 72 | 73 | 85 | 84 | 12 |  | HAR-0038, HAR-0106 |  |  |  |
| HAR-0116 | HAR.SUBSTRUCTURE_FOOTINGS.A3 | SUBSTRUCTURE_FOOTINGS | A3 | Controlled pad excavation, shoring and spoil transfer | 2 | ILLUSTRATIVE_CREW_PLANNING_SEED_NOT_APPROVED | NOT_MEASURED | EARTHWORK | REFERENCE_ONLY_NOT_ACTUAL_SITE_ALLOCATION | STR-01/02, CAD-R000002-PROVISIONAL | PROPOSED_NOT_ADMITTED_TO_APPROVED_WBS | FS | 0 | 79 | 81 | 87 | 85 | 6 |  | HAR-0115, HAR-0107 |  |  |  |
| HAR-0117 | HAR.SUBSTRUCTURE_FOOTINGS.A3 | SUBSTRUCTURE_FOOTINGS | A3 | Confirm soil founding level / bearing and soft spots | 0 | MILESTONE_ZERO_DURATION | NOT_MEASURED | ENGINEER_INSPECTION | REFERENCE_ONLY_NOT_ACTUAL_SITE_ALLOCATION | STR-01/02, CAD-R000002-PROVISIONAL | PROPOSED_NOT_ADMITTED_TO_APPROVED_WBS | FS | 0 | 81 | 81 | 87 | 87 | 6 |  | HAR-0116, HAR-0108 | True |  |  |
| HAR-0118 | HAR.SUBSTRUCTURE_FOOTINGS.A3 | SUBSTRUCTURE_FOOTINGS | A3 | Stone soling / subbase preparation | 1 | ILLUSTRATIVE_CREW_PLANNING_SEED_NOT_APPROVED | NOT_MEASURED | GENERAL_CIVIL_REFERENCE | REFERENCE_ONLY_NOT_ACTUAL_SITE_ALLOCATION | STR-01/02, CAD-R000002-PROVISIONAL | PROPOSED_NOT_ADMITTED_TO_APPROVED_WBS | FS | 0 | 81 | 82 | 88 | 87 | 6 |  | HAR-0117, HAR-0109 |  |  |  |
| HAR-0119 | HAR.SUBSTRUCTURE_FOOTINGS.A3 | SUBSTRUCTURE_FOOTINGS | A3 | 75 mm PCC bed placement and level inspection | 1 | ILLUSTRATIVE_CREW_PLANNING_SEED_NOT_APPROVED | NOT_MEASURED | CONCRETE | REFERENCE_ONLY_NOT_ACTUAL_SITE_ALLOCATION | STR-01/02, CAD-R000002-PROVISIONAL | PROPOSED_NOT_ADMITTED_TO_APPROVED_WBS | FS | 0 | 82 | 83 | 89 | 88 | 6 |  | HAR-0118, HAR-0110 |  |  |  |
| HAR-0120 | HAR.SUBSTRUCTURE_FOOTINGS.A3 | SUBSTRUCTURE_FOOTINGS | A3 | Footing bottom and top mats / spacers / starters fixing | 2 | ILLUSTRATIVE_CREW_PLANNING_SEED_NOT_APPROVED | NOT_MEASURED | REBAR | REFERENCE_ONLY_NOT_ACTUAL_SITE_ALLOCATION | STR-01/02, CAD-R000002-PROVISIONAL | PROPOSED_NOT_ADMITTED_TO_APPROVED_WBS | FS | 0 | 83 | 85 | 91 | 89 | 6 |  | HAR-0119, HAR-0111, HAR-0043 |  |  |  |
| HAR-0121 | HAR.SUBSTRUCTURE_FOOTINGS.A3 | SUBSTRUCTURE_FOOTINGS | A3 | Footing and column dowel pre-pour engineer inspection | 0 | MILESTONE_ZERO_DURATION | NOT_MEASURED | ENGINEER_INSPECTION | REFERENCE_ONLY_NOT_ACTUAL_SITE_ALLOCATION | STR-01/02, CAD-R000002-PROVISIONAL | PROPOSED_NOT_ADMITTED_TO_APPROVED_WBS | FS | 0 | 85 | 85 | 91 | 91 | 6 |  | HAR-0120, HAR-0112 | True |  |  |
| HAR-0122 | HAR.SUBSTRUCTURE_FOOTINGS.A3 | SUBSTRUCTURE_FOOTINGS | A3 | M25 footing pour / compaction / samples | 1 | ILLUSTRATIVE_CREW_PLANNING_SEED_NOT_APPROVED | PROVISIONAL_GEOMETRY_FROM_SOURCE | CONCRETE | REFERENCE_ONLY_NOT_ACTUAL_SITE_ALLOCATION | RPT-2083, STR-2026 | PROPOSED_NOT_ADMITTED_TO_APPROVED_WBS | FS | 0 | 85 | 86 | 92 | 91 | 6 |  | HAR-0121, HAR-0113, HAR-0048 |  | 3.402 | m³ |
| HAR-0123 | HAR.SUBSTRUCTURE_FOOTINGS.A3 | SUBSTRUCTURE_FOOTINGS | A3 | Footing curing / stripping and QA acceptance | 3 | ILLUSTRATIVE_CREW_PLANNING_SEED_NOT_APPROVED | NOT_MEASURED | CONCRETE | REFERENCE_ONLY_NOT_ACTUAL_SITE_ALLOCATION | STR-01/02, CAD-R000002-PROVISIONAL | PROPOSED_NOT_ADMITTED_TO_APPROVED_WBS | FS | 0 | 92 | 95 | 95 | 92 | 0 | True | HAR-0122, HAR-0114 |  |  |  |
| HAR-0124 | HAR.SUBSTRUCTURE_FOOTINGS.B3 | SUBSTRUCTURE_FOOTINGS | B3 | Grid set-out and pad footprint check | 1 | ILLUSTRATIVE_CREW_PLANNING_SEED_NOT_APPROVED | NOT_MEASURED | SURVEY | REFERENCE_ONLY_NOT_ACTUAL_SITE_ALLOCATION | STR-01/02, CAD-R000002-PROVISIONAL | PROPOSED_NOT_ADMITTED_TO_APPROVED_WBS | FS | 0 | 73 | 74 | 88 | 87 | 14 |  | HAR-0038, HAR-0115 |  |  |  |
| HAR-0125 | HAR.SUBSTRUCTURE_FOOTINGS.B3 | SUBSTRUCTURE_FOOTINGS | B3 | Controlled pad excavation, shoring and spoil transfer | 2 | ILLUSTRATIVE_CREW_PLANNING_SEED_NOT_APPROVED | NOT_MEASURED | EARTHWORK | REFERENCE_ONLY_NOT_ACTUAL_SITE_ALLOCATION | STR-01/02, CAD-R000002-PROVISIONAL | PROPOSED_NOT_ADMITTED_TO_APPROVED_WBS | FS | 0 | 81 | 83 | 90 | 88 | 7 |  | HAR-0124, HAR-0116 |  |  |  |
| HAR-0126 | HAR.SUBSTRUCTURE_FOOTINGS.B3 | SUBSTRUCTURE_FOOTINGS | B3 | Confirm soil founding level / bearing and soft spots | 0 | MILESTONE_ZERO_DURATION | NOT_MEASURED | ENGINEER_INSPECTION | REFERENCE_ONLY_NOT_ACTUAL_SITE_ALLOCATION | STR-01/02, CAD-R000002-PROVISIONAL | PROPOSED_NOT_ADMITTED_TO_APPROVED_WBS | FS | 0 | 83 | 83 | 90 | 90 | 7 |  | HAR-0125, HAR-0117 | True |  |  |
| HAR-0127 | HAR.SUBSTRUCTURE_FOOTINGS.B3 | SUBSTRUCTURE_FOOTINGS | B3 | Stone soling / subbase preparation | 1 | ILLUSTRATIVE_CREW_PLANNING_SEED_NOT_APPROVED | NOT_MEASURED | GENERAL_CIVIL_REFERENCE | REFERENCE_ONLY_NOT_ACTUAL_SITE_ALLOCATION | STR-01/02, CAD-R000002-PROVISIONAL | PROPOSED_NOT_ADMITTED_TO_APPROVED_WBS | FS | 0 | 83 | 84 | 91 | 90 | 7 |  | HAR-0126, HAR-0118 |  |  |  |
| HAR-0128 | HAR.SUBSTRUCTURE_FOOTINGS.B3 | SUBSTRUCTURE_FOOTINGS | B3 | 75 mm PCC bed placement and level inspection | 1 | ILLUSTRATIVE_CREW_PLANNING_SEED_NOT_APPROVED | NOT_MEASURED | CONCRETE | REFERENCE_ONLY_NOT_ACTUAL_SITE_ALLOCATION | STR-01/02, CAD-R000002-PROVISIONAL | PROPOSED_NOT_ADMITTED_TO_APPROVED_WBS | FS | 0 | 84 | 85 | 92 | 91 | 7 |  | HAR-0127, HAR-0119 |  |  |  |
| HAR-0129 | HAR.SUBSTRUCTURE_FOOTINGS.B3 | SUBSTRUCTURE_FOOTINGS | B3 | Footing bottom and top mats / spacers / starters fixing | 2 | ILLUSTRATIVE_CREW_PLANNING_SEED_NOT_APPROVED | NOT_MEASURED | REBAR | REFERENCE_ONLY_NOT_ACTUAL_SITE_ALLOCATION | STR-01/02, CAD-R000002-PROVISIONAL | PROPOSED_NOT_ADMITTED_TO_APPROVED_WBS | FS | 0 | 85 | 87 | 94 | 92 | 7 |  | HAR-0128, HAR-0120, HAR-0043 |  |  |  |
| HAR-0130 | HAR.SUBSTRUCTURE_FOOTINGS.B3 | SUBSTRUCTURE_FOOTINGS | B3 | Footing and column dowel pre-pour engineer inspection | 0 | MILESTONE_ZERO_DURATION | NOT_MEASURED | ENGINEER_INSPECTION | REFERENCE_ONLY_NOT_ACTUAL_SITE_ALLOCATION | STR-01/02, CAD-R000002-PROVISIONAL | PROPOSED_NOT_ADMITTED_TO_APPROVED_WBS | FS | 0 | 87 | 87 | 94 | 94 | 7 |  | HAR-0129, HAR-0121 | True |  |  |
| HAR-0131 | HAR.SUBSTRUCTURE_FOOTINGS.B3 | SUBSTRUCTURE_FOOTINGS | B3 | M25 footing pour / compaction / samples | 1 | ILLUSTRATIVE_CREW_PLANNING_SEED_NOT_APPROVED | PROVISIONAL_GEOMETRY_FROM_SOURCE | CONCRETE | REFERENCE_ONLY_NOT_ACTUAL_SITE_ALLOCATION | RPT-2083, STR-2026 | PROPOSED_NOT_ADMITTED_TO_APPROVED_WBS | FS | 0 | 87 | 88 | 95 | 94 | 7 |  | HAR-0130, HAR-0122, HAR-0048 |  | 3.9015 | m³ |
| HAR-0132 | HAR.SUBSTRUCTURE_FOOTINGS.B3 | SUBSTRUCTURE_FOOTINGS | B3 | Footing curing / stripping and QA acceptance | 3 | ILLUSTRATIVE_CREW_PLANNING_SEED_NOT_APPROVED | NOT_MEASURED | CONCRETE | REFERENCE_ONLY_NOT_ACTUAL_SITE_ALLOCATION | STR-01/02, CAD-R000002-PROVISIONAL | PROPOSED_NOT_ADMITTED_TO_APPROVED_WBS | FS | 0 | 95 | 98 | 98 | 95 | 0 | True | HAR-0131, HAR-0123 |  |  |  |
| HAR-0133 | HAR.SUBSTRUCTURE_FOOTINGS.F3 | SUBSTRUCTURE_FOOTINGS | F3 | Grid set-out and pad footprint check | 1 | ILLUSTRATIVE_CREW_PLANNING_SEED_NOT_APPROVED | NOT_MEASURED | SURVEY | REFERENCE_ONLY_NOT_ACTUAL_SITE_ALLOCATION | STR-01/02, CAD-R000002-PROVISIONAL | PROPOSED_NOT_ADMITTED_TO_APPROVED_WBS | FS | 0 | 74 | 75 | 91 | 90 | 16 |  | HAR-0038, HAR-0124 |  |  |  |
| HAR-0134 | HAR.SUBSTRUCTURE_FOOTINGS.F3 | SUBSTRUCTURE_FOOTINGS | F3 | Controlled pad excavation, shoring and spoil transfer | 2 | ILLUSTRATIVE_CREW_PLANNING_SEED_NOT_APPROVED | NOT_MEASURED | EARTHWORK | REFERENCE_ONLY_NOT_ACTUAL_SITE_ALLOCATION | STR-01/02, CAD-R000002-PROVISIONAL | PROPOSED_NOT_ADMITTED_TO_APPROVED_WBS | FS | 0 | 83 | 85 | 93 | 91 | 8 |  | HAR-0133, HAR-0125 |  |  |  |
| HAR-0135 | HAR.SUBSTRUCTURE_FOOTINGS.F3 | SUBSTRUCTURE_FOOTINGS | F3 | Confirm soil founding level / bearing and soft spots | 0 | MILESTONE_ZERO_DURATION | NOT_MEASURED | ENGINEER_INSPECTION | REFERENCE_ONLY_NOT_ACTUAL_SITE_ALLOCATION | STR-01/02, CAD-R000002-PROVISIONAL | PROPOSED_NOT_ADMITTED_TO_APPROVED_WBS | FS | 0 | 85 | 85 | 93 | 93 | 8 |  | HAR-0134, HAR-0126 | True |  |  |
| HAR-0136 | HAR.SUBSTRUCTURE_FOOTINGS.F3 | SUBSTRUCTURE_FOOTINGS | F3 | Stone soling / subbase preparation | 1 | ILLUSTRATIVE_CREW_PLANNING_SEED_NOT_APPROVED | NOT_MEASURED | GENERAL_CIVIL_REFERENCE | REFERENCE_ONLY_NOT_ACTUAL_SITE_ALLOCATION | STR-01/02, CAD-R000002-PROVISIONAL | PROPOSED_NOT_ADMITTED_TO_APPROVED_WBS | FS | 0 | 85 | 86 | 94 | 93 | 8 |  | HAR-0135, HAR-0127 |  |  |  |
| HAR-0137 | HAR.SUBSTRUCTURE_FOOTINGS.F3 | SUBSTRUCTURE_FOOTINGS | F3 | 75 mm PCC bed placement and level inspection | 1 | ILLUSTRATIVE_CREW_PLANNING_SEED_NOT_APPROVED | NOT_MEASURED | CONCRETE | REFERENCE_ONLY_NOT_ACTUAL_SITE_ALLOCATION | STR-01/02, CAD-R000002-PROVISIONAL | PROPOSED_NOT_ADMITTED_TO_APPROVED_WBS | FS | 0 | 86 | 87 | 95 | 94 | 8 |  | HAR-0136, HAR-0128 |  |  |  |
| HAR-0138 | HAR.SUBSTRUCTURE_FOOTINGS.F3 | SUBSTRUCTURE_FOOTINGS | F3 | Footing bottom and top mats / spacers / starters fixing | 2 | ILLUSTRATIVE_CREW_PLANNING_SEED_NOT_APPROVED | NOT_MEASURED | REBAR | REFERENCE_ONLY_NOT_ACTUAL_SITE_ALLOCATION | STR-01/02, CAD-R000002-PROVISIONAL | PROPOSED_NOT_ADMITTED_TO_APPROVED_WBS | FS | 0 | 87 | 89 | 97 | 95 | 8 |  | HAR-0137, HAR-0129, HAR-0043 |  |  |  |
| HAR-0139 | HAR.SUBSTRUCTURE_FOOTINGS.F3 | SUBSTRUCTURE_FOOTINGS | F3 | Footing and column dowel pre-pour engineer inspection | 0 | MILESTONE_ZERO_DURATION | NOT_MEASURED | ENGINEER_INSPECTION | REFERENCE_ONLY_NOT_ACTUAL_SITE_ALLOCATION | STR-01/02, CAD-R000002-PROVISIONAL | PROPOSED_NOT_ADMITTED_TO_APPROVED_WBS | FS | 0 | 89 | 89 | 97 | 97 | 8 |  | HAR-0138, HAR-0130 | True |  |  |
| HAR-0140 | HAR.SUBSTRUCTURE_FOOTINGS.F3 | SUBSTRUCTURE_FOOTINGS | F3 | M25 footing pour / compaction / samples | 1 | ILLUSTRATIVE_CREW_PLANNING_SEED_NOT_APPROVED | PROVISIONAL_GEOMETRY_FROM_SOURCE | CONCRETE | REFERENCE_ONLY_NOT_ACTUAL_SITE_ALLOCATION | RPT-2083, STR-2026 | PROPOSED_NOT_ADMITTED_TO_APPROVED_WBS | FS | 0 | 89 | 90 | 98 | 97 | 8 |  | HAR-0139, HAR-0131, HAR-0048 |  | 3.402 | m³ |

| activity_id | wbs | phase | scope | title | duration_workdays | duration_basis | quantity_basis | crew_category | crew_basis | source_refs | status | logic_type | lag_workdays | planned_start_workday | planned_finish_workday | latest_finish_workday | latest_start_workday | total_float_workdays | critical | predecessor_ids | engineering_hold | quantity | quantity_unit |
| --- | --- | --- | --- | --- | --- | --- | --- | --- | --- | --- | --- | --- | --- | --- | --- | --- | --- | --- | --- | --- | --- | --- | --- |
| HAR-0141 | HAR.SUBSTRUCTURE_FOOTINGS.F3 | SUBSTRUCTURE_FOOTINGS | F3 | Footing curing / stripping and QA acceptance | 3 | ILLUSTRATIVE_CREW_PLANNING_SEED_NOT_APPROVED | NOT_MEASURED | CONCRETE | REFERENCE_ONLY_NOT_ACTUAL_SITE_ALLOCATION | STR-01/02, CAD-R000002-PROVISIONAL | PROPOSED_NOT_ADMITTED_TO_APPROVED_WBS | FS | 0 | 98 | 101 | 101 | 98 | 0 | True | HAR-0140, HAR-0132 |  |  |  |
| HAR-0142 | HAR.SUBSTRUCTURE_FOOTINGS.A4 | SUBSTRUCTURE_FOOTINGS | A4 | Grid set-out and pad footprint check | 1 | ILLUSTRATIVE_CREW_PLANNING_SEED_NOT_APPROVED | NOT_MEASURED | SURVEY | REFERENCE_ONLY_NOT_ACTUAL_SITE_ALLOCATION | STR-01/02, CAD-R000002-PROVISIONAL | PROPOSED_NOT_ADMITTED_TO_APPROVED_WBS | FS | 0 | 75 | 76 | 94 | 93 | 18 |  | HAR-0038, HAR-0133 |  |  |  |
| HAR-0143 | HAR.SUBSTRUCTURE_FOOTINGS.A4 | SUBSTRUCTURE_FOOTINGS | A4 | Controlled pad excavation, shoring and spoil transfer | 2 | ILLUSTRATIVE_CREW_PLANNING_SEED_NOT_APPROVED | NOT_MEASURED | EARTHWORK | REFERENCE_ONLY_NOT_ACTUAL_SITE_ALLOCATION | STR-01/02, CAD-R000002-PROVISIONAL | PROPOSED_NOT_ADMITTED_TO_APPROVED_WBS | FS | 0 | 85 | 87 | 96 | 94 | 9 |  | HAR-0142, HAR-0134 |  |  |  |
| HAR-0144 | HAR.SUBSTRUCTURE_FOOTINGS.A4 | SUBSTRUCTURE_FOOTINGS | A4 | Confirm soil founding level / bearing and soft spots | 0 | MILESTONE_ZERO_DURATION | NOT_MEASURED | ENGINEER_INSPECTION | REFERENCE_ONLY_NOT_ACTUAL_SITE_ALLOCATION | STR-01/02, CAD-R000002-PROVISIONAL | PROPOSED_NOT_ADMITTED_TO_APPROVED_WBS | FS | 0 | 87 | 87 | 96 | 96 | 9 |  | HAR-0143, HAR-0135 | True |  |  |
| HAR-0145 | HAR.SUBSTRUCTURE_FOOTINGS.A4 | SUBSTRUCTURE_FOOTINGS | A4 | Stone soling / subbase preparation | 1 | ILLUSTRATIVE_CREW_PLANNING_SEED_NOT_APPROVED | NOT_MEASURED | GENERAL_CIVIL_REFERENCE | REFERENCE_ONLY_NOT_ACTUAL_SITE_ALLOCATION | STR-01/02, CAD-R000002-PROVISIONAL | PROPOSED_NOT_ADMITTED_TO_APPROVED_WBS | FS | 0 | 87 | 88 | 97 | 96 | 9 |  | HAR-0144, HAR-0136 |  |  |  |
| HAR-0146 | HAR.SUBSTRUCTURE_FOOTINGS.A4 | SUBSTRUCTURE_FOOTINGS | A4 | 75 mm PCC bed placement and level inspection | 1 | ILLUSTRATIVE_CREW_PLANNING_SEED_NOT_APPROVED | NOT_MEASURED | CONCRETE | REFERENCE_ONLY_NOT_ACTUAL_SITE_ALLOCATION | STR-01/02, CAD-R000002-PROVISIONAL | PROPOSED_NOT_ADMITTED_TO_APPROVED_WBS | FS | 0 | 88 | 89 | 98 | 97 | 9 |  | HAR-0145, HAR-0137 |  |  |  |
| HAR-0147 | HAR.SUBSTRUCTURE_FOOTINGS.A4 | SUBSTRUCTURE_FOOTINGS | A4 | Footing bottom and top mats / spacers / starters fixing | 2 | ILLUSTRATIVE_CREW_PLANNING_SEED_NOT_APPROVED | NOT_MEASURED | REBAR | REFERENCE_ONLY_NOT_ACTUAL_SITE_ALLOCATION | STR-01/02, CAD-R000002-PROVISIONAL | PROPOSED_NOT_ADMITTED_TO_APPROVED_WBS | FS | 0 | 89 | 91 | 100 | 98 | 9 |  | HAR-0146, HAR-0138, HAR-0043 |  |  |  |
| HAR-0148 | HAR.SUBSTRUCTURE_FOOTINGS.A4 | SUBSTRUCTURE_FOOTINGS | A4 | Footing and column dowel pre-pour engineer inspection | 0 | MILESTONE_ZERO_DURATION | NOT_MEASURED | ENGINEER_INSPECTION | REFERENCE_ONLY_NOT_ACTUAL_SITE_ALLOCATION | STR-01/02, CAD-R000002-PROVISIONAL | PROPOSED_NOT_ADMITTED_TO_APPROVED_WBS | FS | 0 | 91 | 91 | 100 | 100 | 9 |  | HAR-0147, HAR-0139 | True |  |  |
| HAR-0149 | HAR.SUBSTRUCTURE_FOOTINGS.A4 | SUBSTRUCTURE_FOOTINGS | A4 | M25 footing pour / compaction / samples | 1 | ILLUSTRATIVE_CREW_PLANNING_SEED_NOT_APPROVED | PROVISIONAL_GEOMETRY_FROM_SOURCE | CONCRETE | REFERENCE_ONLY_NOT_ACTUAL_SITE_ALLOCATION | RPT-2083, STR-2026 | PROPOSED_NOT_ADMITTED_TO_APPROVED_WBS | FS | 0 | 91 | 92 | 101 | 100 | 9 |  | HAR-0148, HAR-0140, HAR-0048 |  | 3.402 | m³ |
| HAR-0150 | HAR.SUBSTRUCTURE_FOOTINGS.A4 | SUBSTRUCTURE_FOOTINGS | A4 | Footing curing / stripping and QA acceptance | 3 | ILLUSTRATIVE_CREW_PLANNING_SEED_NOT_APPROVED | NOT_MEASURED | CONCRETE | REFERENCE_ONLY_NOT_ACTUAL_SITE_ALLOCATION | STR-01/02, CAD-R000002-PROVISIONAL | PROPOSED_NOT_ADMITTED_TO_APPROVED_WBS | FS | 0 | 101 | 104 | 104 | 101 | 0 | True | HAR-0149, HAR-0141 |  |  |  |
| HAR-0151 | HAR.SUBSTRUCTURE_FOOTINGS.B4 | SUBSTRUCTURE_FOOTINGS | B4 | Grid set-out and pad footprint check | 1 | ILLUSTRATIVE_CREW_PLANNING_SEED_NOT_APPROVED | NOT_MEASURED | SURVEY | REFERENCE_ONLY_NOT_ACTUAL_SITE_ALLOCATION | STR-01/02, CAD-R000002-PROVISIONAL | PROPOSED_NOT_ADMITTED_TO_APPROVED_WBS | FS | 0 | 76 | 77 | 97 | 96 | 20 |  | HAR-0038, HAR-0142 |  |  |  |
| HAR-0152 | HAR.SUBSTRUCTURE_FOOTINGS.B4 | SUBSTRUCTURE_FOOTINGS | B4 | Controlled pad excavation, shoring and spoil transfer | 2 | ILLUSTRATIVE_CREW_PLANNING_SEED_NOT_APPROVED | NOT_MEASURED | EARTHWORK | REFERENCE_ONLY_NOT_ACTUAL_SITE_ALLOCATION | STR-01/02, CAD-R000002-PROVISIONAL | PROPOSED_NOT_ADMITTED_TO_APPROVED_WBS | FS | 0 | 87 | 89 | 99 | 97 | 10 |  | HAR-0151, HAR-0143 |  |  |  |
| HAR-0153 | HAR.SUBSTRUCTURE_FOOTINGS.B4 | SUBSTRUCTURE_FOOTINGS | B4 | Confirm soil founding level / bearing and soft spots | 0 | MILESTONE_ZERO_DURATION | NOT_MEASURED | ENGINEER_INSPECTION | REFERENCE_ONLY_NOT_ACTUAL_SITE_ALLOCATION | STR-01/02, CAD-R000002-PROVISIONAL | PROPOSED_NOT_ADMITTED_TO_APPROVED_WBS | FS | 0 | 89 | 89 | 99 | 99 | 10 |  | HAR-0152, HAR-0144 | True |  |  |
| HAR-0154 | HAR.SUBSTRUCTURE_FOOTINGS.B4 | SUBSTRUCTURE_FOOTINGS | B4 | Stone soling / subbase preparation | 1 | ILLUSTRATIVE_CREW_PLANNING_SEED_NOT_APPROVED | NOT_MEASURED | GENERAL_CIVIL_REFERENCE | REFERENCE_ONLY_NOT_ACTUAL_SITE_ALLOCATION | STR-01/02, CAD-R000002-PROVISIONAL | PROPOSED_NOT_ADMITTED_TO_APPROVED_WBS | FS | 0 | 89 | 90 | 100 | 99 | 10 |  | HAR-0153, HAR-0145 |  |  |  |
| HAR-0155 | HAR.SUBSTRUCTURE_FOOTINGS.B4 | SUBSTRUCTURE_FOOTINGS | B4 | 75 mm PCC bed placement and level inspection | 1 | ILLUSTRATIVE_CREW_PLANNING_SEED_NOT_APPROVED | NOT_MEASURED | CONCRETE | REFERENCE_ONLY_NOT_ACTUAL_SITE_ALLOCATION | STR-01/02, CAD-R000002-PROVISIONAL | PROPOSED_NOT_ADMITTED_TO_APPROVED_WBS | FS | 0 | 90 | 91 | 101 | 100 | 10 |  | HAR-0154, HAR-0146 |  |  |  |
| HAR-0156 | HAR.SUBSTRUCTURE_FOOTINGS.B4 | SUBSTRUCTURE_FOOTINGS | B4 | Footing bottom and top mats / spacers / starters fixing | 2 | ILLUSTRATIVE_CREW_PLANNING_SEED_NOT_APPROVED | NOT_MEASURED | REBAR | REFERENCE_ONLY_NOT_ACTUAL_SITE_ALLOCATION | STR-01/02, CAD-R000002-PROVISIONAL | PROPOSED_NOT_ADMITTED_TO_APPROVED_WBS | FS | 0 | 91 | 93 | 103 | 101 | 10 |  | HAR-0155, HAR-0147, HAR-0043 |  |  |  |
| HAR-0157 | HAR.SUBSTRUCTURE_FOOTINGS.B4 | SUBSTRUCTURE_FOOTINGS | B4 | Footing and column dowel pre-pour engineer inspection | 0 | MILESTONE_ZERO_DURATION | NOT_MEASURED | ENGINEER_INSPECTION | REFERENCE_ONLY_NOT_ACTUAL_SITE_ALLOCATION | STR-01/02, CAD-R000002-PROVISIONAL | PROPOSED_NOT_ADMITTED_TO_APPROVED_WBS | FS | 0 | 93 | 93 | 103 | 103 | 10 |  | HAR-0156, HAR-0148 | True |  |  |
| HAR-0158 | HAR.SUBSTRUCTURE_FOOTINGS.B4 | SUBSTRUCTURE_FOOTINGS | B4 | M25 footing pour / compaction / samples | 1 | ILLUSTRATIVE_CREW_PLANNING_SEED_NOT_APPROVED | PROVISIONAL_GEOMETRY_FROM_SOURCE | CONCRETE | REFERENCE_ONLY_NOT_ACTUAL_SITE_ALLOCATION | RPT-2083, STR-2026 | PROPOSED_NOT_ADMITTED_TO_APPROVED_WBS | FS | 0 | 93 | 94 | 104 | 103 | 10 |  | HAR-0157, HAR-0149, HAR-0048 |  | 3.9015 | m³ |
| HAR-0159 | HAR.SUBSTRUCTURE_FOOTINGS.B4 | SUBSTRUCTURE_FOOTINGS | B4 | Footing curing / stripping and QA acceptance | 3 | ILLUSTRATIVE_CREW_PLANNING_SEED_NOT_APPROVED | NOT_MEASURED | CONCRETE | REFERENCE_ONLY_NOT_ACTUAL_SITE_ALLOCATION | STR-01/02, CAD-R000002-PROVISIONAL | PROPOSED_NOT_ADMITTED_TO_APPROVED_WBS | FS | 0 | 104 | 107 | 107 | 104 | 0 | True | HAR-0158, HAR-0150 |  |  |  |
| HAR-0160 | HAR.SUBSTRUCTURE_FOOTINGS.E4 | SUBSTRUCTURE_FOOTINGS | E4 | Grid set-out and pad footprint check | 1 | ILLUSTRATIVE_CREW_PLANNING_SEED_NOT_APPROVED | NOT_MEASURED | SURVEY | REFERENCE_ONLY_NOT_ACTUAL_SITE_ALLOCATION | STR-01/02, CAD-R000002-PROVISIONAL | PROPOSED_NOT_ADMITTED_TO_APPROVED_WBS | FS | 0 | 77 | 78 | 100 | 99 | 22 |  | HAR-0038, HAR-0151 |  |  |  |
| HAR-0161 | HAR.SUBSTRUCTURE_FOOTINGS.E4 | SUBSTRUCTURE_FOOTINGS | E4 | Controlled pad excavation, shoring and spoil transfer | 2 | ILLUSTRATIVE_CREW_PLANNING_SEED_NOT_APPROVED | NOT_MEASURED | EARTHWORK | REFERENCE_ONLY_NOT_ACTUAL_SITE_ALLOCATION | STR-01/02, CAD-R000002-PROVISIONAL | PROPOSED_NOT_ADMITTED_TO_APPROVED_WBS | FS | 0 | 89 | 91 | 102 | 100 | 11 |  | HAR-0160, HAR-0152 |  |  |  |
| HAR-0162 | HAR.SUBSTRUCTURE_FOOTINGS.E4 | SUBSTRUCTURE_FOOTINGS | E4 | Confirm soil founding level / bearing and soft spots | 0 | MILESTONE_ZERO_DURATION | NOT_MEASURED | ENGINEER_INSPECTION | REFERENCE_ONLY_NOT_ACTUAL_SITE_ALLOCATION | STR-01/02, CAD-R000002-PROVISIONAL | PROPOSED_NOT_ADMITTED_TO_APPROVED_WBS | FS | 0 | 91 | 91 | 102 | 102 | 11 |  | HAR-0161, HAR-0153 | True |  |  |
| HAR-0163 | HAR.SUBSTRUCTURE_FOOTINGS.E4 | SUBSTRUCTURE_FOOTINGS | E4 | Stone soling / subbase preparation | 1 | ILLUSTRATIVE_CREW_PLANNING_SEED_NOT_APPROVED | NOT_MEASURED | GENERAL_CIVIL_REFERENCE | REFERENCE_ONLY_NOT_ACTUAL_SITE_ALLOCATION | STR-01/02, CAD-R000002-PROVISIONAL | PROPOSED_NOT_ADMITTED_TO_APPROVED_WBS | FS | 0 | 91 | 92 | 103 | 102 | 11 |  | HAR-0162, HAR-0154 |  |  |  |
| HAR-0164 | HAR.SUBSTRUCTURE_FOOTINGS.E4 | SUBSTRUCTURE_FOOTINGS | E4 | 75 mm PCC bed placement and level inspection | 1 | ILLUSTRATIVE_CREW_PLANNING_SEED_NOT_APPROVED | NOT_MEASURED | CONCRETE | REFERENCE_ONLY_NOT_ACTUAL_SITE_ALLOCATION | STR-01/02, CAD-R000002-PROVISIONAL | PROPOSED_NOT_ADMITTED_TO_APPROVED_WBS | FS | 0 | 92 | 93 | 104 | 103 | 11 |  | HAR-0163, HAR-0155 |  |  |  |
| HAR-0165 | HAR.SUBSTRUCTURE_FOOTINGS.E4 | SUBSTRUCTURE_FOOTINGS | E4 | Footing bottom and top mats / spacers / starters fixing | 2 | ILLUSTRATIVE_CREW_PLANNING_SEED_NOT_APPROVED | NOT_MEASURED | REBAR | REFERENCE_ONLY_NOT_ACTUAL_SITE_ALLOCATION | STR-01/02, CAD-R000002-PROVISIONAL | PROPOSED_NOT_ADMITTED_TO_APPROVED_WBS | FS | 0 | 93 | 95 | 106 | 104 | 11 |  | HAR-0164, HAR-0156, HAR-0043 |  |  |  |
| HAR-0166 | HAR.SUBSTRUCTURE_FOOTINGS.E4 | SUBSTRUCTURE_FOOTINGS | E4 | Footing and column dowel pre-pour engineer inspection | 0 | MILESTONE_ZERO_DURATION | NOT_MEASURED | ENGINEER_INSPECTION | REFERENCE_ONLY_NOT_ACTUAL_SITE_ALLOCATION | STR-01/02, CAD-R000002-PROVISIONAL | PROPOSED_NOT_ADMITTED_TO_APPROVED_WBS | FS | 0 | 95 | 95 | 106 | 106 | 11 |  | HAR-0165, HAR-0157 | True |  |  |
| HAR-0167 | HAR.SUBSTRUCTURE_FOOTINGS.E4 | SUBSTRUCTURE_FOOTINGS | E4 | M25 footing pour / compaction / samples | 1 | ILLUSTRATIVE_CREW_PLANNING_SEED_NOT_APPROVED | PROVISIONAL_GEOMETRY_FROM_SOURCE | CONCRETE | REFERENCE_ONLY_NOT_ACTUAL_SITE_ALLOCATION | RPT-2083, STR-2026 | PROPOSED_NOT_ADMITTED_TO_APPROVED_WBS | FS | 0 | 95 | 96 | 107 | 106 | 11 |  | HAR-0166, HAR-0158, HAR-0048 |  | 3.402 | m³ |
| HAR-0168 | HAR.SUBSTRUCTURE_FOOTINGS.E4 | SUBSTRUCTURE_FOOTINGS | E4 | Footing curing / stripping and QA acceptance | 3 | ILLUSTRATIVE_CREW_PLANNING_SEED_NOT_APPROVED | NOT_MEASURED | CONCRETE | REFERENCE_ONLY_NOT_ACTUAL_SITE_ALLOCATION | STR-01/02, CAD-R000002-PROVISIONAL | PROPOSED_NOT_ADMITTED_TO_APPROVED_WBS | FS | 0 | 107 | 110 | 110 | 107 | 0 | True | HAR-0167, HAR-0159 |  |  |  |
| HAR-0169 | HAR.SUBSTRUCTURE_FOOTINGS.A5 | SUBSTRUCTURE_FOOTINGS | A5 | Grid set-out and pad footprint check | 1 | ILLUSTRATIVE_CREW_PLANNING_SEED_NOT_APPROVED | NOT_MEASURED | SURVEY | REFERENCE_ONLY_NOT_ACTUAL_SITE_ALLOCATION | STR-01/02, CAD-R000002-PROVISIONAL | PROPOSED_NOT_ADMITTED_TO_APPROVED_WBS | FS | 0 | 78 | 79 | 103 | 102 | 24 |  | HAR-0038, HAR-0160 |  |  |  |
| HAR-0170 | HAR.SUBSTRUCTURE_FOOTINGS.A5 | SUBSTRUCTURE_FOOTINGS | A5 | Controlled pad excavation, shoring and spoil transfer | 2 | ILLUSTRATIVE_CREW_PLANNING_SEED_NOT_APPROVED | NOT_MEASURED | EARTHWORK | REFERENCE_ONLY_NOT_ACTUAL_SITE_ALLOCATION | STR-01/02, CAD-R000002-PROVISIONAL | PROPOSED_NOT_ADMITTED_TO_APPROVED_WBS | FS | 0 | 91 | 93 | 105 | 103 | 12 |  | HAR-0169, HAR-0161 |  |  |  |
| HAR-0171 | HAR.SUBSTRUCTURE_FOOTINGS.A5 | SUBSTRUCTURE_FOOTINGS | A5 | Confirm soil founding level / bearing and soft spots | 0 | MILESTONE_ZERO_DURATION | NOT_MEASURED | ENGINEER_INSPECTION | REFERENCE_ONLY_NOT_ACTUAL_SITE_ALLOCATION | STR-01/02, CAD-R000002-PROVISIONAL | PROPOSED_NOT_ADMITTED_TO_APPROVED_WBS | FS | 0 | 93 | 93 | 105 | 105 | 12 |  | HAR-0170, HAR-0162 | True |  |  |
| HAR-0172 | HAR.SUBSTRUCTURE_FOOTINGS.A5 | SUBSTRUCTURE_FOOTINGS | A5 | Stone soling / subbase preparation | 1 | ILLUSTRATIVE_CREW_PLANNING_SEED_NOT_APPROVED | NOT_MEASURED | GENERAL_CIVIL_REFERENCE | REFERENCE_ONLY_NOT_ACTUAL_SITE_ALLOCATION | STR-01/02, CAD-R000002-PROVISIONAL | PROPOSED_NOT_ADMITTED_TO_APPROVED_WBS | FS | 0 | 93 | 94 | 106 | 105 | 12 |  | HAR-0171, HAR-0163 |  |  |  |
| HAR-0173 | HAR.SUBSTRUCTURE_FOOTINGS.A5 | SUBSTRUCTURE_FOOTINGS | A5 | 75 mm PCC bed placement and level inspection | 1 | ILLUSTRATIVE_CREW_PLANNING_SEED_NOT_APPROVED | NOT_MEASURED | CONCRETE | REFERENCE_ONLY_NOT_ACTUAL_SITE_ALLOCATION | STR-01/02, CAD-R000002-PROVISIONAL | PROPOSED_NOT_ADMITTED_TO_APPROVED_WBS | FS | 0 | 94 | 95 | 107 | 106 | 12 |  | HAR-0172, HAR-0164 |  |  |  |
| HAR-0174 | HAR.SUBSTRUCTURE_FOOTINGS.A5 | SUBSTRUCTURE_FOOTINGS | A5 | Footing bottom and top mats / spacers / starters fixing | 2 | ILLUSTRATIVE_CREW_PLANNING_SEED_NOT_APPROVED | NOT_MEASURED | REBAR | REFERENCE_ONLY_NOT_ACTUAL_SITE_ALLOCATION | STR-01/02, CAD-R000002-PROVISIONAL | PROPOSED_NOT_ADMITTED_TO_APPROVED_WBS | FS | 0 | 95 | 97 | 109 | 107 | 12 |  | HAR-0173, HAR-0165, HAR-0043 |  |  |  |
| HAR-0175 | HAR.SUBSTRUCTURE_FOOTINGS.A5 | SUBSTRUCTURE_FOOTINGS | A5 | Footing and column dowel pre-pour engineer inspection | 0 | MILESTONE_ZERO_DURATION | NOT_MEASURED | ENGINEER_INSPECTION | REFERENCE_ONLY_NOT_ACTUAL_SITE_ALLOCATION | STR-01/02, CAD-R000002-PROVISIONAL | PROPOSED_NOT_ADMITTED_TO_APPROVED_WBS | FS | 0 | 97 | 97 | 109 | 109 | 12 |  | HAR-0174, HAR-0166 | True |  |  |
| HAR-0176 | HAR.SUBSTRUCTURE_FOOTINGS.A5 | SUBSTRUCTURE_FOOTINGS | A5 | M25 footing pour / compaction / samples | 1 | ILLUSTRATIVE_CREW_PLANNING_SEED_NOT_APPROVED | PROVISIONAL_GEOMETRY_FROM_SOURCE | CONCRETE | REFERENCE_ONLY_NOT_ACTUAL_SITE_ALLOCATION | RPT-2083, STR-2026 | PROPOSED_NOT_ADMITTED_TO_APPROVED_WBS | FS | 0 | 97 | 98 | 110 | 109 | 12 |  | HAR-0175, HAR-0167, HAR-0048 |  | 3.402 | m³ |
| HAR-0177 | HAR.SUBSTRUCTURE_FOOTINGS.A5 | SUBSTRUCTURE_FOOTINGS | A5 | Footing curing / stripping and QA acceptance | 3 | ILLUSTRATIVE_CREW_PLANNING_SEED_NOT_APPROVED | NOT_MEASURED | CONCRETE | REFERENCE_ONLY_NOT_ACTUAL_SITE_ALLOCATION | STR-01/02, CAD-R000002-PROVISIONAL | PROPOSED_NOT_ADMITTED_TO_APPROVED_WBS | FS | 0 | 110 | 113 | 113 | 110 | 0 | True | HAR-0176, HAR-0168 |  |  |  |
| HAR-0178 | HAR.SUBSTRUCTURE_FOOTINGS.B5 | SUBSTRUCTURE_FOOTINGS | B5 | Grid set-out and pad footprint check | 1 | ILLUSTRATIVE_CREW_PLANNING_SEED_NOT_APPROVED | NOT_MEASURED | SURVEY | REFERENCE_ONLY_NOT_ACTUAL_SITE_ALLOCATION | STR-01/02, CAD-R000002-PROVISIONAL | PROPOSED_NOT_ADMITTED_TO_APPROVED_WBS | FS | 0 | 79 | 80 | 106 | 105 | 26 |  | HAR-0038, HAR-0169 |  |  |  |
| HAR-0179 | HAR.SUBSTRUCTURE_FOOTINGS.B5 | SUBSTRUCTURE_FOOTINGS | B5 | Controlled pad excavation, shoring and spoil transfer | 2 | ILLUSTRATIVE_CREW_PLANNING_SEED_NOT_APPROVED | NOT_MEASURED | EARTHWORK | REFERENCE_ONLY_NOT_ACTUAL_SITE_ALLOCATION | STR-01/02, CAD-R000002-PROVISIONAL | PROPOSED_NOT_ADMITTED_TO_APPROVED_WBS | FS | 0 | 93 | 95 | 108 | 106 | 13 |  | HAR-0178, HAR-0170 |  |  |  |
| HAR-0180 | HAR.SUBSTRUCTURE_FOOTINGS.B5 | SUBSTRUCTURE_FOOTINGS | B5 | Confirm soil founding level / bearing and soft spots | 0 | MILESTONE_ZERO_DURATION | NOT_MEASURED | ENGINEER_INSPECTION | REFERENCE_ONLY_NOT_ACTUAL_SITE_ALLOCATION | STR-01/02, CAD-R000002-PROVISIONAL | PROPOSED_NOT_ADMITTED_TO_APPROVED_WBS | FS | 0 | 95 | 95 | 108 | 108 | 13 |  | HAR-0179, HAR-0171 | True |  |  |
| HAR-0181 | HAR.SUBSTRUCTURE_FOOTINGS.B5 | SUBSTRUCTURE_FOOTINGS | B5 | Stone soling / subbase preparation | 1 | ILLUSTRATIVE_CREW_PLANNING_SEED_NOT_APPROVED | NOT_MEASURED | GENERAL_CIVIL_REFERENCE | REFERENCE_ONLY_NOT_ACTUAL_SITE_ALLOCATION | STR-01/02, CAD-R000002-PROVISIONAL | PROPOSED_NOT_ADMITTED_TO_APPROVED_WBS | FS | 0 | 95 | 96 | 109 | 108 | 13 |  | HAR-0180, HAR-0172 |  |  |  |
| HAR-0182 | HAR.SUBSTRUCTURE_FOOTINGS.B5 | SUBSTRUCTURE_FOOTINGS | B5 | 75 mm PCC bed placement and level inspection | 1 | ILLUSTRATIVE_CREW_PLANNING_SEED_NOT_APPROVED | NOT_MEASURED | CONCRETE | REFERENCE_ONLY_NOT_ACTUAL_SITE_ALLOCATION | STR-01/02, CAD-R000002-PROVISIONAL | PROPOSED_NOT_ADMITTED_TO_APPROVED_WBS | FS | 0 | 96 | 97 | 110 | 109 | 13 |  | HAR-0181, HAR-0173 |  |  |  |
| HAR-0183 | HAR.SUBSTRUCTURE_FOOTINGS.B5 | SUBSTRUCTURE_FOOTINGS | B5 | Footing bottom and top mats / spacers / starters fixing | 2 | ILLUSTRATIVE_CREW_PLANNING_SEED_NOT_APPROVED | NOT_MEASURED | REBAR | REFERENCE_ONLY_NOT_ACTUAL_SITE_ALLOCATION | STR-01/02, CAD-R000002-PROVISIONAL | PROPOSED_NOT_ADMITTED_TO_APPROVED_WBS | FS | 0 | 97 | 99 | 112 | 110 | 13 |  | HAR-0182, HAR-0174, HAR-0043 |  |  |  |
| HAR-0184 | HAR.SUBSTRUCTURE_FOOTINGS.B5 | SUBSTRUCTURE_FOOTINGS | B5 | Footing and column dowel pre-pour engineer inspection | 0 | MILESTONE_ZERO_DURATION | NOT_MEASURED | ENGINEER_INSPECTION | REFERENCE_ONLY_NOT_ACTUAL_SITE_ALLOCATION | STR-01/02, CAD-R000002-PROVISIONAL | PROPOSED_NOT_ADMITTED_TO_APPROVED_WBS | FS | 0 | 99 | 99 | 112 | 112 | 13 |  | HAR-0183, HAR-0175 | True |  |  |
| HAR-0185 | HAR.SUBSTRUCTURE_FOOTINGS.B5 | SUBSTRUCTURE_FOOTINGS | B5 | M25 footing pour / compaction / samples | 1 | ILLUSTRATIVE_CREW_PLANNING_SEED_NOT_APPROVED | PROVISIONAL_GEOMETRY_FROM_SOURCE | CONCRETE | REFERENCE_ONLY_NOT_ACTUAL_SITE_ALLOCATION | RPT-2083, STR-2026 | PROPOSED_NOT_ADMITTED_TO_APPROVED_WBS | FS | 0 | 99 | 100 | 113 | 112 | 13 |  | HAR-0184, HAR-0176, HAR-0048 |  | 3.9015 | m³ |
| HAR-0186 | HAR.SUBSTRUCTURE_FOOTINGS.B5 | SUBSTRUCTURE_FOOTINGS | B5 | Footing curing / stripping and QA acceptance | 3 | ILLUSTRATIVE_CREW_PLANNING_SEED_NOT_APPROVED | NOT_MEASURED | CONCRETE | REFERENCE_ONLY_NOT_ACTUAL_SITE_ALLOCATION | STR-01/02, CAD-R000002-PROVISIONAL | PROPOSED_NOT_ADMITTED_TO_APPROVED_WBS | FS | 0 | 113 | 116 | 116 | 113 | 0 | True | HAR-0185, HAR-0177 |  |  |  |
| HAR-0187 | HAR.SUBSTRUCTURE_FOOTINGS.D5 | SUBSTRUCTURE_FOOTINGS | D5 | Grid set-out and pad footprint check | 1 | ILLUSTRATIVE_CREW_PLANNING_SEED_NOT_APPROVED | NOT_MEASURED | SURVEY | REFERENCE_ONLY_NOT_ACTUAL_SITE_ALLOCATION | STR-01/02, CAD-R000002-PROVISIONAL | PROPOSED_NOT_ADMITTED_TO_APPROVED_WBS | FS | 0 | 80 | 81 | 109 | 108 | 28 |  | HAR-0038, HAR-0178 |  |  |  |
| HAR-0188 | HAR.SUBSTRUCTURE_FOOTINGS.D5 | SUBSTRUCTURE_FOOTINGS | D5 | Controlled pad excavation, shoring and spoil transfer | 2 | ILLUSTRATIVE_CREW_PLANNING_SEED_NOT_APPROVED | NOT_MEASURED | EARTHWORK | REFERENCE_ONLY_NOT_ACTUAL_SITE_ALLOCATION | STR-01/02, CAD-R000002-PROVISIONAL | PROPOSED_NOT_ADMITTED_TO_APPROVED_WBS | FS | 0 | 95 | 97 | 111 | 109 | 14 |  | HAR-0187, HAR-0179 |  |  |  |
| HAR-0189 | HAR.SUBSTRUCTURE_FOOTINGS.D5 | SUBSTRUCTURE_FOOTINGS | D5 | Confirm soil founding level / bearing and soft spots | 0 | MILESTONE_ZERO_DURATION | NOT_MEASURED | ENGINEER_INSPECTION | REFERENCE_ONLY_NOT_ACTUAL_SITE_ALLOCATION | STR-01/02, CAD-R000002-PROVISIONAL | PROPOSED_NOT_ADMITTED_TO_APPROVED_WBS | FS | 0 | 97 | 97 | 111 | 111 | 14 |  | HAR-0188, HAR-0180 | True |  |  |
| HAR-0190 | HAR.SUBSTRUCTURE_FOOTINGS.D5 | SUBSTRUCTURE_FOOTINGS | D5 | Stone soling / subbase preparation | 1 | ILLUSTRATIVE_CREW_PLANNING_SEED_NOT_APPROVED | NOT_MEASURED | GENERAL_CIVIL_REFERENCE | REFERENCE_ONLY_NOT_ACTUAL_SITE_ALLOCATION | STR-01/02, CAD-R000002-PROVISIONAL | PROPOSED_NOT_ADMITTED_TO_APPROVED_WBS | FS | 0 | 97 | 98 | 112 | 111 | 14 |  | HAR-0189, HAR-0181 |  |  |  |
| HAR-0191 | HAR.SUBSTRUCTURE_FOOTINGS.D5 | SUBSTRUCTURE_FOOTINGS | D5 | 75 mm PCC bed placement and level inspection | 1 | ILLUSTRATIVE_CREW_PLANNING_SEED_NOT_APPROVED | NOT_MEASURED | CONCRETE | REFERENCE_ONLY_NOT_ACTUAL_SITE_ALLOCATION | STR-01/02, CAD-R000002-PROVISIONAL | PROPOSED_NOT_ADMITTED_TO_APPROVED_WBS | FS | 0 | 98 | 99 | 113 | 112 | 14 |  | HAR-0190, HAR-0182 |  |  |  |
| HAR-0192 | HAR.SUBSTRUCTURE_FOOTINGS.D5 | SUBSTRUCTURE_FOOTINGS | D5 | Footing bottom and top mats / spacers / starters fixing | 2 | ILLUSTRATIVE_CREW_PLANNING_SEED_NOT_APPROVED | NOT_MEASURED | REBAR | REFERENCE_ONLY_NOT_ACTUAL_SITE_ALLOCATION | STR-01/02, CAD-R000002-PROVISIONAL | PROPOSED_NOT_ADMITTED_TO_APPROVED_WBS | FS | 0 | 99 | 101 | 115 | 113 | 14 |  | HAR-0191, HAR-0183, HAR-0043 |  |  |  |
| HAR-0193 | HAR.SUBSTRUCTURE_FOOTINGS.D5 | SUBSTRUCTURE_FOOTINGS | D5 | Footing and column dowel pre-pour engineer inspection | 0 | MILESTONE_ZERO_DURATION | NOT_MEASURED | ENGINEER_INSPECTION | REFERENCE_ONLY_NOT_ACTUAL_SITE_ALLOCATION | STR-01/02, CAD-R000002-PROVISIONAL | PROPOSED_NOT_ADMITTED_TO_APPROVED_WBS | FS | 0 | 101 | 101 | 115 | 115 | 14 |  | HAR-0192, HAR-0184 | True |  |  |
| HAR-0194 | HAR.SUBSTRUCTURE_FOOTINGS.D5 | SUBSTRUCTURE_FOOTINGS | D5 | M25 footing pour / compaction / samples | 1 | ILLUSTRATIVE_CREW_PLANNING_SEED_NOT_APPROVED | PROVISIONAL_GEOMETRY_FROM_SOURCE | CONCRETE | REFERENCE_ONLY_NOT_ACTUAL_SITE_ALLOCATION | RPT-2083, STR-2026 | PROPOSED_NOT_ADMITTED_TO_APPROVED_WBS | FS | 0 | 101 | 102 | 116 | 115 | 14 |  | HAR-0193, HAR-0185, HAR-0048 |  | 3.402 | m³ |
| HAR-0195 | HAR.SUBSTRUCTURE_FOOTINGS.D5 | SUBSTRUCTURE_FOOTINGS | D5 | Footing curing / stripping and QA acceptance | 3 | ILLUSTRATIVE_CREW_PLANNING_SEED_NOT_APPROVED | NOT_MEASURED | CONCRETE | REFERENCE_ONLY_NOT_ACTUAL_SITE_ALLOCATION | STR-01/02, CAD-R000002-PROVISIONAL | PROPOSED_NOT_ADMITTED_TO_APPROVED_WBS | FS | 0 | 116 | 119 | 119 | 116 | 0 | True | HAR-0194, HAR-0186 |  |  |  |
| HAR-0196 | HAR.SUBSTRUCTURE_FOOTINGS.A6 | SUBSTRUCTURE_FOOTINGS | A6 | Grid set-out and pad footprint check | 1 | ILLUSTRATIVE_CREW_PLANNING_SEED_NOT_APPROVED | NOT_MEASURED | SURVEY | REFERENCE_ONLY_NOT_ACTUAL_SITE_ALLOCATION | STR-01/02, CAD-R000002-PROVISIONAL | PROPOSED_NOT_ADMITTED_TO_APPROVED_WBS | FS | 0 | 81 | 82 | 112 | 111 | 30 |  | HAR-0038, HAR-0187 |  |  |  |
| HAR-0197 | HAR.SUBSTRUCTURE_FOOTINGS.A6 | SUBSTRUCTURE_FOOTINGS | A6 | Controlled pad excavation, shoring and spoil transfer | 2 | ILLUSTRATIVE_CREW_PLANNING_SEED_NOT_APPROVED | NOT_MEASURED | EARTHWORK | REFERENCE_ONLY_NOT_ACTUAL_SITE_ALLOCATION | STR-01/02, CAD-R000002-PROVISIONAL | PROPOSED_NOT_ADMITTED_TO_APPROVED_WBS | FS | 0 | 97 | 99 | 114 | 112 | 15 |  | HAR-0196, HAR-0188 |  |  |  |
| HAR-0198 | HAR.SUBSTRUCTURE_FOOTINGS.A6 | SUBSTRUCTURE_FOOTINGS | A6 | Confirm soil founding level / bearing and soft spots | 0 | MILESTONE_ZERO_DURATION | NOT_MEASURED | ENGINEER_INSPECTION | REFERENCE_ONLY_NOT_ACTUAL_SITE_ALLOCATION | STR-01/02, CAD-R000002-PROVISIONAL | PROPOSED_NOT_ADMITTED_TO_APPROVED_WBS | FS | 0 | 99 | 99 | 114 | 114 | 15 |  | HAR-0197, HAR-0189 | True |  |  |
| HAR-0199 | HAR.SUBSTRUCTURE_FOOTINGS.A6 | SUBSTRUCTURE_FOOTINGS | A6 | Stone soling / subbase preparation | 1 | ILLUSTRATIVE_CREW_PLANNING_SEED_NOT_APPROVED | NOT_MEASURED | GENERAL_CIVIL_REFERENCE | REFERENCE_ONLY_NOT_ACTUAL_SITE_ALLOCATION | STR-01/02, CAD-R000002-PROVISIONAL | PROPOSED_NOT_ADMITTED_TO_APPROVED_WBS | FS | 0 | 99 | 100 | 115 | 114 | 15 |  | HAR-0198, HAR-0190 |  |  |  |
| HAR-0200 | HAR.SUBSTRUCTURE_FOOTINGS.A6 | SUBSTRUCTURE_FOOTINGS | A6 | 75 mm PCC bed placement and level inspection | 1 | ILLUSTRATIVE_CREW_PLANNING_SEED_NOT_APPROVED | NOT_MEASURED | CONCRETE | REFERENCE_ONLY_NOT_ACTUAL_SITE_ALLOCATION | STR-01/02, CAD-R000002-PROVISIONAL | PROPOSED_NOT_ADMITTED_TO_APPROVED_WBS | FS | 0 | 100 | 101 | 116 | 115 | 15 |  | HAR-0199, HAR-0191 |  |  |  |
| HAR-0201 | HAR.SUBSTRUCTURE_FOOTINGS.A6 | SUBSTRUCTURE_FOOTINGS | A6 | Footing bottom and top mats / spacers / starters fixing | 2 | ILLUSTRATIVE_CREW_PLANNING_SEED_NOT_APPROVED | NOT_MEASURED | REBAR | REFERENCE_ONLY_NOT_ACTUAL_SITE_ALLOCATION | STR-01/02, CAD-R000002-PROVISIONAL | PROPOSED_NOT_ADMITTED_TO_APPROVED_WBS | FS | 0 | 101 | 103 | 118 | 116 | 15 |  | HAR-0200, HAR-0192, HAR-0043 |  |  |  |
| HAR-0202 | HAR.SUBSTRUCTURE_FOOTINGS.A6 | SUBSTRUCTURE_FOOTINGS | A6 | Footing and column dowel pre-pour engineer inspection | 0 | MILESTONE_ZERO_DURATION | NOT_MEASURED | ENGINEER_INSPECTION | REFERENCE_ONLY_NOT_ACTUAL_SITE_ALLOCATION | STR-01/02, CAD-R000002-PROVISIONAL | PROPOSED_NOT_ADMITTED_TO_APPROVED_WBS | FS | 0 | 103 | 103 | 118 | 118 | 15 |  | HAR-0201, HAR-0193 | True |  |  |
| HAR-0203 | HAR.SUBSTRUCTURE_FOOTINGS.A6 | SUBSTRUCTURE_FOOTINGS | A6 | M25 footing pour / compaction / samples | 1 | ILLUSTRATIVE_CREW_PLANNING_SEED_NOT_APPROVED | PROVISIONAL_GEOMETRY_FROM_SOURCE | CONCRETE | REFERENCE_ONLY_NOT_ACTUAL_SITE_ALLOCATION | RPT-2083, STR-2026 | PROPOSED_NOT_ADMITTED_TO_APPROVED_WBS | FS | 0 | 103 | 104 | 119 | 118 | 15 |  | HAR-0202, HAR-0194, HAR-0048 |  | 3.402 | m³ |
| HAR-0204 | HAR.SUBSTRUCTURE_FOOTINGS.A6 | SUBSTRUCTURE_FOOTINGS | A6 | Footing curing / stripping and QA acceptance | 3 | ILLUSTRATIVE_CREW_PLANNING_SEED_NOT_APPROVED | NOT_MEASURED | CONCRETE | REFERENCE_ONLY_NOT_ACTUAL_SITE_ALLOCATION | STR-01/02, CAD-R000002-PROVISIONAL | PROPOSED_NOT_ADMITTED_TO_APPROVED_WBS | FS | 0 | 119 | 122 | 122 | 119 | 0 | True | HAR-0203, HAR-0195 |  |  |  |
| HAR-0205 | HAR.SUBSTRUCTURE_FOOTINGS.B6 | SUBSTRUCTURE_FOOTINGS | B6 | Grid set-out and pad footprint check | 1 | ILLUSTRATIVE_CREW_PLANNING_SEED_NOT_APPROVED | NOT_MEASURED | SURVEY | REFERENCE_ONLY_NOT_ACTUAL_SITE_ALLOCATION | STR-01/02, CAD-R000002-PROVISIONAL | PROPOSED_NOT_ADMITTED_TO_APPROVED_WBS | FS | 0 | 82 | 83 | 115 | 114 | 32 |  | HAR-0038, HAR-0196 |  |  |  |
| HAR-0206 | HAR.SUBSTRUCTURE_FOOTINGS.B6 | SUBSTRUCTURE_FOOTINGS | B6 | Controlled pad excavation, shoring and spoil transfer | 2 | ILLUSTRATIVE_CREW_PLANNING_SEED_NOT_APPROVED | NOT_MEASURED | EARTHWORK | REFERENCE_ONLY_NOT_ACTUAL_SITE_ALLOCATION | STR-01/02, CAD-R000002-PROVISIONAL | PROPOSED_NOT_ADMITTED_TO_APPROVED_WBS | FS | 0 | 99 | 101 | 117 | 115 | 16 |  | HAR-0205, HAR-0197 |  |  |  |
| HAR-0207 | HAR.SUBSTRUCTURE_FOOTINGS.B6 | SUBSTRUCTURE_FOOTINGS | B6 | Confirm soil founding level / bearing and soft spots | 0 | MILESTONE_ZERO_DURATION | NOT_MEASURED | ENGINEER_INSPECTION | REFERENCE_ONLY_NOT_ACTUAL_SITE_ALLOCATION | STR-01/02, CAD-R000002-PROVISIONAL | PROPOSED_NOT_ADMITTED_TO_APPROVED_WBS | FS | 0 | 101 | 101 | 117 | 117 | 16 |  | HAR-0206, HAR-0198 | True |  |  |
| HAR-0208 | HAR.SUBSTRUCTURE_FOOTINGS.B6 | SUBSTRUCTURE_FOOTINGS | B6 | Stone soling / subbase preparation | 1 | ILLUSTRATIVE_CREW_PLANNING_SEED_NOT_APPROVED | NOT_MEASURED | GENERAL_CIVIL_REFERENCE | REFERENCE_ONLY_NOT_ACTUAL_SITE_ALLOCATION | STR-01/02, CAD-R000002-PROVISIONAL | PROPOSED_NOT_ADMITTED_TO_APPROVED_WBS | FS | 0 | 101 | 102 | 118 | 117 | 16 |  | HAR-0207, HAR-0199 |  |  |  |
| HAR-0209 | HAR.SUBSTRUCTURE_FOOTINGS.B6 | SUBSTRUCTURE_FOOTINGS | B6 | 75 mm PCC bed placement and level inspection | 1 | ILLUSTRATIVE_CREW_PLANNING_SEED_NOT_APPROVED | NOT_MEASURED | CONCRETE | REFERENCE_ONLY_NOT_ACTUAL_SITE_ALLOCATION | STR-01/02, CAD-R000002-PROVISIONAL | PROPOSED_NOT_ADMITTED_TO_APPROVED_WBS | FS | 0 | 102 | 103 | 119 | 118 | 16 |  | HAR-0208, HAR-0200 |  |  |  |
| HAR-0210 | HAR.SUBSTRUCTURE_FOOTINGS.B6 | SUBSTRUCTURE_FOOTINGS | B6 | Footing bottom and top mats / spacers / starters fixing | 2 | ILLUSTRATIVE_CREW_PLANNING_SEED_NOT_APPROVED | NOT_MEASURED | REBAR | REFERENCE_ONLY_NOT_ACTUAL_SITE_ALLOCATION | STR-01/02, CAD-R000002-PROVISIONAL | PROPOSED_NOT_ADMITTED_TO_APPROVED_WBS | FS | 0 | 103 | 105 | 121 | 119 | 16 |  | HAR-0209, HAR-0201, HAR-0043 |  |  |  |

| activity_id | wbs | phase | scope | title | duration_workdays | duration_basis | quantity_basis | crew_category | crew_basis | source_refs | status | logic_type | lag_workdays | planned_start_workday | planned_finish_workday | latest_finish_workday | latest_start_workday | total_float_workdays | critical | predecessor_ids | engineering_hold | quantity | quantity_unit |
| --- | --- | --- | --- | --- | --- | --- | --- | --- | --- | --- | --- | --- | --- | --- | --- | --- | --- | --- | --- | --- | --- | --- | --- |
| HAR-0211 | HAR.SUBSTRUCTURE_FOOTINGS.B6 | SUBSTRUCTURE_FOOTINGS | B6 | Footing and column dowel pre-pour engineer inspection | 0 | MILESTONE_ZERO_DURATION | NOT_MEASURED | ENGINEER_INSPECTION | REFERENCE_ONLY_NOT_ACTUAL_SITE_ALLOCATION | STR-01/02, CAD-R000002-PROVISIONAL | PROPOSED_NOT_ADMITTED_TO_APPROVED_WBS | FS | 0 | 105 | 105 | 121 | 121 | 16 |  | HAR-0210, HAR-0202 | True |  |  |
| HAR-0212 | HAR.SUBSTRUCTURE_FOOTINGS.B6 | SUBSTRUCTURE_FOOTINGS | B6 | M25 footing pour / compaction / samples | 1 | ILLUSTRATIVE_CREW_PLANNING_SEED_NOT_APPROVED | PROVISIONAL_GEOMETRY_FROM_SOURCE | CONCRETE | REFERENCE_ONLY_NOT_ACTUAL_SITE_ALLOCATION | RPT-2083, STR-2026 | PROPOSED_NOT_ADMITTED_TO_APPROVED_WBS | FS | 0 | 105 | 106 | 122 | 121 | 16 |  | HAR-0211, HAR-0203, HAR-0048 |  | 3.9015 | m³ |
| HAR-0213 | HAR.SUBSTRUCTURE_FOOTINGS.B6 | SUBSTRUCTURE_FOOTINGS | B6 | Footing curing / stripping and QA acceptance | 3 | ILLUSTRATIVE_CREW_PLANNING_SEED_NOT_APPROVED | NOT_MEASURED | CONCRETE | REFERENCE_ONLY_NOT_ACTUAL_SITE_ALLOCATION | STR-01/02, CAD-R000002-PROVISIONAL | PROPOSED_NOT_ADMITTED_TO_APPROVED_WBS | FS | 0 | 122 | 125 | 125 | 122 | 0 | True | HAR-0212, HAR-0204 |  |  |  |
| HAR-0214 | HAR.SUBSTRUCTURE_FOOTINGS.C6 | SUBSTRUCTURE_FOOTINGS | C6 | Grid set-out and pad footprint check | 1 | ILLUSTRATIVE_CREW_PLANNING_SEED_NOT_APPROVED | NOT_MEASURED | SURVEY | REFERENCE_ONLY_NOT_ACTUAL_SITE_ALLOCATION | STR-01/02, CAD-R000002-PROVISIONAL | PROPOSED_NOT_ADMITTED_TO_APPROVED_WBS | FS | 0 | 83 | 84 | 118 | 117 | 34 |  | HAR-0038, HAR-0205 |  |  |  |
| HAR-0215 | HAR.SUBSTRUCTURE_FOOTINGS.C6 | SUBSTRUCTURE_FOOTINGS | C6 | Controlled pad excavation, shoring and spoil transfer | 2 | ILLUSTRATIVE_CREW_PLANNING_SEED_NOT_APPROVED | NOT_MEASURED | EARTHWORK | REFERENCE_ONLY_NOT_ACTUAL_SITE_ALLOCATION | STR-01/02, CAD-R000002-PROVISIONAL | PROPOSED_NOT_ADMITTED_TO_APPROVED_WBS | FS | 0 | 101 | 103 | 120 | 118 | 17 |  | HAR-0214, HAR-0206 |  |  |  |
| HAR-0216 | HAR.SUBSTRUCTURE_FOOTINGS.C6 | SUBSTRUCTURE_FOOTINGS | C6 | Confirm soil founding level / bearing and soft spots | 0 | MILESTONE_ZERO_DURATION | NOT_MEASURED | ENGINEER_INSPECTION | REFERENCE_ONLY_NOT_ACTUAL_SITE_ALLOCATION | STR-01/02, CAD-R000002-PROVISIONAL | PROPOSED_NOT_ADMITTED_TO_APPROVED_WBS | FS | 0 | 103 | 103 | 120 | 120 | 17 |  | HAR-0215, HAR-0207 | True |  |  |
| HAR-0217 | HAR.SUBSTRUCTURE_FOOTINGS.C6 | SUBSTRUCTURE_FOOTINGS | C6 | Stone soling / subbase preparation | 1 | ILLUSTRATIVE_CREW_PLANNING_SEED_NOT_APPROVED | NOT_MEASURED | GENERAL_CIVIL_REFERENCE | REFERENCE_ONLY_NOT_ACTUAL_SITE_ALLOCATION | STR-01/02, CAD-R000002-PROVISIONAL | PROPOSED_NOT_ADMITTED_TO_APPROVED_WBS | FS | 0 | 103 | 104 | 121 | 120 | 17 |  | HAR-0216, HAR-0208 |  |  |  |
| HAR-0218 | HAR.SUBSTRUCTURE_FOOTINGS.C6 | SUBSTRUCTURE_FOOTINGS | C6 | 75 mm PCC bed placement and level inspection | 1 | ILLUSTRATIVE_CREW_PLANNING_SEED_NOT_APPROVED | NOT_MEASURED | CONCRETE | REFERENCE_ONLY_NOT_ACTUAL_SITE_ALLOCATION | STR-01/02, CAD-R000002-PROVISIONAL | PROPOSED_NOT_ADMITTED_TO_APPROVED_WBS | FS | 0 | 104 | 105 | 122 | 121 | 17 |  | HAR-0217, HAR-0209 |  |  |  |
| HAR-0219 | HAR.SUBSTRUCTURE_FOOTINGS.C6 | SUBSTRUCTURE_FOOTINGS | C6 | Footing bottom and top mats / spacers / starters fixing | 2 | ILLUSTRATIVE_CREW_PLANNING_SEED_NOT_APPROVED | NOT_MEASURED | REBAR | REFERENCE_ONLY_NOT_ACTUAL_SITE_ALLOCATION | STR-01/02, CAD-R000002-PROVISIONAL | PROPOSED_NOT_ADMITTED_TO_APPROVED_WBS | FS | 0 | 105 | 107 | 124 | 122 | 17 |  | HAR-0218, HAR-0210, HAR-0043 |  |  |  |
| HAR-0220 | HAR.SUBSTRUCTURE_FOOTINGS.C6 | SUBSTRUCTURE_FOOTINGS | C6 | Footing and column dowel pre-pour engineer inspection | 0 | MILESTONE_ZERO_DURATION | NOT_MEASURED | ENGINEER_INSPECTION | REFERENCE_ONLY_NOT_ACTUAL_SITE_ALLOCATION | STR-01/02, CAD-R000002-PROVISIONAL | PROPOSED_NOT_ADMITTED_TO_APPROVED_WBS | FS | 0 | 107 | 107 | 124 | 124 | 17 |  | HAR-0219, HAR-0211 | True |  |  |
| HAR-0221 | HAR.SUBSTRUCTURE_FOOTINGS.C6 | SUBSTRUCTURE_FOOTINGS | C6 | M25 footing pour / compaction / samples | 1 | ILLUSTRATIVE_CREW_PLANNING_SEED_NOT_APPROVED | PROVISIONAL_GEOMETRY_FROM_SOURCE | CONCRETE | REFERENCE_ONLY_NOT_ACTUAL_SITE_ALLOCATION | RPT-2083, STR-2026 | PROPOSED_NOT_ADMITTED_TO_APPROVED_WBS | FS | 0 | 107 | 108 | 125 | 124 | 17 |  | HAR-0220, HAR-0212, HAR-0048 |  | 3.402 | m³ |
| HAR-0222 | HAR.SUBSTRUCTURE_FOOTINGS.C6 | SUBSTRUCTURE_FOOTINGS | C6 | Footing curing / stripping and QA acceptance | 3 | ILLUSTRATIVE_CREW_PLANNING_SEED_NOT_APPROVED | NOT_MEASURED | CONCRETE | REFERENCE_ONLY_NOT_ACTUAL_SITE_ALLOCATION | STR-01/02, CAD-R000002-PROVISIONAL | PROPOSED_NOT_ADMITTED_TO_APPROVED_WBS | FS | 0 | 125 | 128 | 128 | 125 | 0 | True | HAR-0221, HAR-0213 |  |  |  |
| HAR-0223 | HAR.MILESTONES.FOOTINGS | MILESTONES | FOOTINGS | All footing zones completed - engineering and material clearance pending | 0 | MILESTONE_ZERO_DURATION | NOT_MEASURED | GENERAL_CIVIL_REFERENCE | REFERENCE_ONLY_NOT_ACTUAL_SITE_ALLOCATION | STR-01/02, RPT-2083 | PROPOSED_NOT_ADMITTED_TO_APPROVED_WBS | FS | 0 | 128 | 128 | 128 | 128 | 0 | True | HAR-0069, HAR-0078, HAR-0087, HAR-0096, HAR-0105, HAR-0114, HAR-0123, HAR-0132, HAR-0141, HAR-0150, HAR-0159, HAR-0168, HAR-0177, HAR-0186, HAR-0195, HAR-0204, HAR-0213, HAR-0222 | True |  |  |
| HAR-0224 | HAR.SUBSTRUCTURE_STRAPS.A1-B1 | SUBSTRUCTURE_STRAPS | A1-B1 | Strap-trench excavation / formation level | 2 | ILLUSTRATIVE_CREW_PLANNING_SEED_NOT_APPROVED | NOT_MEASURED | EARTHWORK | REFERENCE_ONLY_NOT_ACTUAL_SITE_ALLOCATION | STR-04/06, RPT-2083 | PROPOSED_NOT_ADMITTED_TO_APPROVED_WBS | FS | 0 | 128 | 130 | 130 | 128 | 0 | True | HAR-0223 |  |  |  |
| HAR-0225 | HAR.SUBSTRUCTURE_STRAPS.A1-B1 | SUBSTRUCTURE_STRAPS | A1-B1 | Strap beam bedding and base shuttering | 1 | ILLUSTRATIVE_CREW_PLANNING_SEED_NOT_APPROVED | NOT_MEASURED | FORMWORK | REFERENCE_ONLY_NOT_ACTUAL_SITE_ALLOCATION | STR-04/06, RPT-2083 | PROPOSED_NOT_ADMITTED_TO_APPROVED_WBS | FS | 0 | 130 | 131 | 131 | 130 | 0 | True | HAR-0224 |  |  |  |
| HAR-0226 | HAR.SUBSTRUCTURE_STRAPS.A1-B1 | SUBSTRUCTURE_STRAPS | A1-B1 | Strap beam longitudinal steel, links, anchorage, supports | 2 | ILLUSTRATIVE_CREW_PLANNING_SEED_NOT_APPROVED | NOT_MEASURED | REBAR | REFERENCE_ONLY_NOT_ACTUAL_SITE_ALLOCATION | STR-04/06, RPT-2083 | PROPOSED_NOT_ADMITTED_TO_APPROVED_WBS | FS | 0 | 131 | 133 | 133 | 131 | 0 | True | HAR-0225 |  |  |  |
| HAR-0227 | HAR.SUBSTRUCTURE_STRAPS.A1-B1 | SUBSTRUCTURE_STRAPS | A1-B1 | Strap beam rebar/cross-tie inspection hold | 0 | MILESTONE_ZERO_DURATION | NOT_MEASURED | ENGINEER_INSPECTION | REFERENCE_ONLY_NOT_ACTUAL_SITE_ALLOCATION | STR-04/06, RPT-2083 | PROPOSED_NOT_ADMITTED_TO_APPROVED_WBS | FS | 0 | 133 | 133 | 133 | 133 | 0 | True | HAR-0226 | True |  |  |
| HAR-0228 | HAR.SUBSTRUCTURE_STRAPS.A1-B1 | SUBSTRUCTURE_STRAPS | A1-B1 | M25 strap beam pour and test samples | 1 | ILLUSTRATIVE_CREW_PLANNING_SEED_NOT_APPROVED | NOT_MEASURED | CONCRETE | REFERENCE_ONLY_NOT_ACTUAL_SITE_ALLOCATION | STR-04/06, RPT-2083 | PROPOSED_NOT_ADMITTED_TO_APPROVED_WBS | FS | 0 | 133 | 134 | 134 | 133 | 0 | True | HAR-0227 |  |  |  |
| HAR-0229 | HAR.SUBSTRUCTURE_STRAPS.A1-B1 | SUBSTRUCTURE_STRAPS | A1-B1 | Strap beam curing and permitted removal review | 2 | ILLUSTRATIVE_CREW_PLANNING_SEED_NOT_APPROVED | NOT_MEASURED | CONCRETE | REFERENCE_ONLY_NOT_ACTUAL_SITE_ALLOCATION | STR-04/06, RPT-2083 | PROPOSED_NOT_ADMITTED_TO_APPROVED_WBS | FS | 0 | 134 | 136 | 136 | 134 | 0 | True | HAR-0228 |  |  |  |
| HAR-0230 | HAR.SUBSTRUCTURE_STRAPS.B1-F1 | SUBSTRUCTURE_STRAPS | B1-F1 | Strap-trench excavation / formation level | 2 | ILLUSTRATIVE_CREW_PLANNING_SEED_NOT_APPROVED | NOT_MEASURED | EARTHWORK | REFERENCE_ONLY_NOT_ACTUAL_SITE_ALLOCATION | STR-04/06, RPT-2083 | PROPOSED_NOT_ADMITTED_TO_APPROVED_WBS | FS | 0 | 130 | 132 | 132 | 130 | 0 | True | HAR-0223, HAR-0224 |  |  |  |
| HAR-0231 | HAR.SUBSTRUCTURE_STRAPS.B1-F1 | SUBSTRUCTURE_STRAPS | B1-F1 | Strap beam bedding and base shuttering | 1 | ILLUSTRATIVE_CREW_PLANNING_SEED_NOT_APPROVED | NOT_MEASURED | FORMWORK | REFERENCE_ONLY_NOT_ACTUAL_SITE_ALLOCATION | STR-04/06, RPT-2083 | PROPOSED_NOT_ADMITTED_TO_APPROVED_WBS | FS | 0 | 132 | 133 | 133 | 132 | 0 | True | HAR-0230, HAR-0225 |  |  |  |
| HAR-0232 | HAR.SUBSTRUCTURE_STRAPS.B1-F1 | SUBSTRUCTURE_STRAPS | B1-F1 | Strap beam longitudinal steel, links, anchorage, supports | 2 | ILLUSTRATIVE_CREW_PLANNING_SEED_NOT_APPROVED | NOT_MEASURED | REBAR | REFERENCE_ONLY_NOT_ACTUAL_SITE_ALLOCATION | STR-04/06, RPT-2083 | PROPOSED_NOT_ADMITTED_TO_APPROVED_WBS | FS | 0 | 133 | 135 | 135 | 133 | 0 | True | HAR-0231, HAR-0226 |  |  |  |
| HAR-0233 | HAR.SUBSTRUCTURE_STRAPS.B1-F1 | SUBSTRUCTURE_STRAPS | B1-F1 | Strap beam rebar/cross-tie inspection hold | 0 | MILESTONE_ZERO_DURATION | NOT_MEASURED | ENGINEER_INSPECTION | REFERENCE_ONLY_NOT_ACTUAL_SITE_ALLOCATION | STR-04/06, RPT-2083 | PROPOSED_NOT_ADMITTED_TO_APPROVED_WBS | FS | 0 | 135 | 135 | 135 | 135 | 0 | True | HAR-0232, HAR-0227 | True |  |  |
| HAR-0234 | HAR.SUBSTRUCTURE_STRAPS.B1-F1 | SUBSTRUCTURE_STRAPS | B1-F1 | M25 strap beam pour and test samples | 1 | ILLUSTRATIVE_CREW_PLANNING_SEED_NOT_APPROVED | NOT_MEASURED | CONCRETE | REFERENCE_ONLY_NOT_ACTUAL_SITE_ALLOCATION | STR-04/06, RPT-2083 | PROPOSED_NOT_ADMITTED_TO_APPROVED_WBS | FS | 0 | 135 | 136 | 136 | 135 | 0 | True | HAR-0233, HAR-0228 |  |  |  |
| HAR-0235 | HAR.SUBSTRUCTURE_STRAPS.B1-F1 | SUBSTRUCTURE_STRAPS | B1-F1 | Strap beam curing and permitted removal review | 2 | ILLUSTRATIVE_CREW_PLANNING_SEED_NOT_APPROVED | NOT_MEASURED | CONCRETE | REFERENCE_ONLY_NOT_ACTUAL_SITE_ALLOCATION | STR-04/06, RPT-2083 | PROPOSED_NOT_ADMITTED_TO_APPROVED_WBS | FS | 0 | 136 | 138 | 138 | 136 | 0 | True | HAR-0234, HAR-0229 |  |  |  |
| HAR-0236 | HAR.SUBSTRUCTURE_STRAPS.A2-B2 | SUBSTRUCTURE_STRAPS | A2-B2 | Strap-trench excavation / formation level | 2 | ILLUSTRATIVE_CREW_PLANNING_SEED_NOT_APPROVED | NOT_MEASURED | EARTHWORK | REFERENCE_ONLY_NOT_ACTUAL_SITE_ALLOCATION | STR-04/06, RPT-2083 | PROPOSED_NOT_ADMITTED_TO_APPROVED_WBS | FS | 0 | 132 | 134 | 134 | 132 | 0 | True | HAR-0223, HAR-0230 |  |  |  |
| HAR-0237 | HAR.SUBSTRUCTURE_STRAPS.A2-B2 | SUBSTRUCTURE_STRAPS | A2-B2 | Strap beam bedding and base shuttering | 1 | ILLUSTRATIVE_CREW_PLANNING_SEED_NOT_APPROVED | NOT_MEASURED | FORMWORK | REFERENCE_ONLY_NOT_ACTUAL_SITE_ALLOCATION | STR-04/06, RPT-2083 | PROPOSED_NOT_ADMITTED_TO_APPROVED_WBS | FS | 0 | 134 | 135 | 135 | 134 | 0 | True | HAR-0236, HAR-0231 |  |  |  |
| HAR-0238 | HAR.SUBSTRUCTURE_STRAPS.A2-B2 | SUBSTRUCTURE_STRAPS | A2-B2 | Strap beam longitudinal steel, links, anchorage, supports | 2 | ILLUSTRATIVE_CREW_PLANNING_SEED_NOT_APPROVED | NOT_MEASURED | REBAR | REFERENCE_ONLY_NOT_ACTUAL_SITE_ALLOCATION | STR-04/06, RPT-2083 | PROPOSED_NOT_ADMITTED_TO_APPROVED_WBS | FS | 0 | 135 | 137 | 137 | 135 | 0 | True | HAR-0237, HAR-0232 |  |  |  |
| HAR-0239 | HAR.SUBSTRUCTURE_STRAPS.A2-B2 | SUBSTRUCTURE_STRAPS | A2-B2 | Strap beam rebar/cross-tie inspection hold | 0 | MILESTONE_ZERO_DURATION | NOT_MEASURED | ENGINEER_INSPECTION | REFERENCE_ONLY_NOT_ACTUAL_SITE_ALLOCATION | STR-04/06, RPT-2083 | PROPOSED_NOT_ADMITTED_TO_APPROVED_WBS | FS | 0 | 137 | 137 | 137 | 137 | 0 | True | HAR-0238, HAR-0233 | True |  |  |
| HAR-0240 | HAR.SUBSTRUCTURE_STRAPS.A2-B2 | SUBSTRUCTURE_STRAPS | A2-B2 | M25 strap beam pour and test samples | 1 | ILLUSTRATIVE_CREW_PLANNING_SEED_NOT_APPROVED | NOT_MEASURED | CONCRETE | REFERENCE_ONLY_NOT_ACTUAL_SITE_ALLOCATION | STR-04/06, RPT-2083 | PROPOSED_NOT_ADMITTED_TO_APPROVED_WBS | FS | 0 | 137 | 138 | 138 | 137 | 0 | True | HAR-0239, HAR-0234 |  |  |  |
| HAR-0241 | HAR.SUBSTRUCTURE_STRAPS.A2-B2 | SUBSTRUCTURE_STRAPS | A2-B2 | Strap beam curing and permitted removal review | 2 | ILLUSTRATIVE_CREW_PLANNING_SEED_NOT_APPROVED | NOT_MEASURED | CONCRETE | REFERENCE_ONLY_NOT_ACTUAL_SITE_ALLOCATION | STR-04/06, RPT-2083 | PROPOSED_NOT_ADMITTED_TO_APPROVED_WBS | FS | 0 | 138 | 140 | 140 | 138 | 0 | True | HAR-0240, HAR-0235 |  |  |  |
| HAR-0242 | HAR.SUBSTRUCTURE_STRAPS.B2-F2 | SUBSTRUCTURE_STRAPS | B2-F2 | Strap-trench excavation / formation level | 2 | ILLUSTRATIVE_CREW_PLANNING_SEED_NOT_APPROVED | NOT_MEASURED | EARTHWORK | REFERENCE_ONLY_NOT_ACTUAL_SITE_ALLOCATION | STR-04/06, RPT-2083 | PROPOSED_NOT_ADMITTED_TO_APPROVED_WBS | FS | 0 | 134 | 136 | 136 | 134 | 0 | True | HAR-0223, HAR-0236 |  |  |  |
| HAR-0243 | HAR.SUBSTRUCTURE_STRAPS.B2-F2 | SUBSTRUCTURE_STRAPS | B2-F2 | Strap beam bedding and base shuttering | 1 | ILLUSTRATIVE_CREW_PLANNING_SEED_NOT_APPROVED | NOT_MEASURED | FORMWORK | REFERENCE_ONLY_NOT_ACTUAL_SITE_ALLOCATION | STR-04/06, RPT-2083 | PROPOSED_NOT_ADMITTED_TO_APPROVED_WBS | FS | 0 | 136 | 137 | 137 | 136 | 0 | True | HAR-0242, HAR-0237 |  |  |  |
| HAR-0244 | HAR.SUBSTRUCTURE_STRAPS.B2-F2 | SUBSTRUCTURE_STRAPS | B2-F2 | Strap beam longitudinal steel, links, anchorage, supports | 2 | ILLUSTRATIVE_CREW_PLANNING_SEED_NOT_APPROVED | NOT_MEASURED | REBAR | REFERENCE_ONLY_NOT_ACTUAL_SITE_ALLOCATION | STR-04/06, RPT-2083 | PROPOSED_NOT_ADMITTED_TO_APPROVED_WBS | FS | 0 | 137 | 139 | 139 | 137 | 0 | True | HAR-0243, HAR-0238 |  |  |  |
| HAR-0245 | HAR.SUBSTRUCTURE_STRAPS.B2-F2 | SUBSTRUCTURE_STRAPS | B2-F2 | Strap beam rebar/cross-tie inspection hold | 0 | MILESTONE_ZERO_DURATION | NOT_MEASURED | ENGINEER_INSPECTION | REFERENCE_ONLY_NOT_ACTUAL_SITE_ALLOCATION | STR-04/06, RPT-2083 | PROPOSED_NOT_ADMITTED_TO_APPROVED_WBS | FS | 0 | 139 | 139 | 139 | 139 | 0 | True | HAR-0244, HAR-0239 | True |  |  |
| HAR-0246 | HAR.SUBSTRUCTURE_STRAPS.B2-F2 | SUBSTRUCTURE_STRAPS | B2-F2 | M25 strap beam pour and test samples | 1 | ILLUSTRATIVE_CREW_PLANNING_SEED_NOT_APPROVED | NOT_MEASURED | CONCRETE | REFERENCE_ONLY_NOT_ACTUAL_SITE_ALLOCATION | STR-04/06, RPT-2083 | PROPOSED_NOT_ADMITTED_TO_APPROVED_WBS | FS | 0 | 139 | 140 | 140 | 139 | 0 | True | HAR-0245, HAR-0240 |  |  |  |
| HAR-0247 | HAR.SUBSTRUCTURE_STRAPS.B2-F2 | SUBSTRUCTURE_STRAPS | B2-F2 | Strap beam curing and permitted removal review | 2 | ILLUSTRATIVE_CREW_PLANNING_SEED_NOT_APPROVED | NOT_MEASURED | CONCRETE | REFERENCE_ONLY_NOT_ACTUAL_SITE_ALLOCATION | STR-04/06, RPT-2083 | PROPOSED_NOT_ADMITTED_TO_APPROVED_WBS | FS | 0 | 140 | 142 | 142 | 140 | 0 | True | HAR-0246, HAR-0241 |  |  |  |
| HAR-0248 | HAR.SUBSTRUCTURE_STRAPS.A3-B3 | SUBSTRUCTURE_STRAPS | A3-B3 | Strap-trench excavation / formation level | 2 | ILLUSTRATIVE_CREW_PLANNING_SEED_NOT_APPROVED | NOT_MEASURED | EARTHWORK | REFERENCE_ONLY_NOT_ACTUAL_SITE_ALLOCATION | STR-04/06, RPT-2083 | PROPOSED_NOT_ADMITTED_TO_APPROVED_WBS | FS | 0 | 136 | 138 | 138 | 136 | 0 | True | HAR-0223, HAR-0242 |  |  |  |
| HAR-0249 | HAR.SUBSTRUCTURE_STRAPS.A3-B3 | SUBSTRUCTURE_STRAPS | A3-B3 | Strap beam bedding and base shuttering | 1 | ILLUSTRATIVE_CREW_PLANNING_SEED_NOT_APPROVED | NOT_MEASURED | FORMWORK | REFERENCE_ONLY_NOT_ACTUAL_SITE_ALLOCATION | STR-04/06, RPT-2083 | PROPOSED_NOT_ADMITTED_TO_APPROVED_WBS | FS | 0 | 138 | 139 | 139 | 138 | 0 | True | HAR-0248, HAR-0243 |  |  |  |
| HAR-0250 | HAR.SUBSTRUCTURE_STRAPS.A3-B3 | SUBSTRUCTURE_STRAPS | A3-B3 | Strap beam longitudinal steel, links, anchorage, supports | 2 | ILLUSTRATIVE_CREW_PLANNING_SEED_NOT_APPROVED | NOT_MEASURED | REBAR | REFERENCE_ONLY_NOT_ACTUAL_SITE_ALLOCATION | STR-04/06, RPT-2083 | PROPOSED_NOT_ADMITTED_TO_APPROVED_WBS | FS | 0 | 139 | 141 | 141 | 139 | 0 | True | HAR-0249, HAR-0244 |  |  |  |
| HAR-0251 | HAR.SUBSTRUCTURE_STRAPS.A3-B3 | SUBSTRUCTURE_STRAPS | A3-B3 | Strap beam rebar/cross-tie inspection hold | 0 | MILESTONE_ZERO_DURATION | NOT_MEASURED | ENGINEER_INSPECTION | REFERENCE_ONLY_NOT_ACTUAL_SITE_ALLOCATION | STR-04/06, RPT-2083 | PROPOSED_NOT_ADMITTED_TO_APPROVED_WBS | FS | 0 | 141 | 141 | 141 | 141 | 0 | True | HAR-0250, HAR-0245 | True |  |  |
| HAR-0252 | HAR.SUBSTRUCTURE_STRAPS.A3-B3 | SUBSTRUCTURE_STRAPS | A3-B3 | M25 strap beam pour and test samples | 1 | ILLUSTRATIVE_CREW_PLANNING_SEED_NOT_APPROVED | NOT_MEASURED | CONCRETE | REFERENCE_ONLY_NOT_ACTUAL_SITE_ALLOCATION | STR-04/06, RPT-2083 | PROPOSED_NOT_ADMITTED_TO_APPROVED_WBS | FS | 0 | 141 | 142 | 142 | 141 | 0 | True | HAR-0251, HAR-0246 |  |  |  |
| HAR-0253 | HAR.SUBSTRUCTURE_STRAPS.A3-B3 | SUBSTRUCTURE_STRAPS | A3-B3 | Strap beam curing and permitted removal review | 2 | ILLUSTRATIVE_CREW_PLANNING_SEED_NOT_APPROVED | NOT_MEASURED | CONCRETE | REFERENCE_ONLY_NOT_ACTUAL_SITE_ALLOCATION | STR-04/06, RPT-2083 | PROPOSED_NOT_ADMITTED_TO_APPROVED_WBS | FS | 0 | 142 | 144 | 144 | 142 | 0 | True | HAR-0252, HAR-0247 |  |  |  |
| HAR-0254 | HAR.SUBSTRUCTURE_STRAPS.B3-F3 | SUBSTRUCTURE_STRAPS | B3-F3 | Strap-trench excavation / formation level | 2 | ILLUSTRATIVE_CREW_PLANNING_SEED_NOT_APPROVED | NOT_MEASURED | EARTHWORK | REFERENCE_ONLY_NOT_ACTUAL_SITE_ALLOCATION | STR-04/06, RPT-2083 | PROPOSED_NOT_ADMITTED_TO_APPROVED_WBS | FS | 0 | 138 | 140 | 140 | 138 | 0 | True | HAR-0223, HAR-0248 |  |  |  |
| HAR-0255 | HAR.SUBSTRUCTURE_STRAPS.B3-F3 | SUBSTRUCTURE_STRAPS | B3-F3 | Strap beam bedding and base shuttering | 1 | ILLUSTRATIVE_CREW_PLANNING_SEED_NOT_APPROVED | NOT_MEASURED | FORMWORK | REFERENCE_ONLY_NOT_ACTUAL_SITE_ALLOCATION | STR-04/06, RPT-2083 | PROPOSED_NOT_ADMITTED_TO_APPROVED_WBS | FS | 0 | 140 | 141 | 141 | 140 | 0 | True | HAR-0254, HAR-0249 |  |  |  |
| HAR-0256 | HAR.SUBSTRUCTURE_STRAPS.B3-F3 | SUBSTRUCTURE_STRAPS | B3-F3 | Strap beam longitudinal steel, links, anchorage, supports | 2 | ILLUSTRATIVE_CREW_PLANNING_SEED_NOT_APPROVED | NOT_MEASURED | REBAR | REFERENCE_ONLY_NOT_ACTUAL_SITE_ALLOCATION | STR-04/06, RPT-2083 | PROPOSED_NOT_ADMITTED_TO_APPROVED_WBS | FS | 0 | 141 | 143 | 143 | 141 | 0 | True | HAR-0255, HAR-0250 |  |  |  |
| HAR-0257 | HAR.SUBSTRUCTURE_STRAPS.B3-F3 | SUBSTRUCTURE_STRAPS | B3-F3 | Strap beam rebar/cross-tie inspection hold | 0 | MILESTONE_ZERO_DURATION | NOT_MEASURED | ENGINEER_INSPECTION | REFERENCE_ONLY_NOT_ACTUAL_SITE_ALLOCATION | STR-04/06, RPT-2083 | PROPOSED_NOT_ADMITTED_TO_APPROVED_WBS | FS | 0 | 143 | 143 | 143 | 143 | 0 | True | HAR-0256, HAR-0251 | True |  |  |
| HAR-0258 | HAR.SUBSTRUCTURE_STRAPS.B3-F3 | SUBSTRUCTURE_STRAPS | B3-F3 | M25 strap beam pour and test samples | 1 | ILLUSTRATIVE_CREW_PLANNING_SEED_NOT_APPROVED | NOT_MEASURED | CONCRETE | REFERENCE_ONLY_NOT_ACTUAL_SITE_ALLOCATION | STR-04/06, RPT-2083 | PROPOSED_NOT_ADMITTED_TO_APPROVED_WBS | FS | 0 | 143 | 144 | 144 | 143 | 0 | True | HAR-0257, HAR-0252 |  |  |  |
| HAR-0259 | HAR.SUBSTRUCTURE_STRAPS.B3-F3 | SUBSTRUCTURE_STRAPS | B3-F3 | Strap beam curing and permitted removal review | 2 | ILLUSTRATIVE_CREW_PLANNING_SEED_NOT_APPROVED | NOT_MEASURED | CONCRETE | REFERENCE_ONLY_NOT_ACTUAL_SITE_ALLOCATION | STR-04/06, RPT-2083 | PROPOSED_NOT_ADMITTED_TO_APPROVED_WBS | FS | 0 | 144 | 146 | 146 | 144 | 0 | True | HAR-0258, HAR-0253 |  |  |  |
| HAR-0260 | HAR.SUBSTRUCTURE_STRAPS.A4-B4 | SUBSTRUCTURE_STRAPS | A4-B4 | Strap-trench excavation / formation level | 2 | ILLUSTRATIVE_CREW_PLANNING_SEED_NOT_APPROVED | NOT_MEASURED | EARTHWORK | REFERENCE_ONLY_NOT_ACTUAL_SITE_ALLOCATION | STR-04/06, RPT-2083 | PROPOSED_NOT_ADMITTED_TO_APPROVED_WBS | FS | 0 | 140 | 142 | 142 | 140 | 0 | True | HAR-0223, HAR-0254 |  |  |  |
| HAR-0261 | HAR.SUBSTRUCTURE_STRAPS.A4-B4 | SUBSTRUCTURE_STRAPS | A4-B4 | Strap beam bedding and base shuttering | 1 | ILLUSTRATIVE_CREW_PLANNING_SEED_NOT_APPROVED | NOT_MEASURED | FORMWORK | REFERENCE_ONLY_NOT_ACTUAL_SITE_ALLOCATION | STR-04/06, RPT-2083 | PROPOSED_NOT_ADMITTED_TO_APPROVED_WBS | FS | 0 | 142 | 143 | 143 | 142 | 0 | True | HAR-0260, HAR-0255 |  |  |  |
| HAR-0262 | HAR.SUBSTRUCTURE_STRAPS.A4-B4 | SUBSTRUCTURE_STRAPS | A4-B4 | Strap beam longitudinal steel, links, anchorage, supports | 2 | ILLUSTRATIVE_CREW_PLANNING_SEED_NOT_APPROVED | NOT_MEASURED | REBAR | REFERENCE_ONLY_NOT_ACTUAL_SITE_ALLOCATION | STR-04/06, RPT-2083 | PROPOSED_NOT_ADMITTED_TO_APPROVED_WBS | FS | 0 | 143 | 145 | 145 | 143 | 0 | True | HAR-0261, HAR-0256 |  |  |  |
| HAR-0263 | HAR.SUBSTRUCTURE_STRAPS.A4-B4 | SUBSTRUCTURE_STRAPS | A4-B4 | Strap beam rebar/cross-tie inspection hold | 0 | MILESTONE_ZERO_DURATION | NOT_MEASURED | ENGINEER_INSPECTION | REFERENCE_ONLY_NOT_ACTUAL_SITE_ALLOCATION | STR-04/06, RPT-2083 | PROPOSED_NOT_ADMITTED_TO_APPROVED_WBS | FS | 0 | 145 | 145 | 145 | 145 | 0 | True | HAR-0262, HAR-0257 | True |  |  |
| HAR-0264 | HAR.SUBSTRUCTURE_STRAPS.A4-B4 | SUBSTRUCTURE_STRAPS | A4-B4 | M25 strap beam pour and test samples | 1 | ILLUSTRATIVE_CREW_PLANNING_SEED_NOT_APPROVED | NOT_MEASURED | CONCRETE | REFERENCE_ONLY_NOT_ACTUAL_SITE_ALLOCATION | STR-04/06, RPT-2083 | PROPOSED_NOT_ADMITTED_TO_APPROVED_WBS | FS | 0 | 145 | 146 | 146 | 145 | 0 | True | HAR-0263, HAR-0258 |  |  |  |
| HAR-0265 | HAR.SUBSTRUCTURE_STRAPS.A4-B4 | SUBSTRUCTURE_STRAPS | A4-B4 | Strap beam curing and permitted removal review | 2 | ILLUSTRATIVE_CREW_PLANNING_SEED_NOT_APPROVED | NOT_MEASURED | CONCRETE | REFERENCE_ONLY_NOT_ACTUAL_SITE_ALLOCATION | STR-04/06, RPT-2083 | PROPOSED_NOT_ADMITTED_TO_APPROVED_WBS | FS | 0 | 146 | 148 | 148 | 146 | 0 | True | HAR-0264, HAR-0259 |  |  |  |
| HAR-0266 | HAR.SUBSTRUCTURE_STRAPS.B4-E4 | SUBSTRUCTURE_STRAPS | B4-E4 | Strap-trench excavation / formation level | 2 | ILLUSTRATIVE_CREW_PLANNING_SEED_NOT_APPROVED | NOT_MEASURED | EARTHWORK | REFERENCE_ONLY_NOT_ACTUAL_SITE_ALLOCATION | STR-04/06, RPT-2083 | PROPOSED_NOT_ADMITTED_TO_APPROVED_WBS | FS | 0 | 142 | 144 | 144 | 142 | 0 | True | HAR-0223, HAR-0260 |  |  |  |
| HAR-0267 | HAR.SUBSTRUCTURE_STRAPS.B4-E4 | SUBSTRUCTURE_STRAPS | B4-E4 | Strap beam bedding and base shuttering | 1 | ILLUSTRATIVE_CREW_PLANNING_SEED_NOT_APPROVED | NOT_MEASURED | FORMWORK | REFERENCE_ONLY_NOT_ACTUAL_SITE_ALLOCATION | STR-04/06, RPT-2083 | PROPOSED_NOT_ADMITTED_TO_APPROVED_WBS | FS | 0 | 144 | 145 | 145 | 144 | 0 | True | HAR-0266, HAR-0261 |  |  |  |
| HAR-0268 | HAR.SUBSTRUCTURE_STRAPS.B4-E4 | SUBSTRUCTURE_STRAPS | B4-E4 | Strap beam longitudinal steel, links, anchorage, supports | 2 | ILLUSTRATIVE_CREW_PLANNING_SEED_NOT_APPROVED | NOT_MEASURED | REBAR | REFERENCE_ONLY_NOT_ACTUAL_SITE_ALLOCATION | STR-04/06, RPT-2083 | PROPOSED_NOT_ADMITTED_TO_APPROVED_WBS | FS | 0 | 145 | 147 | 147 | 145 | 0 | True | HAR-0267, HAR-0262 |  |  |  |
| HAR-0269 | HAR.SUBSTRUCTURE_STRAPS.B4-E4 | SUBSTRUCTURE_STRAPS | B4-E4 | Strap beam rebar/cross-tie inspection hold | 0 | MILESTONE_ZERO_DURATION | NOT_MEASURED | ENGINEER_INSPECTION | REFERENCE_ONLY_NOT_ACTUAL_SITE_ALLOCATION | STR-04/06, RPT-2083 | PROPOSED_NOT_ADMITTED_TO_APPROVED_WBS | FS | 0 | 147 | 147 | 147 | 147 | 0 | True | HAR-0268, HAR-0263 | True |  |  |
| HAR-0270 | HAR.SUBSTRUCTURE_STRAPS.B4-E4 | SUBSTRUCTURE_STRAPS | B4-E4 | M25 strap beam pour and test samples | 1 | ILLUSTRATIVE_CREW_PLANNING_SEED_NOT_APPROVED | NOT_MEASURED | CONCRETE | REFERENCE_ONLY_NOT_ACTUAL_SITE_ALLOCATION | STR-04/06, RPT-2083 | PROPOSED_NOT_ADMITTED_TO_APPROVED_WBS | FS | 0 | 147 | 148 | 148 | 147 | 0 | True | HAR-0269, HAR-0264 |  |  |  |
| HAR-0271 | HAR.SUBSTRUCTURE_STRAPS.B4-E4 | SUBSTRUCTURE_STRAPS | B4-E4 | Strap beam curing and permitted removal review | 2 | ILLUSTRATIVE_CREW_PLANNING_SEED_NOT_APPROVED | NOT_MEASURED | CONCRETE | REFERENCE_ONLY_NOT_ACTUAL_SITE_ALLOCATION | STR-04/06, RPT-2083 | PROPOSED_NOT_ADMITTED_TO_APPROVED_WBS | FS | 0 | 148 | 150 | 150 | 148 | 0 | True | HAR-0270, HAR-0265 |  |  |  |
| HAR-0272 | HAR.SUBSTRUCTURE_STRAPS.A5-B5 | SUBSTRUCTURE_STRAPS | A5-B5 | Strap-trench excavation / formation level | 2 | ILLUSTRATIVE_CREW_PLANNING_SEED_NOT_APPROVED | NOT_MEASURED | EARTHWORK | REFERENCE_ONLY_NOT_ACTUAL_SITE_ALLOCATION | STR-04/06, RPT-2083 | PROPOSED_NOT_ADMITTED_TO_APPROVED_WBS | FS | 0 | 144 | 146 | 146 | 144 | 0 | True | HAR-0223, HAR-0266 |  |  |  |
| HAR-0273 | HAR.SUBSTRUCTURE_STRAPS.A5-B5 | SUBSTRUCTURE_STRAPS | A5-B5 | Strap beam bedding and base shuttering | 1 | ILLUSTRATIVE_CREW_PLANNING_SEED_NOT_APPROVED | NOT_MEASURED | FORMWORK | REFERENCE_ONLY_NOT_ACTUAL_SITE_ALLOCATION | STR-04/06, RPT-2083 | PROPOSED_NOT_ADMITTED_TO_APPROVED_WBS | FS | 0 | 146 | 147 | 147 | 146 | 0 | True | HAR-0272, HAR-0267 |  |  |  |
| HAR-0274 | HAR.SUBSTRUCTURE_STRAPS.A5-B5 | SUBSTRUCTURE_STRAPS | A5-B5 | Strap beam longitudinal steel, links, anchorage, supports | 2 | ILLUSTRATIVE_CREW_PLANNING_SEED_NOT_APPROVED | NOT_MEASURED | REBAR | REFERENCE_ONLY_NOT_ACTUAL_SITE_ALLOCATION | STR-04/06, RPT-2083 | PROPOSED_NOT_ADMITTED_TO_APPROVED_WBS | FS | 0 | 147 | 149 | 149 | 147 | 0 | True | HAR-0273, HAR-0268 |  |  |  |
| HAR-0275 | HAR.SUBSTRUCTURE_STRAPS.A5-B5 | SUBSTRUCTURE_STRAPS | A5-B5 | Strap beam rebar/cross-tie inspection hold | 0 | MILESTONE_ZERO_DURATION | NOT_MEASURED | ENGINEER_INSPECTION | REFERENCE_ONLY_NOT_ACTUAL_SITE_ALLOCATION | STR-04/06, RPT-2083 | PROPOSED_NOT_ADMITTED_TO_APPROVED_WBS | FS | 0 | 149 | 149 | 149 | 149 | 0 | True | HAR-0274, HAR-0269 | True |  |  |
| HAR-0276 | HAR.SUBSTRUCTURE_STRAPS.A5-B5 | SUBSTRUCTURE_STRAPS | A5-B5 | M25 strap beam pour and test samples | 1 | ILLUSTRATIVE_CREW_PLANNING_SEED_NOT_APPROVED | NOT_MEASURED | CONCRETE | REFERENCE_ONLY_NOT_ACTUAL_SITE_ALLOCATION | STR-04/06, RPT-2083 | PROPOSED_NOT_ADMITTED_TO_APPROVED_WBS | FS | 0 | 149 | 150 | 150 | 149 | 0 | True | HAR-0275, HAR-0270 |  |  |  |
| HAR-0277 | HAR.SUBSTRUCTURE_STRAPS.A5-B5 | SUBSTRUCTURE_STRAPS | A5-B5 | Strap beam curing and permitted removal review | 2 | ILLUSTRATIVE_CREW_PLANNING_SEED_NOT_APPROVED | NOT_MEASURED | CONCRETE | REFERENCE_ONLY_NOT_ACTUAL_SITE_ALLOCATION | STR-04/06, RPT-2083 | PROPOSED_NOT_ADMITTED_TO_APPROVED_WBS | FS | 0 | 150 | 152 | 152 | 150 | 0 | True | HAR-0276, HAR-0271 |  |  |  |
| HAR-0278 | HAR.SUBSTRUCTURE_STRAPS.B5-D5 | SUBSTRUCTURE_STRAPS | B5-D5 | Strap-trench excavation / formation level | 2 | ILLUSTRATIVE_CREW_PLANNING_SEED_NOT_APPROVED | NOT_MEASURED | EARTHWORK | REFERENCE_ONLY_NOT_ACTUAL_SITE_ALLOCATION | STR-04/06, RPT-2083 | PROPOSED_NOT_ADMITTED_TO_APPROVED_WBS | FS | 0 | 146 | 148 | 148 | 146 | 0 | True | HAR-0223, HAR-0272 |  |  |  |
| HAR-0279 | HAR.SUBSTRUCTURE_STRAPS.B5-D5 | SUBSTRUCTURE_STRAPS | B5-D5 | Strap beam bedding and base shuttering | 1 | ILLUSTRATIVE_CREW_PLANNING_SEED_NOT_APPROVED | NOT_MEASURED | FORMWORK | REFERENCE_ONLY_NOT_ACTUAL_SITE_ALLOCATION | STR-04/06, RPT-2083 | PROPOSED_NOT_ADMITTED_TO_APPROVED_WBS | FS | 0 | 148 | 149 | 149 | 148 | 0 | True | HAR-0278, HAR-0273 |  |  |  |
| HAR-0280 | HAR.SUBSTRUCTURE_STRAPS.B5-D5 | SUBSTRUCTURE_STRAPS | B5-D5 | Strap beam longitudinal steel, links, anchorage, supports | 2 | ILLUSTRATIVE_CREW_PLANNING_SEED_NOT_APPROVED | NOT_MEASURED | REBAR | REFERENCE_ONLY_NOT_ACTUAL_SITE_ALLOCATION | STR-04/06, RPT-2083 | PROPOSED_NOT_ADMITTED_TO_APPROVED_WBS | FS | 0 | 149 | 151 | 151 | 149 | 0 | True | HAR-0279, HAR-0274 |  |  |  |

| activity_id | wbs | phase | scope | title | duration_workdays | duration_basis | quantity_basis | crew_category | crew_basis | source_refs | status | logic_type | lag_workdays | planned_start_workday | planned_finish_workday | latest_finish_workday | latest_start_workday | total_float_workdays | critical | predecessor_ids | engineering_hold |
| --- | --- | --- | --- | --- | --- | --- | --- | --- | --- | --- | --- | --- | --- | --- | --- | --- | --- | --- | --- | --- | --- |
| HAR-0281 | HAR.SUBSTRUCTURE_STRAPS.B5-D5 | SUBSTRUCTURE_STRAPS | B5-D5 | Strap beam rebar/cross-tie inspection hold | 0 | MILESTONE_ZERO_DURATION | NOT_MEASURED | ENGINEER_INSPECTION | REFERENCE_ONLY_NOT_ACTUAL_SITE_ALLOCATION | STR-04/06, RPT-2083 | PROPOSED_NOT_ADMITTED_TO_APPROVED_WBS | FS | 0 | 151 | 151 | 151 | 151 | 0 | True | HAR-0280, HAR-0275 | True |
| HAR-0282 | HAR.SUBSTRUCTURE_STRAPS.B5-D5 | SUBSTRUCTURE_STRAPS | B5-D5 | M25 strap beam pour and test samples | 1 | ILLUSTRATIVE_CREW_PLANNING_SEED_NOT_APPROVED | NOT_MEASURED | CONCRETE | REFERENCE_ONLY_NOT_ACTUAL_SITE_ALLOCATION | STR-04/06, RPT-2083 | PROPOSED_NOT_ADMITTED_TO_APPROVED_WBS | FS | 0 | 151 | 152 | 152 | 151 | 0 | True | HAR-0281, HAR-0276 |  |
| HAR-0283 | HAR.SUBSTRUCTURE_STRAPS.B5-D5 | SUBSTRUCTURE_STRAPS | B5-D5 | Strap beam curing and permitted removal review | 2 | ILLUSTRATIVE_CREW_PLANNING_SEED_NOT_APPROVED | NOT_MEASURED | CONCRETE | REFERENCE_ONLY_NOT_ACTUAL_SITE_ALLOCATION | STR-04/06, RPT-2083 | PROPOSED_NOT_ADMITTED_TO_APPROVED_WBS | FS | 0 | 152 | 154 | 154 | 152 | 0 | True | HAR-0282, HAR-0277 |  |
| HAR-0284 | HAR.SUBSTRUCTURE_STRAPS.A6-B6 | SUBSTRUCTURE_STRAPS | A6-B6 | Strap-trench excavation / formation level | 2 | ILLUSTRATIVE_CREW_PLANNING_SEED_NOT_APPROVED | NOT_MEASURED | EARTHWORK | REFERENCE_ONLY_NOT_ACTUAL_SITE_ALLOCATION | STR-04/06, RPT-2083 | PROPOSED_NOT_ADMITTED_TO_APPROVED_WBS | FS | 0 | 148 | 150 | 150 | 148 | 0 | True | HAR-0223, HAR-0278 |  |
| HAR-0285 | HAR.SUBSTRUCTURE_STRAPS.A6-B6 | SUBSTRUCTURE_STRAPS | A6-B6 | Strap beam bedding and base shuttering | 1 | ILLUSTRATIVE_CREW_PLANNING_SEED_NOT_APPROVED | NOT_MEASURED | FORMWORK | REFERENCE_ONLY_NOT_ACTUAL_SITE_ALLOCATION | STR-04/06, RPT-2083 | PROPOSED_NOT_ADMITTED_TO_APPROVED_WBS | FS | 0 | 150 | 151 | 151 | 150 | 0 | True | HAR-0284, HAR-0279 |  |
| HAR-0286 | HAR.SUBSTRUCTURE_STRAPS.A6-B6 | SUBSTRUCTURE_STRAPS | A6-B6 | Strap beam longitudinal steel, links, anchorage, supports | 2 | ILLUSTRATIVE_CREW_PLANNING_SEED_NOT_APPROVED | NOT_MEASURED | REBAR | REFERENCE_ONLY_NOT_ACTUAL_SITE_ALLOCATION | STR-04/06, RPT-2083 | PROPOSED_NOT_ADMITTED_TO_APPROVED_WBS | FS | 0 | 151 | 153 | 153 | 151 | 0 | True | HAR-0285, HAR-0280 |  |
| HAR-0287 | HAR.SUBSTRUCTURE_STRAPS.A6-B6 | SUBSTRUCTURE_STRAPS | A6-B6 | Strap beam rebar/cross-tie inspection hold | 0 | MILESTONE_ZERO_DURATION | NOT_MEASURED | ENGINEER_INSPECTION | REFERENCE_ONLY_NOT_ACTUAL_SITE_ALLOCATION | STR-04/06, RPT-2083 | PROPOSED_NOT_ADMITTED_TO_APPROVED_WBS | FS | 0 | 153 | 153 | 153 | 153 | 0 | True | HAR-0286, HAR-0281 | True |
| HAR-0288 | HAR.SUBSTRUCTURE_STRAPS.A6-B6 | SUBSTRUCTURE_STRAPS | A6-B6 | M25 strap beam pour and test samples | 1 | ILLUSTRATIVE_CREW_PLANNING_SEED_NOT_APPROVED | NOT_MEASURED | CONCRETE | REFERENCE_ONLY_NOT_ACTUAL_SITE_ALLOCATION | STR-04/06, RPT-2083 | PROPOSED_NOT_ADMITTED_TO_APPROVED_WBS | FS | 0 | 153 | 154 | 154 | 153 | 0 | True | HAR-0287, HAR-0282 |  |
| HAR-0289 | HAR.SUBSTRUCTURE_STRAPS.A6-B6 | SUBSTRUCTURE_STRAPS | A6-B6 | Strap beam curing and permitted removal review | 2 | ILLUSTRATIVE_CREW_PLANNING_SEED_NOT_APPROVED | NOT_MEASURED | CONCRETE | REFERENCE_ONLY_NOT_ACTUAL_SITE_ALLOCATION | STR-04/06, RPT-2083 | PROPOSED_NOT_ADMITTED_TO_APPROVED_WBS | FS | 0 | 154 | 156 | 156 | 154 | 0 | True | HAR-0288, HAR-0283 |  |
| HAR-0290 | HAR.SUBSTRUCTURE_STRAPS.B6-C6 | SUBSTRUCTURE_STRAPS | B6-C6 | Strap-trench excavation / formation level | 2 | ILLUSTRATIVE_CREW_PLANNING_SEED_NOT_APPROVED | NOT_MEASURED | EARTHWORK | REFERENCE_ONLY_NOT_ACTUAL_SITE_ALLOCATION | STR-04/06, RPT-2083 | PROPOSED_NOT_ADMITTED_TO_APPROVED_WBS | FS | 0 | 150 | 152 | 152 | 150 | 0 | True | HAR-0223, HAR-0284 |  |
| HAR-0291 | HAR.SUBSTRUCTURE_STRAPS.B6-C6 | SUBSTRUCTURE_STRAPS | B6-C6 | Strap beam bedding and base shuttering | 1 | ILLUSTRATIVE_CREW_PLANNING_SEED_NOT_APPROVED | NOT_MEASURED | FORMWORK | REFERENCE_ONLY_NOT_ACTUAL_SITE_ALLOCATION | STR-04/06, RPT-2083 | PROPOSED_NOT_ADMITTED_TO_APPROVED_WBS | FS | 0 | 152 | 153 | 153 | 152 | 0 | True | HAR-0290, HAR-0285 |  |
| HAR-0292 | HAR.SUBSTRUCTURE_STRAPS.B6-C6 | SUBSTRUCTURE_STRAPS | B6-C6 | Strap beam longitudinal steel, links, anchorage, supports | 2 | ILLUSTRATIVE_CREW_PLANNING_SEED_NOT_APPROVED | NOT_MEASURED | REBAR | REFERENCE_ONLY_NOT_ACTUAL_SITE_ALLOCATION | STR-04/06, RPT-2083 | PROPOSED_NOT_ADMITTED_TO_APPROVED_WBS | FS | 0 | 153 | 155 | 155 | 153 | 0 | True | HAR-0291, HAR-0286 |  |
| HAR-0293 | HAR.SUBSTRUCTURE_STRAPS.B6-C6 | SUBSTRUCTURE_STRAPS | B6-C6 | Strap beam rebar/cross-tie inspection hold | 0 | MILESTONE_ZERO_DURATION | NOT_MEASURED | ENGINEER_INSPECTION | REFERENCE_ONLY_NOT_ACTUAL_SITE_ALLOCATION | STR-04/06, RPT-2083 | PROPOSED_NOT_ADMITTED_TO_APPROVED_WBS | FS | 0 | 155 | 155 | 155 | 155 | 0 | True | HAR-0292, HAR-0287 | True |
| HAR-0294 | HAR.SUBSTRUCTURE_STRAPS.B6-C6 | SUBSTRUCTURE_STRAPS | B6-C6 | M25 strap beam pour and test samples | 1 | ILLUSTRATIVE_CREW_PLANNING_SEED_NOT_APPROVED | NOT_MEASURED | CONCRETE | REFERENCE_ONLY_NOT_ACTUAL_SITE_ALLOCATION | STR-04/06, RPT-2083 | PROPOSED_NOT_ADMITTED_TO_APPROVED_WBS | FS | 0 | 155 | 156 | 156 | 155 | 0 | True | HAR-0293, HAR-0288 |  |
| HAR-0295 | HAR.SUBSTRUCTURE_STRAPS.B6-C6 | SUBSTRUCTURE_STRAPS | B6-C6 | Strap beam curing and permitted removal review | 2 | ILLUSTRATIVE_CREW_PLANNING_SEED_NOT_APPROVED | NOT_MEASURED | CONCRETE | REFERENCE_ONLY_NOT_ACTUAL_SITE_ALLOCATION | STR-04/06, RPT-2083 | PROPOSED_NOT_ADMITTED_TO_APPROVED_WBS | FS | 0 | 156 | 158 | 158 | 156 | 0 | True | HAR-0294, HAR-0289 |  |
| HAR-0296 | HAR.MILESTONES.STRAPS | MILESTONES | STRAPS | Strap beams structural inspection/clearance | 0 | MILESTONE_ZERO_DURATION | NOT_MEASURED | GENERAL_CIVIL_REFERENCE | REFERENCE_ONLY_NOT_ACTUAL_SITE_ALLOCATION | ARC-2026, STR-2026, RPT-2083, NEP-DUDBC-2081 | PROPOSED_NOT_ADMITTED_TO_APPROVED_WBS | FS | 0 | 158 | 158 | 158 | 158 | 0 | True | HAR-0229, HAR-0235, HAR-0241, HAR-0247, HAR-0253, HAR-0259, HAR-0265, HAR-0271, HAR-0277, HAR-0283, HAR-0289, HAR-0295 | True |
| HAR-0297 | HAR.SUBSTRUCTURE_COLUMNS.A1 | SUBSTRUCTURE_COLUMNS | A1 | Column starter embedment, bend/lap and dowel BBS check | 2 | ILLUSTRATIVE_CREW_PLANNING_SEED_NOT_APPROVED | NOT_MEASURED | REBAR | REFERENCE_ONLY_NOT_ACTUAL_SITE_ALLOCATION | STR-02/03/06, RPT-2083 | PROPOSED_NOT_ADMITTED_TO_APPROVED_WBS | FS | 0 | 158 | 160 | 160 | 158 | 0 | True | HAR-0296 |  |
| HAR-0298 | HAR.SUBSTRUCTURE_COLUMNS.A1 | SUBSTRUCTURE_COLUMNS | A1 | Substructure column longitudinal reinforcement and Ø10/100 candidate ties | 1 | ILLUSTRATIVE_CREW_PLANNING_SEED_NOT_APPROVED | NOT_MEASURED | REBAR | REFERENCE_ONLY_NOT_ACTUAL_SITE_ALLOCATION | STR-02/03/06, RPT-2083 | PROPOSED_NOT_ADMITTED_TO_APPROVED_WBS | FS | 0 | 160 | 161 | 161 | 160 | 0 | True | HAR-0297 |  |
| HAR-0299 | HAR.SUBSTRUCTURE_COLUMNS.A1 | SUBSTRUCTURE_COLUMNS | A1 | Substructure column cage confining/cover inspection | 0 | MILESTONE_ZERO_DURATION | NOT_MEASURED | ENGINEER_INSPECTION | REFERENCE_ONLY_NOT_ACTUAL_SITE_ALLOCATION | STR-02/03/06, RPT-2083 | PROPOSED_NOT_ADMITTED_TO_APPROVED_WBS | FS | 0 | 161 | 161 | 161 | 161 | 0 | True | HAR-0298 | True |
| HAR-0300 | HAR.SUBSTRUCTURE_COLUMNS.A1 | SUBSTRUCTURE_COLUMNS | A1 | Column formwork / verticality / interface checks | 1 | ILLUSTRATIVE_CREW_PLANNING_SEED_NOT_APPROVED | NOT_MEASURED | FORMWORK | REFERENCE_ONLY_NOT_ACTUAL_SITE_ALLOCATION | STR-02/03/06, RPT-2083 | PROPOSED_NOT_ADMITTED_TO_APPROVED_WBS | FS | 0 | 161 | 162 | 162 | 161 | 0 | True | HAR-0299 |  |
| HAR-0301 | HAR.SUBSTRUCTURE_COLUMNS.A1 | SUBSTRUCTURE_COLUMNS | A1 | M25 substructure column pour and specimens | 1 | ILLUSTRATIVE_CREW_PLANNING_SEED_NOT_APPROVED | NOT_MEASURED | CONCRETE | REFERENCE_ONLY_NOT_ACTUAL_SITE_ALLOCATION | STR-02/03/06, RPT-2083 | PROPOSED_NOT_ADMITTED_TO_APPROVED_WBS | FS | 0 | 162 | 163 | 163 | 162 | 0 | True | HAR-0300 |  |
| HAR-0302 | HAR.SUBSTRUCTURE_COLUMNS.A1 | SUBSTRUCTURE_COLUMNS | A1 | Column curing / strip release | 2 | ILLUSTRATIVE_CREW_PLANNING_SEED_NOT_APPROVED | NOT_MEASURED | CONCRETE | REFERENCE_ONLY_NOT_ACTUAL_SITE_ALLOCATION | STR-02/03/06, RPT-2083 | PROPOSED_NOT_ADMITTED_TO_APPROVED_WBS | FS | 0 | 163 | 165 | 165 | 163 | 0 | True | HAR-0301 |  |
| HAR-0303 | HAR.SUBSTRUCTURE_COLUMNS.B1 | SUBSTRUCTURE_COLUMNS | B1 | Column starter embedment, bend/lap and dowel BBS check | 2 | ILLUSTRATIVE_CREW_PLANNING_SEED_NOT_APPROVED | NOT_MEASURED | REBAR | REFERENCE_ONLY_NOT_ACTUAL_SITE_ALLOCATION | STR-02/03/06, RPT-2083 | PROPOSED_NOT_ADMITTED_TO_APPROVED_WBS | FS | 0 | 160 | 162 | 162 | 160 | 0 | True | HAR-0296, HAR-0297 |  |
| HAR-0304 | HAR.SUBSTRUCTURE_COLUMNS.B1 | SUBSTRUCTURE_COLUMNS | B1 | Substructure column longitudinal reinforcement and Ø10/100 candidate ties | 1 | ILLUSTRATIVE_CREW_PLANNING_SEED_NOT_APPROVED | NOT_MEASURED | REBAR | REFERENCE_ONLY_NOT_ACTUAL_SITE_ALLOCATION | STR-02/03/06, RPT-2083 | PROPOSED_NOT_ADMITTED_TO_APPROVED_WBS | FS | 0 | 162 | 163 | 163 | 162 | 0 | True | HAR-0303, HAR-0298 |  |
| HAR-0305 | HAR.SUBSTRUCTURE_COLUMNS.B1 | SUBSTRUCTURE_COLUMNS | B1 | Substructure column cage confining/cover inspection | 0 | MILESTONE_ZERO_DURATION | NOT_MEASURED | ENGINEER_INSPECTION | REFERENCE_ONLY_NOT_ACTUAL_SITE_ALLOCATION | STR-02/03/06, RPT-2083 | PROPOSED_NOT_ADMITTED_TO_APPROVED_WBS | FS | 0 | 163 | 163 | 163 | 163 | 0 | True | HAR-0304, HAR-0299 | True |
| HAR-0306 | HAR.SUBSTRUCTURE_COLUMNS.B1 | SUBSTRUCTURE_COLUMNS | B1 | Column formwork / verticality / interface checks | 1 | ILLUSTRATIVE_CREW_PLANNING_SEED_NOT_APPROVED | NOT_MEASURED | FORMWORK | REFERENCE_ONLY_NOT_ACTUAL_SITE_ALLOCATION | STR-02/03/06, RPT-2083 | PROPOSED_NOT_ADMITTED_TO_APPROVED_WBS | FS | 0 | 163 | 164 | 164 | 163 | 0 | True | HAR-0305, HAR-0300 |  |
| HAR-0307 | HAR.SUBSTRUCTURE_COLUMNS.B1 | SUBSTRUCTURE_COLUMNS | B1 | M25 substructure column pour and specimens | 1 | ILLUSTRATIVE_CREW_PLANNING_SEED_NOT_APPROVED | NOT_MEASURED | CONCRETE | REFERENCE_ONLY_NOT_ACTUAL_SITE_ALLOCATION | STR-02/03/06, RPT-2083 | PROPOSED_NOT_ADMITTED_TO_APPROVED_WBS | FS | 0 | 164 | 165 | 165 | 164 | 0 | True | HAR-0306, HAR-0301 |  |
| HAR-0308 | HAR.SUBSTRUCTURE_COLUMNS.B1 | SUBSTRUCTURE_COLUMNS | B1 | Column curing / strip release | 2 | ILLUSTRATIVE_CREW_PLANNING_SEED_NOT_APPROVED | NOT_MEASURED | CONCRETE | REFERENCE_ONLY_NOT_ACTUAL_SITE_ALLOCATION | STR-02/03/06, RPT-2083 | PROPOSED_NOT_ADMITTED_TO_APPROVED_WBS | FS | 0 | 165 | 167 | 167 | 165 | 0 | True | HAR-0307, HAR-0302 |  |
| HAR-0309 | HAR.SUBSTRUCTURE_COLUMNS.F1 | SUBSTRUCTURE_COLUMNS | F1 | Column starter embedment, bend/lap and dowel BBS check | 2 | ILLUSTRATIVE_CREW_PLANNING_SEED_NOT_APPROVED | NOT_MEASURED | REBAR | REFERENCE_ONLY_NOT_ACTUAL_SITE_ALLOCATION | STR-02/03/06, RPT-2083 | PROPOSED_NOT_ADMITTED_TO_APPROVED_WBS | FS | 0 | 162 | 164 | 164 | 162 | 0 | True | HAR-0296, HAR-0303 |  |
| HAR-0310 | HAR.SUBSTRUCTURE_COLUMNS.F1 | SUBSTRUCTURE_COLUMNS | F1 | Substructure column longitudinal reinforcement and Ø10/100 candidate ties | 1 | ILLUSTRATIVE_CREW_PLANNING_SEED_NOT_APPROVED | NOT_MEASURED | REBAR | REFERENCE_ONLY_NOT_ACTUAL_SITE_ALLOCATION | STR-02/03/06, RPT-2083 | PROPOSED_NOT_ADMITTED_TO_APPROVED_WBS | FS | 0 | 164 | 165 | 165 | 164 | 0 | True | HAR-0309, HAR-0304 |  |
| HAR-0311 | HAR.SUBSTRUCTURE_COLUMNS.F1 | SUBSTRUCTURE_COLUMNS | F1 | Substructure column cage confining/cover inspection | 0 | MILESTONE_ZERO_DURATION | NOT_MEASURED | ENGINEER_INSPECTION | REFERENCE_ONLY_NOT_ACTUAL_SITE_ALLOCATION | STR-02/03/06, RPT-2083 | PROPOSED_NOT_ADMITTED_TO_APPROVED_WBS | FS | 0 | 165 | 165 | 165 | 165 | 0 | True | HAR-0310, HAR-0305 | True |
| HAR-0312 | HAR.SUBSTRUCTURE_COLUMNS.F1 | SUBSTRUCTURE_COLUMNS | F1 | Column formwork / verticality / interface checks | 1 | ILLUSTRATIVE_CREW_PLANNING_SEED_NOT_APPROVED | NOT_MEASURED | FORMWORK | REFERENCE_ONLY_NOT_ACTUAL_SITE_ALLOCATION | STR-02/03/06, RPT-2083 | PROPOSED_NOT_ADMITTED_TO_APPROVED_WBS | FS | 0 | 165 | 166 | 166 | 165 | 0 | True | HAR-0311, HAR-0306 |  |
| HAR-0313 | HAR.SUBSTRUCTURE_COLUMNS.F1 | SUBSTRUCTURE_COLUMNS | F1 | M25 substructure column pour and specimens | 1 | ILLUSTRATIVE_CREW_PLANNING_SEED_NOT_APPROVED | NOT_MEASURED | CONCRETE | REFERENCE_ONLY_NOT_ACTUAL_SITE_ALLOCATION | STR-02/03/06, RPT-2083 | PROPOSED_NOT_ADMITTED_TO_APPROVED_WBS | FS | 0 | 166 | 167 | 167 | 166 | 0 | True | HAR-0312, HAR-0307 |  |
| HAR-0314 | HAR.SUBSTRUCTURE_COLUMNS.F1 | SUBSTRUCTURE_COLUMNS | F1 | Column curing / strip release | 2 | ILLUSTRATIVE_CREW_PLANNING_SEED_NOT_APPROVED | NOT_MEASURED | CONCRETE | REFERENCE_ONLY_NOT_ACTUAL_SITE_ALLOCATION | STR-02/03/06, RPT-2083 | PROPOSED_NOT_ADMITTED_TO_APPROVED_WBS | FS | 0 | 167 | 169 | 169 | 167 | 0 | True | HAR-0313, HAR-0308 |  |
| HAR-0315 | HAR.SUBSTRUCTURE_COLUMNS.A2 | SUBSTRUCTURE_COLUMNS | A2 | Column starter embedment, bend/lap and dowel BBS check | 2 | ILLUSTRATIVE_CREW_PLANNING_SEED_NOT_APPROVED | NOT_MEASURED | REBAR | REFERENCE_ONLY_NOT_ACTUAL_SITE_ALLOCATION | STR-02/03/06, RPT-2083 | PROPOSED_NOT_ADMITTED_TO_APPROVED_WBS | FS | 0 | 164 | 166 | 166 | 164 | 0 | True | HAR-0296, HAR-0309 |  |
| HAR-0316 | HAR.SUBSTRUCTURE_COLUMNS.A2 | SUBSTRUCTURE_COLUMNS | A2 | Substructure column longitudinal reinforcement and Ø10/100 candidate ties | 1 | ILLUSTRATIVE_CREW_PLANNING_SEED_NOT_APPROVED | NOT_MEASURED | REBAR | REFERENCE_ONLY_NOT_ACTUAL_SITE_ALLOCATION | STR-02/03/06, RPT-2083 | PROPOSED_NOT_ADMITTED_TO_APPROVED_WBS | FS | 0 | 166 | 167 | 167 | 166 | 0 | True | HAR-0315, HAR-0310 |  |
| HAR-0317 | HAR.SUBSTRUCTURE_COLUMNS.A2 | SUBSTRUCTURE_COLUMNS | A2 | Substructure column cage confining/cover inspection | 0 | MILESTONE_ZERO_DURATION | NOT_MEASURED | ENGINEER_INSPECTION | REFERENCE_ONLY_NOT_ACTUAL_SITE_ALLOCATION | STR-02/03/06, RPT-2083 | PROPOSED_NOT_ADMITTED_TO_APPROVED_WBS | FS | 0 | 167 | 167 | 167 | 167 | 0 | True | HAR-0316, HAR-0311 | True |
| HAR-0318 | HAR.SUBSTRUCTURE_COLUMNS.A2 | SUBSTRUCTURE_COLUMNS | A2 | Column formwork / verticality / interface checks | 1 | ILLUSTRATIVE_CREW_PLANNING_SEED_NOT_APPROVED | NOT_MEASURED | FORMWORK | REFERENCE_ONLY_NOT_ACTUAL_SITE_ALLOCATION | STR-02/03/06, RPT-2083 | PROPOSED_NOT_ADMITTED_TO_APPROVED_WBS | FS | 0 | 167 | 168 | 168 | 167 | 0 | True | HAR-0317, HAR-0312 |  |
| HAR-0319 | HAR.SUBSTRUCTURE_COLUMNS.A2 | SUBSTRUCTURE_COLUMNS | A2 | M25 substructure column pour and specimens | 1 | ILLUSTRATIVE_CREW_PLANNING_SEED_NOT_APPROVED | NOT_MEASURED | CONCRETE | REFERENCE_ONLY_NOT_ACTUAL_SITE_ALLOCATION | STR-02/03/06, RPT-2083 | PROPOSED_NOT_ADMITTED_TO_APPROVED_WBS | FS | 0 | 168 | 169 | 169 | 168 | 0 | True | HAR-0318, HAR-0313 |  |
| HAR-0320 | HAR.SUBSTRUCTURE_COLUMNS.A2 | SUBSTRUCTURE_COLUMNS | A2 | Column curing / strip release | 2 | ILLUSTRATIVE_CREW_PLANNING_SEED_NOT_APPROVED | NOT_MEASURED | CONCRETE | REFERENCE_ONLY_NOT_ACTUAL_SITE_ALLOCATION | STR-02/03/06, RPT-2083 | PROPOSED_NOT_ADMITTED_TO_APPROVED_WBS | FS | 0 | 169 | 171 | 171 | 169 | 0 | True | HAR-0319, HAR-0314 |  |
| HAR-0321 | HAR.SUBSTRUCTURE_COLUMNS.B2 | SUBSTRUCTURE_COLUMNS | B2 | Column starter embedment, bend/lap and dowel BBS check | 2 | ILLUSTRATIVE_CREW_PLANNING_SEED_NOT_APPROVED | NOT_MEASURED | REBAR | REFERENCE_ONLY_NOT_ACTUAL_SITE_ALLOCATION | STR-02/03/06, RPT-2083 | PROPOSED_NOT_ADMITTED_TO_APPROVED_WBS | FS | 0 | 166 | 168 | 168 | 166 | 0 | True | HAR-0296, HAR-0315 |  |
| HAR-0322 | HAR.SUBSTRUCTURE_COLUMNS.B2 | SUBSTRUCTURE_COLUMNS | B2 | Substructure column longitudinal reinforcement and Ø10/100 candidate ties | 1 | ILLUSTRATIVE_CREW_PLANNING_SEED_NOT_APPROVED | NOT_MEASURED | REBAR | REFERENCE_ONLY_NOT_ACTUAL_SITE_ALLOCATION | STR-02/03/06, RPT-2083 | PROPOSED_NOT_ADMITTED_TO_APPROVED_WBS | FS | 0 | 168 | 169 | 169 | 168 | 0 | True | HAR-0321, HAR-0316 |  |
| HAR-0323 | HAR.SUBSTRUCTURE_COLUMNS.B2 | SUBSTRUCTURE_COLUMNS | B2 | Substructure column cage confining/cover inspection | 0 | MILESTONE_ZERO_DURATION | NOT_MEASURED | ENGINEER_INSPECTION | REFERENCE_ONLY_NOT_ACTUAL_SITE_ALLOCATION | STR-02/03/06, RPT-2083 | PROPOSED_NOT_ADMITTED_TO_APPROVED_WBS | FS | 0 | 169 | 169 | 169 | 169 | 0 | True | HAR-0322, HAR-0317 | True |
| HAR-0324 | HAR.SUBSTRUCTURE_COLUMNS.B2 | SUBSTRUCTURE_COLUMNS | B2 | Column formwork / verticality / interface checks | 1 | ILLUSTRATIVE_CREW_PLANNING_SEED_NOT_APPROVED | NOT_MEASURED | FORMWORK | REFERENCE_ONLY_NOT_ACTUAL_SITE_ALLOCATION | STR-02/03/06, RPT-2083 | PROPOSED_NOT_ADMITTED_TO_APPROVED_WBS | FS | 0 | 169 | 170 | 170 | 169 | 0 | True | HAR-0323, HAR-0318 |  |
| HAR-0325 | HAR.SUBSTRUCTURE_COLUMNS.B2 | SUBSTRUCTURE_COLUMNS | B2 | M25 substructure column pour and specimens | 1 | ILLUSTRATIVE_CREW_PLANNING_SEED_NOT_APPROVED | NOT_MEASURED | CONCRETE | REFERENCE_ONLY_NOT_ACTUAL_SITE_ALLOCATION | STR-02/03/06, RPT-2083 | PROPOSED_NOT_ADMITTED_TO_APPROVED_WBS | FS | 0 | 170 | 171 | 171 | 170 | 0 | True | HAR-0324, HAR-0319 |  |
| HAR-0326 | HAR.SUBSTRUCTURE_COLUMNS.B2 | SUBSTRUCTURE_COLUMNS | B2 | Column curing / strip release | 2 | ILLUSTRATIVE_CREW_PLANNING_SEED_NOT_APPROVED | NOT_MEASURED | CONCRETE | REFERENCE_ONLY_NOT_ACTUAL_SITE_ALLOCATION | STR-02/03/06, RPT-2083 | PROPOSED_NOT_ADMITTED_TO_APPROVED_WBS | FS | 0 | 171 | 173 | 173 | 171 | 0 | True | HAR-0325, HAR-0320 |  |
| HAR-0327 | HAR.SUBSTRUCTURE_COLUMNS.F2 | SUBSTRUCTURE_COLUMNS | F2 | Column starter embedment, bend/lap and dowel BBS check | 2 | ILLUSTRATIVE_CREW_PLANNING_SEED_NOT_APPROVED | NOT_MEASURED | REBAR | REFERENCE_ONLY_NOT_ACTUAL_SITE_ALLOCATION | STR-02/03/06, RPT-2083 | PROPOSED_NOT_ADMITTED_TO_APPROVED_WBS | FS | 0 | 168 | 170 | 170 | 168 | 0 | True | HAR-0296, HAR-0321 |  |
| HAR-0328 | HAR.SUBSTRUCTURE_COLUMNS.F2 | SUBSTRUCTURE_COLUMNS | F2 | Substructure column longitudinal reinforcement and Ø10/100 candidate ties | 1 | ILLUSTRATIVE_CREW_PLANNING_SEED_NOT_APPROVED | NOT_MEASURED | REBAR | REFERENCE_ONLY_NOT_ACTUAL_SITE_ALLOCATION | STR-02/03/06, RPT-2083 | PROPOSED_NOT_ADMITTED_TO_APPROVED_WBS | FS | 0 | 170 | 171 | 171 | 170 | 0 | True | HAR-0327, HAR-0322 |  |
| HAR-0329 | HAR.SUBSTRUCTURE_COLUMNS.F2 | SUBSTRUCTURE_COLUMNS | F2 | Substructure column cage confining/cover inspection | 0 | MILESTONE_ZERO_DURATION | NOT_MEASURED | ENGINEER_INSPECTION | REFERENCE_ONLY_NOT_ACTUAL_SITE_ALLOCATION | STR-02/03/06, RPT-2083 | PROPOSED_NOT_ADMITTED_TO_APPROVED_WBS | FS | 0 | 171 | 171 | 171 | 171 | 0 | True | HAR-0328, HAR-0323 | True |
| HAR-0330 | HAR.SUBSTRUCTURE_COLUMNS.F2 | SUBSTRUCTURE_COLUMNS | F2 | Column formwork / verticality / interface checks | 1 | ILLUSTRATIVE_CREW_PLANNING_SEED_NOT_APPROVED | NOT_MEASURED | FORMWORK | REFERENCE_ONLY_NOT_ACTUAL_SITE_ALLOCATION | STR-02/03/06, RPT-2083 | PROPOSED_NOT_ADMITTED_TO_APPROVED_WBS | FS | 0 | 171 | 172 | 172 | 171 | 0 | True | HAR-0329, HAR-0324 |  |
| HAR-0331 | HAR.SUBSTRUCTURE_COLUMNS.F2 | SUBSTRUCTURE_COLUMNS | F2 | M25 substructure column pour and specimens | 1 | ILLUSTRATIVE_CREW_PLANNING_SEED_NOT_APPROVED | NOT_MEASURED | CONCRETE | REFERENCE_ONLY_NOT_ACTUAL_SITE_ALLOCATION | STR-02/03/06, RPT-2083 | PROPOSED_NOT_ADMITTED_TO_APPROVED_WBS | FS | 0 | 172 | 173 | 173 | 172 | 0 | True | HAR-0330, HAR-0325 |  |
| HAR-0332 | HAR.SUBSTRUCTURE_COLUMNS.F2 | SUBSTRUCTURE_COLUMNS | F2 | Column curing / strip release | 2 | ILLUSTRATIVE_CREW_PLANNING_SEED_NOT_APPROVED | NOT_MEASURED | CONCRETE | REFERENCE_ONLY_NOT_ACTUAL_SITE_ALLOCATION | STR-02/03/06, RPT-2083 | PROPOSED_NOT_ADMITTED_TO_APPROVED_WBS | FS | 0 | 173 | 175 | 175 | 173 | 0 | True | HAR-0331, HAR-0326 |  |
| HAR-0333 | HAR.SUBSTRUCTURE_COLUMNS.A3 | SUBSTRUCTURE_COLUMNS | A3 | Column starter embedment, bend/lap and dowel BBS check | 2 | ILLUSTRATIVE_CREW_PLANNING_SEED_NOT_APPROVED | NOT_MEASURED | REBAR | REFERENCE_ONLY_NOT_ACTUAL_SITE_ALLOCATION | STR-02/03/06, RPT-2083 | PROPOSED_NOT_ADMITTED_TO_APPROVED_WBS | FS | 0 | 170 | 172 | 172 | 170 | 0 | True | HAR-0296, HAR-0327 |  |
| HAR-0334 | HAR.SUBSTRUCTURE_COLUMNS.A3 | SUBSTRUCTURE_COLUMNS | A3 | Substructure column longitudinal reinforcement and Ø10/100 candidate ties | 1 | ILLUSTRATIVE_CREW_PLANNING_SEED_NOT_APPROVED | NOT_MEASURED | REBAR | REFERENCE_ONLY_NOT_ACTUAL_SITE_ALLOCATION | STR-02/03/06, RPT-2083 | PROPOSED_NOT_ADMITTED_TO_APPROVED_WBS | FS | 0 | 172 | 173 | 173 | 172 | 0 | True | HAR-0333, HAR-0328 |  |
| HAR-0335 | HAR.SUBSTRUCTURE_COLUMNS.A3 | SUBSTRUCTURE_COLUMNS | A3 | Substructure column cage confining/cover inspection | 0 | MILESTONE_ZERO_DURATION | NOT_MEASURED | ENGINEER_INSPECTION | REFERENCE_ONLY_NOT_ACTUAL_SITE_ALLOCATION | STR-02/03/06, RPT-2083 | PROPOSED_NOT_ADMITTED_TO_APPROVED_WBS | FS | 0 | 173 | 173 | 173 | 173 | 0 | True | HAR-0334, HAR-0329 | True |
| HAR-0336 | HAR.SUBSTRUCTURE_COLUMNS.A3 | SUBSTRUCTURE_COLUMNS | A3 | Column formwork / verticality / interface checks | 1 | ILLUSTRATIVE_CREW_PLANNING_SEED_NOT_APPROVED | NOT_MEASURED | FORMWORK | REFERENCE_ONLY_NOT_ACTUAL_SITE_ALLOCATION | STR-02/03/06, RPT-2083 | PROPOSED_NOT_ADMITTED_TO_APPROVED_WBS | FS | 0 | 173 | 174 | 174 | 173 | 0 | True | HAR-0335, HAR-0330 |  |
| HAR-0337 | HAR.SUBSTRUCTURE_COLUMNS.A3 | SUBSTRUCTURE_COLUMNS | A3 | M25 substructure column pour and specimens | 1 | ILLUSTRATIVE_CREW_PLANNING_SEED_NOT_APPROVED | NOT_MEASURED | CONCRETE | REFERENCE_ONLY_NOT_ACTUAL_SITE_ALLOCATION | STR-02/03/06, RPT-2083 | PROPOSED_NOT_ADMITTED_TO_APPROVED_WBS | FS | 0 | 174 | 175 | 175 | 174 | 0 | True | HAR-0336, HAR-0331 |  |
| HAR-0338 | HAR.SUBSTRUCTURE_COLUMNS.A3 | SUBSTRUCTURE_COLUMNS | A3 | Column curing / strip release | 2 | ILLUSTRATIVE_CREW_PLANNING_SEED_NOT_APPROVED | NOT_MEASURED | CONCRETE | REFERENCE_ONLY_NOT_ACTUAL_SITE_ALLOCATION | STR-02/03/06, RPT-2083 | PROPOSED_NOT_ADMITTED_TO_APPROVED_WBS | FS | 0 | 175 | 177 | 177 | 175 | 0 | True | HAR-0337, HAR-0332 |  |
| HAR-0339 | HAR.SUBSTRUCTURE_COLUMNS.B3 | SUBSTRUCTURE_COLUMNS | B3 | Column starter embedment, bend/lap and dowel BBS check | 2 | ILLUSTRATIVE_CREW_PLANNING_SEED_NOT_APPROVED | NOT_MEASURED | REBAR | REFERENCE_ONLY_NOT_ACTUAL_SITE_ALLOCATION | STR-02/03/06, RPT-2083 | PROPOSED_NOT_ADMITTED_TO_APPROVED_WBS | FS | 0 | 172 | 174 | 174 | 172 | 0 | True | HAR-0296, HAR-0333 |  |
| HAR-0340 | HAR.SUBSTRUCTURE_COLUMNS.B3 | SUBSTRUCTURE_COLUMNS | B3 | Substructure column longitudinal reinforcement and Ø10/100 candidate ties | 1 | ILLUSTRATIVE_CREW_PLANNING_SEED_NOT_APPROVED | NOT_MEASURED | REBAR | REFERENCE_ONLY_NOT_ACTUAL_SITE_ALLOCATION | STR-02/03/06, RPT-2083 | PROPOSED_NOT_ADMITTED_TO_APPROVED_WBS | FS | 0 | 174 | 175 | 175 | 174 | 0 | True | HAR-0339, HAR-0334 |  |
| HAR-0341 | HAR.SUBSTRUCTURE_COLUMNS.B3 | SUBSTRUCTURE_COLUMNS | B3 | Substructure column cage confining/cover inspection | 0 | MILESTONE_ZERO_DURATION | NOT_MEASURED | ENGINEER_INSPECTION | REFERENCE_ONLY_NOT_ACTUAL_SITE_ALLOCATION | STR-02/03/06, RPT-2083 | PROPOSED_NOT_ADMITTED_TO_APPROVED_WBS | FS | 0 | 175 | 175 | 175 | 175 | 0 | True | HAR-0340, HAR-0335 | True |
| HAR-0342 | HAR.SUBSTRUCTURE_COLUMNS.B3 | SUBSTRUCTURE_COLUMNS | B3 | Column formwork / verticality / interface checks | 1 | ILLUSTRATIVE_CREW_PLANNING_SEED_NOT_APPROVED | NOT_MEASURED | FORMWORK | REFERENCE_ONLY_NOT_ACTUAL_SITE_ALLOCATION | STR-02/03/06, RPT-2083 | PROPOSED_NOT_ADMITTED_TO_APPROVED_WBS | FS | 0 | 175 | 176 | 176 | 175 | 0 | True | HAR-0341, HAR-0336 |  |
| HAR-0343 | HAR.SUBSTRUCTURE_COLUMNS.B3 | SUBSTRUCTURE_COLUMNS | B3 | M25 substructure column pour and specimens | 1 | ILLUSTRATIVE_CREW_PLANNING_SEED_NOT_APPROVED | NOT_MEASURED | CONCRETE | REFERENCE_ONLY_NOT_ACTUAL_SITE_ALLOCATION | STR-02/03/06, RPT-2083 | PROPOSED_NOT_ADMITTED_TO_APPROVED_WBS | FS | 0 | 176 | 177 | 177 | 176 | 0 | True | HAR-0342, HAR-0337 |  |
| HAR-0344 | HAR.SUBSTRUCTURE_COLUMNS.B3 | SUBSTRUCTURE_COLUMNS | B3 | Column curing / strip release | 2 | ILLUSTRATIVE_CREW_PLANNING_SEED_NOT_APPROVED | NOT_MEASURED | CONCRETE | REFERENCE_ONLY_NOT_ACTUAL_SITE_ALLOCATION | STR-02/03/06, RPT-2083 | PROPOSED_NOT_ADMITTED_TO_APPROVED_WBS | FS | 0 | 177 | 179 | 179 | 177 | 0 | True | HAR-0343, HAR-0338 |  |
| HAR-0345 | HAR.SUBSTRUCTURE_COLUMNS.F3 | SUBSTRUCTURE_COLUMNS | F3 | Column starter embedment, bend/lap and dowel BBS check | 2 | ILLUSTRATIVE_CREW_PLANNING_SEED_NOT_APPROVED | NOT_MEASURED | REBAR | REFERENCE_ONLY_NOT_ACTUAL_SITE_ALLOCATION | STR-02/03/06, RPT-2083 | PROPOSED_NOT_ADMITTED_TO_APPROVED_WBS | FS | 0 | 174 | 176 | 176 | 174 | 0 | True | HAR-0296, HAR-0339 |  |
| HAR-0346 | HAR.SUBSTRUCTURE_COLUMNS.F3 | SUBSTRUCTURE_COLUMNS | F3 | Substructure column longitudinal reinforcement and Ø10/100 candidate ties | 1 | ILLUSTRATIVE_CREW_PLANNING_SEED_NOT_APPROVED | NOT_MEASURED | REBAR | REFERENCE_ONLY_NOT_ACTUAL_SITE_ALLOCATION | STR-02/03/06, RPT-2083 | PROPOSED_NOT_ADMITTED_TO_APPROVED_WBS | FS | 0 | 176 | 177 | 177 | 176 | 0 | True | HAR-0345, HAR-0340 |  |
| HAR-0347 | HAR.SUBSTRUCTURE_COLUMNS.F3 | SUBSTRUCTURE_COLUMNS | F3 | Substructure column cage confining/cover inspection | 0 | MILESTONE_ZERO_DURATION | NOT_MEASURED | ENGINEER_INSPECTION | REFERENCE_ONLY_NOT_ACTUAL_SITE_ALLOCATION | STR-02/03/06, RPT-2083 | PROPOSED_NOT_ADMITTED_TO_APPROVED_WBS | FS | 0 | 177 | 177 | 177 | 177 | 0 | True | HAR-0346, HAR-0341 | True |
| HAR-0348 | HAR.SUBSTRUCTURE_COLUMNS.F3 | SUBSTRUCTURE_COLUMNS | F3 | Column formwork / verticality / interface checks | 1 | ILLUSTRATIVE_CREW_PLANNING_SEED_NOT_APPROVED | NOT_MEASURED | FORMWORK | REFERENCE_ONLY_NOT_ACTUAL_SITE_ALLOCATION | STR-02/03/06, RPT-2083 | PROPOSED_NOT_ADMITTED_TO_APPROVED_WBS | FS | 0 | 177 | 178 | 178 | 177 | 0 | True | HAR-0347, HAR-0342 |  |
| HAR-0349 | HAR.SUBSTRUCTURE_COLUMNS.F3 | SUBSTRUCTURE_COLUMNS | F3 | M25 substructure column pour and specimens | 1 | ILLUSTRATIVE_CREW_PLANNING_SEED_NOT_APPROVED | NOT_MEASURED | CONCRETE | REFERENCE_ONLY_NOT_ACTUAL_SITE_ALLOCATION | STR-02/03/06, RPT-2083 | PROPOSED_NOT_ADMITTED_TO_APPROVED_WBS | FS | 0 | 178 | 179 | 179 | 178 | 0 | True | HAR-0348, HAR-0343 |  |
| HAR-0350 | HAR.SUBSTRUCTURE_COLUMNS.F3 | SUBSTRUCTURE_COLUMNS | F3 | Column curing / strip release | 2 | ILLUSTRATIVE_CREW_PLANNING_SEED_NOT_APPROVED | NOT_MEASURED | CONCRETE | REFERENCE_ONLY_NOT_ACTUAL_SITE_ALLOCATION | STR-02/03/06, RPT-2083 | PROPOSED_NOT_ADMITTED_TO_APPROVED_WBS | FS | 0 | 179 | 181 | 181 | 179 | 0 | True | HAR-0349, HAR-0344 |  |

| activity_id | wbs | phase | scope | title | duration_workdays | duration_basis | quantity_basis | crew_category | crew_basis | source_refs | status | logic_type | lag_workdays | planned_start_workday | planned_finish_workday | latest_finish_workday | latest_start_workday | total_float_workdays | critical | predecessor_ids | engineering_hold |
| --- | --- | --- | --- | --- | --- | --- | --- | --- | --- | --- | --- | --- | --- | --- | --- | --- | --- | --- | --- | --- | --- |
| HAR-0351 | HAR.SUBSTRUCTURE_COLUMNS.A4 | SUBSTRUCTURE_COLUMNS | A4 | Column starter embedment, bend/lap and dowel BBS check | 2 | ILLUSTRATIVE_CREW_PLANNING_SEED_NOT_APPROVED | NOT_MEASURED | REBAR | REFERENCE_ONLY_NOT_ACTUAL_SITE_ALLOCATION | STR-02/03/06, RPT-2083 | PROPOSED_NOT_ADMITTED_TO_APPROVED_WBS | FS | 0 | 176 | 178 | 178 | 176 | 0 | True | HAR-0296, HAR-0345 |  |
| HAR-0352 | HAR.SUBSTRUCTURE_COLUMNS.A4 | SUBSTRUCTURE_COLUMNS | A4 | Substructure column longitudinal reinforcement and Ø10/100 candidate ties | 1 | ILLUSTRATIVE_CREW_PLANNING_SEED_NOT_APPROVED | NOT_MEASURED | REBAR | REFERENCE_ONLY_NOT_ACTUAL_SITE_ALLOCATION | STR-02/03/06, RPT-2083 | PROPOSED_NOT_ADMITTED_TO_APPROVED_WBS | FS | 0 | 178 | 179 | 179 | 178 | 0 | True | HAR-0351, HAR-0346 |  |
| HAR-0353 | HAR.SUBSTRUCTURE_COLUMNS.A4 | SUBSTRUCTURE_COLUMNS | A4 | Substructure column cage confining/cover inspection | 0 | MILESTONE_ZERO_DURATION | NOT_MEASURED | ENGINEER_INSPECTION | REFERENCE_ONLY_NOT_ACTUAL_SITE_ALLOCATION | STR-02/03/06, RPT-2083 | PROPOSED_NOT_ADMITTED_TO_APPROVED_WBS | FS | 0 | 179 | 179 | 179 | 179 | 0 | True | HAR-0352, HAR-0347 | True |
| HAR-0354 | HAR.SUBSTRUCTURE_COLUMNS.A4 | SUBSTRUCTURE_COLUMNS | A4 | Column formwork / verticality / interface checks | 1 | ILLUSTRATIVE_CREW_PLANNING_SEED_NOT_APPROVED | NOT_MEASURED | FORMWORK | REFERENCE_ONLY_NOT_ACTUAL_SITE_ALLOCATION | STR-02/03/06, RPT-2083 | PROPOSED_NOT_ADMITTED_TO_APPROVED_WBS | FS | 0 | 179 | 180 | 180 | 179 | 0 | True | HAR-0353, HAR-0348 |  |
| HAR-0355 | HAR.SUBSTRUCTURE_COLUMNS.A4 | SUBSTRUCTURE_COLUMNS | A4 | M25 substructure column pour and specimens | 1 | ILLUSTRATIVE_CREW_PLANNING_SEED_NOT_APPROVED | NOT_MEASURED | CONCRETE | REFERENCE_ONLY_NOT_ACTUAL_SITE_ALLOCATION | STR-02/03/06, RPT-2083 | PROPOSED_NOT_ADMITTED_TO_APPROVED_WBS | FS | 0 | 180 | 181 | 181 | 180 | 0 | True | HAR-0354, HAR-0349 |  |
| HAR-0356 | HAR.SUBSTRUCTURE_COLUMNS.A4 | SUBSTRUCTURE_COLUMNS | A4 | Column curing / strip release | 2 | ILLUSTRATIVE_CREW_PLANNING_SEED_NOT_APPROVED | NOT_MEASURED | CONCRETE | REFERENCE_ONLY_NOT_ACTUAL_SITE_ALLOCATION | STR-02/03/06, RPT-2083 | PROPOSED_NOT_ADMITTED_TO_APPROVED_WBS | FS | 0 | 181 | 183 | 183 | 181 | 0 | True | HAR-0355, HAR-0350 |  |
| HAR-0357 | HAR.SUBSTRUCTURE_COLUMNS.B4 | SUBSTRUCTURE_COLUMNS | B4 | Column starter embedment, bend/lap and dowel BBS check | 2 | ILLUSTRATIVE_CREW_PLANNING_SEED_NOT_APPROVED | NOT_MEASURED | REBAR | REFERENCE_ONLY_NOT_ACTUAL_SITE_ALLOCATION | STR-02/03/06, RPT-2083 | PROPOSED_NOT_ADMITTED_TO_APPROVED_WBS | FS | 0 | 178 | 180 | 180 | 178 | 0 | True | HAR-0296, HAR-0351 |  |
| HAR-0358 | HAR.SUBSTRUCTURE_COLUMNS.B4 | SUBSTRUCTURE_COLUMNS | B4 | Substructure column longitudinal reinforcement and Ø10/100 candidate ties | 1 | ILLUSTRATIVE_CREW_PLANNING_SEED_NOT_APPROVED | NOT_MEASURED | REBAR | REFERENCE_ONLY_NOT_ACTUAL_SITE_ALLOCATION | STR-02/03/06, RPT-2083 | PROPOSED_NOT_ADMITTED_TO_APPROVED_WBS | FS | 0 | 180 | 181 | 181 | 180 | 0 | True | HAR-0357, HAR-0352 |  |
| HAR-0359 | HAR.SUBSTRUCTURE_COLUMNS.B4 | SUBSTRUCTURE_COLUMNS | B4 | Substructure column cage confining/cover inspection | 0 | MILESTONE_ZERO_DURATION | NOT_MEASURED | ENGINEER_INSPECTION | REFERENCE_ONLY_NOT_ACTUAL_SITE_ALLOCATION | STR-02/03/06, RPT-2083 | PROPOSED_NOT_ADMITTED_TO_APPROVED_WBS | FS | 0 | 181 | 181 | 181 | 181 | 0 | True | HAR-0358, HAR-0353 | True |
| HAR-0360 | HAR.SUBSTRUCTURE_COLUMNS.B4 | SUBSTRUCTURE_COLUMNS | B4 | Column formwork / verticality / interface checks | 1 | ILLUSTRATIVE_CREW_PLANNING_SEED_NOT_APPROVED | NOT_MEASURED | FORMWORK | REFERENCE_ONLY_NOT_ACTUAL_SITE_ALLOCATION | STR-02/03/06, RPT-2083 | PROPOSED_NOT_ADMITTED_TO_APPROVED_WBS | FS | 0 | 181 | 182 | 182 | 181 | 0 | True | HAR-0359, HAR-0354 |  |
| HAR-0361 | HAR.SUBSTRUCTURE_COLUMNS.B4 | SUBSTRUCTURE_COLUMNS | B4 | M25 substructure column pour and specimens | 1 | ILLUSTRATIVE_CREW_PLANNING_SEED_NOT_APPROVED | NOT_MEASURED | CONCRETE | REFERENCE_ONLY_NOT_ACTUAL_SITE_ALLOCATION | STR-02/03/06, RPT-2083 | PROPOSED_NOT_ADMITTED_TO_APPROVED_WBS | FS | 0 | 182 | 183 | 183 | 182 | 0 | True | HAR-0360, HAR-0355 |  |
| HAR-0362 | HAR.SUBSTRUCTURE_COLUMNS.B4 | SUBSTRUCTURE_COLUMNS | B4 | Column curing / strip release | 2 | ILLUSTRATIVE_CREW_PLANNING_SEED_NOT_APPROVED | NOT_MEASURED | CONCRETE | REFERENCE_ONLY_NOT_ACTUAL_SITE_ALLOCATION | STR-02/03/06, RPT-2083 | PROPOSED_NOT_ADMITTED_TO_APPROVED_WBS | FS | 0 | 183 | 185 | 185 | 183 | 0 | True | HAR-0361, HAR-0356 |  |
| HAR-0363 | HAR.SUBSTRUCTURE_COLUMNS.E4 | SUBSTRUCTURE_COLUMNS | E4 | Column starter embedment, bend/lap and dowel BBS check | 2 | ILLUSTRATIVE_CREW_PLANNING_SEED_NOT_APPROVED | NOT_MEASURED | REBAR | REFERENCE_ONLY_NOT_ACTUAL_SITE_ALLOCATION | STR-02/03/06, RPT-2083 | PROPOSED_NOT_ADMITTED_TO_APPROVED_WBS | FS | 0 | 180 | 182 | 182 | 180 | 0 | True | HAR-0296, HAR-0357 |  |
| HAR-0364 | HAR.SUBSTRUCTURE_COLUMNS.E4 | SUBSTRUCTURE_COLUMNS | E4 | Substructure column longitudinal reinforcement and Ø10/100 candidate ties | 1 | ILLUSTRATIVE_CREW_PLANNING_SEED_NOT_APPROVED | NOT_MEASURED | REBAR | REFERENCE_ONLY_NOT_ACTUAL_SITE_ALLOCATION | STR-02/03/06, RPT-2083 | PROPOSED_NOT_ADMITTED_TO_APPROVED_WBS | FS | 0 | 182 | 183 | 183 | 182 | 0 | True | HAR-0363, HAR-0358 |  |
| HAR-0365 | HAR.SUBSTRUCTURE_COLUMNS.E4 | SUBSTRUCTURE_COLUMNS | E4 | Substructure column cage confining/cover inspection | 0 | MILESTONE_ZERO_DURATION | NOT_MEASURED | ENGINEER_INSPECTION | REFERENCE_ONLY_NOT_ACTUAL_SITE_ALLOCATION | STR-02/03/06, RPT-2083 | PROPOSED_NOT_ADMITTED_TO_APPROVED_WBS | FS | 0 | 183 | 183 | 183 | 183 | 0 | True | HAR-0364, HAR-0359 | True |
| HAR-0366 | HAR.SUBSTRUCTURE_COLUMNS.E4 | SUBSTRUCTURE_COLUMNS | E4 | Column formwork / verticality / interface checks | 1 | ILLUSTRATIVE_CREW_PLANNING_SEED_NOT_APPROVED | NOT_MEASURED | FORMWORK | REFERENCE_ONLY_NOT_ACTUAL_SITE_ALLOCATION | STR-02/03/06, RPT-2083 | PROPOSED_NOT_ADMITTED_TO_APPROVED_WBS | FS | 0 | 183 | 184 | 184 | 183 | 0 | True | HAR-0365, HAR-0360 |  |
| HAR-0367 | HAR.SUBSTRUCTURE_COLUMNS.E4 | SUBSTRUCTURE_COLUMNS | E4 | M25 substructure column pour and specimens | 1 | ILLUSTRATIVE_CREW_PLANNING_SEED_NOT_APPROVED | NOT_MEASURED | CONCRETE | REFERENCE_ONLY_NOT_ACTUAL_SITE_ALLOCATION | STR-02/03/06, RPT-2083 | PROPOSED_NOT_ADMITTED_TO_APPROVED_WBS | FS | 0 | 184 | 185 | 185 | 184 | 0 | True | HAR-0366, HAR-0361 |  |
| HAR-0368 | HAR.SUBSTRUCTURE_COLUMNS.E4 | SUBSTRUCTURE_COLUMNS | E4 | Column curing / strip release | 2 | ILLUSTRATIVE_CREW_PLANNING_SEED_NOT_APPROVED | NOT_MEASURED | CONCRETE | REFERENCE_ONLY_NOT_ACTUAL_SITE_ALLOCATION | STR-02/03/06, RPT-2083 | PROPOSED_NOT_ADMITTED_TO_APPROVED_WBS | FS | 0 | 185 | 187 | 187 | 185 | 0 | True | HAR-0367, HAR-0362 |  |
| HAR-0369 | HAR.SUBSTRUCTURE_COLUMNS.A5 | SUBSTRUCTURE_COLUMNS | A5 | Column starter embedment, bend/lap and dowel BBS check | 2 | ILLUSTRATIVE_CREW_PLANNING_SEED_NOT_APPROVED | NOT_MEASURED | REBAR | REFERENCE_ONLY_NOT_ACTUAL_SITE_ALLOCATION | STR-02/03/06, RPT-2083 | PROPOSED_NOT_ADMITTED_TO_APPROVED_WBS | FS | 0 | 182 | 184 | 184 | 182 | 0 | True | HAR-0296, HAR-0363 |  |
| HAR-0370 | HAR.SUBSTRUCTURE_COLUMNS.A5 | SUBSTRUCTURE_COLUMNS | A5 | Substructure column longitudinal reinforcement and Ø10/100 candidate ties | 1 | ILLUSTRATIVE_CREW_PLANNING_SEED_NOT_APPROVED | NOT_MEASURED | REBAR | REFERENCE_ONLY_NOT_ACTUAL_SITE_ALLOCATION | STR-02/03/06, RPT-2083 | PROPOSED_NOT_ADMITTED_TO_APPROVED_WBS | FS | 0 | 184 | 185 | 185 | 184 | 0 | True | HAR-0369, HAR-0364 |  |
| HAR-0371 | HAR.SUBSTRUCTURE_COLUMNS.A5 | SUBSTRUCTURE_COLUMNS | A5 | Substructure column cage confining/cover inspection | 0 | MILESTONE_ZERO_DURATION | NOT_MEASURED | ENGINEER_INSPECTION | REFERENCE_ONLY_NOT_ACTUAL_SITE_ALLOCATION | STR-02/03/06, RPT-2083 | PROPOSED_NOT_ADMITTED_TO_APPROVED_WBS | FS | 0 | 185 | 185 | 185 | 185 | 0 | True | HAR-0370, HAR-0365 | True |
| HAR-0372 | HAR.SUBSTRUCTURE_COLUMNS.A5 | SUBSTRUCTURE_COLUMNS | A5 | Column formwork / verticality / interface checks | 1 | ILLUSTRATIVE_CREW_PLANNING_SEED_NOT_APPROVED | NOT_MEASURED | FORMWORK | REFERENCE_ONLY_NOT_ACTUAL_SITE_ALLOCATION | STR-02/03/06, RPT-2083 | PROPOSED_NOT_ADMITTED_TO_APPROVED_WBS | FS | 0 | 185 | 186 | 186 | 185 | 0 | True | HAR-0371, HAR-0366 |  |
| HAR-0373 | HAR.SUBSTRUCTURE_COLUMNS.A5 | SUBSTRUCTURE_COLUMNS | A5 | M25 substructure column pour and specimens | 1 | ILLUSTRATIVE_CREW_PLANNING_SEED_NOT_APPROVED | NOT_MEASURED | CONCRETE | REFERENCE_ONLY_NOT_ACTUAL_SITE_ALLOCATION | STR-02/03/06, RPT-2083 | PROPOSED_NOT_ADMITTED_TO_APPROVED_WBS | FS | 0 | 186 | 187 | 187 | 186 | 0 | True | HAR-0372, HAR-0367 |  |
| HAR-0374 | HAR.SUBSTRUCTURE_COLUMNS.A5 | SUBSTRUCTURE_COLUMNS | A5 | Column curing / strip release | 2 | ILLUSTRATIVE_CREW_PLANNING_SEED_NOT_APPROVED | NOT_MEASURED | CONCRETE | REFERENCE_ONLY_NOT_ACTUAL_SITE_ALLOCATION | STR-02/03/06, RPT-2083 | PROPOSED_NOT_ADMITTED_TO_APPROVED_WBS | FS | 0 | 187 | 189 | 189 | 187 | 0 | True | HAR-0373, HAR-0368 |  |
| HAR-0375 | HAR.SUBSTRUCTURE_COLUMNS.B5 | SUBSTRUCTURE_COLUMNS | B5 | Column starter embedment, bend/lap and dowel BBS check | 2 | ILLUSTRATIVE_CREW_PLANNING_SEED_NOT_APPROVED | NOT_MEASURED | REBAR | REFERENCE_ONLY_NOT_ACTUAL_SITE_ALLOCATION | STR-02/03/06, RPT-2083 | PROPOSED_NOT_ADMITTED_TO_APPROVED_WBS | FS | 0 | 184 | 186 | 186 | 184 | 0 | True | HAR-0296, HAR-0369 |  |
| HAR-0376 | HAR.SUBSTRUCTURE_COLUMNS.B5 | SUBSTRUCTURE_COLUMNS | B5 | Substructure column longitudinal reinforcement and Ø10/100 candidate ties | 1 | ILLUSTRATIVE_CREW_PLANNING_SEED_NOT_APPROVED | NOT_MEASURED | REBAR | REFERENCE_ONLY_NOT_ACTUAL_SITE_ALLOCATION | STR-02/03/06, RPT-2083 | PROPOSED_NOT_ADMITTED_TO_APPROVED_WBS | FS | 0 | 186 | 187 | 187 | 186 | 0 | True | HAR-0375, HAR-0370 |  |
| HAR-0377 | HAR.SUBSTRUCTURE_COLUMNS.B5 | SUBSTRUCTURE_COLUMNS | B5 | Substructure column cage confining/cover inspection | 0 | MILESTONE_ZERO_DURATION | NOT_MEASURED | ENGINEER_INSPECTION | REFERENCE_ONLY_NOT_ACTUAL_SITE_ALLOCATION | STR-02/03/06, RPT-2083 | PROPOSED_NOT_ADMITTED_TO_APPROVED_WBS | FS | 0 | 187 | 187 | 187 | 187 | 0 | True | HAR-0376, HAR-0371 | True |
| HAR-0378 | HAR.SUBSTRUCTURE_COLUMNS.B5 | SUBSTRUCTURE_COLUMNS | B5 | Column formwork / verticality / interface checks | 1 | ILLUSTRATIVE_CREW_PLANNING_SEED_NOT_APPROVED | NOT_MEASURED | FORMWORK | REFERENCE_ONLY_NOT_ACTUAL_SITE_ALLOCATION | STR-02/03/06, RPT-2083 | PROPOSED_NOT_ADMITTED_TO_APPROVED_WBS | FS | 0 | 187 | 188 | 188 | 187 | 0 | True | HAR-0377, HAR-0372 |  |
| HAR-0379 | HAR.SUBSTRUCTURE_COLUMNS.B5 | SUBSTRUCTURE_COLUMNS | B5 | M25 substructure column pour and specimens | 1 | ILLUSTRATIVE_CREW_PLANNING_SEED_NOT_APPROVED | NOT_MEASURED | CONCRETE | REFERENCE_ONLY_NOT_ACTUAL_SITE_ALLOCATION | STR-02/03/06, RPT-2083 | PROPOSED_NOT_ADMITTED_TO_APPROVED_WBS | FS | 0 | 188 | 189 | 189 | 188 | 0 | True | HAR-0378, HAR-0373 |  |
| HAR-0380 | HAR.SUBSTRUCTURE_COLUMNS.B5 | SUBSTRUCTURE_COLUMNS | B5 | Column curing / strip release | 2 | ILLUSTRATIVE_CREW_PLANNING_SEED_NOT_APPROVED | NOT_MEASURED | CONCRETE | REFERENCE_ONLY_NOT_ACTUAL_SITE_ALLOCATION | STR-02/03/06, RPT-2083 | PROPOSED_NOT_ADMITTED_TO_APPROVED_WBS | FS | 0 | 189 | 191 | 191 | 189 | 0 | True | HAR-0379, HAR-0374 |  |
| HAR-0381 | HAR.SUBSTRUCTURE_COLUMNS.D5 | SUBSTRUCTURE_COLUMNS | D5 | Column starter embedment, bend/lap and dowel BBS check | 2 | ILLUSTRATIVE_CREW_PLANNING_SEED_NOT_APPROVED | NOT_MEASURED | REBAR | REFERENCE_ONLY_NOT_ACTUAL_SITE_ALLOCATION | STR-02/03/06, RPT-2083 | PROPOSED_NOT_ADMITTED_TO_APPROVED_WBS | FS | 0 | 186 | 188 | 188 | 186 | 0 | True | HAR-0296, HAR-0375 |  |
| HAR-0382 | HAR.SUBSTRUCTURE_COLUMNS.D5 | SUBSTRUCTURE_COLUMNS | D5 | Substructure column longitudinal reinforcement and Ø10/100 candidate ties | 1 | ILLUSTRATIVE_CREW_PLANNING_SEED_NOT_APPROVED | NOT_MEASURED | REBAR | REFERENCE_ONLY_NOT_ACTUAL_SITE_ALLOCATION | STR-02/03/06, RPT-2083 | PROPOSED_NOT_ADMITTED_TO_APPROVED_WBS | FS | 0 | 188 | 189 | 189 | 188 | 0 | True | HAR-0381, HAR-0376 |  |
| HAR-0383 | HAR.SUBSTRUCTURE_COLUMNS.D5 | SUBSTRUCTURE_COLUMNS | D5 | Substructure column cage confining/cover inspection | 0 | MILESTONE_ZERO_DURATION | NOT_MEASURED | ENGINEER_INSPECTION | REFERENCE_ONLY_NOT_ACTUAL_SITE_ALLOCATION | STR-02/03/06, RPT-2083 | PROPOSED_NOT_ADMITTED_TO_APPROVED_WBS | FS | 0 | 189 | 189 | 189 | 189 | 0 | True | HAR-0382, HAR-0377 | True |
| HAR-0384 | HAR.SUBSTRUCTURE_COLUMNS.D5 | SUBSTRUCTURE_COLUMNS | D5 | Column formwork / verticality / interface checks | 1 | ILLUSTRATIVE_CREW_PLANNING_SEED_NOT_APPROVED | NOT_MEASURED | FORMWORK | REFERENCE_ONLY_NOT_ACTUAL_SITE_ALLOCATION | STR-02/03/06, RPT-2083 | PROPOSED_NOT_ADMITTED_TO_APPROVED_WBS | FS | 0 | 189 | 190 | 190 | 189 | 0 | True | HAR-0383, HAR-0378 |  |
| HAR-0385 | HAR.SUBSTRUCTURE_COLUMNS.D5 | SUBSTRUCTURE_COLUMNS | D5 | M25 substructure column pour and specimens | 1 | ILLUSTRATIVE_CREW_PLANNING_SEED_NOT_APPROVED | NOT_MEASURED | CONCRETE | REFERENCE_ONLY_NOT_ACTUAL_SITE_ALLOCATION | STR-02/03/06, RPT-2083 | PROPOSED_NOT_ADMITTED_TO_APPROVED_WBS | FS | 0 | 190 | 191 | 191 | 190 | 0 | True | HAR-0384, HAR-0379 |  |
| HAR-0386 | HAR.SUBSTRUCTURE_COLUMNS.D5 | SUBSTRUCTURE_COLUMNS | D5 | Column curing / strip release | 2 | ILLUSTRATIVE_CREW_PLANNING_SEED_NOT_APPROVED | NOT_MEASURED | CONCRETE | REFERENCE_ONLY_NOT_ACTUAL_SITE_ALLOCATION | STR-02/03/06, RPT-2083 | PROPOSED_NOT_ADMITTED_TO_APPROVED_WBS | FS | 0 | 191 | 193 | 193 | 191 | 0 | True | HAR-0385, HAR-0380 |  |
| HAR-0387 | HAR.SUBSTRUCTURE_COLUMNS.A6 | SUBSTRUCTURE_COLUMNS | A6 | Column starter embedment, bend/lap and dowel BBS check | 2 | ILLUSTRATIVE_CREW_PLANNING_SEED_NOT_APPROVED | NOT_MEASURED | REBAR | REFERENCE_ONLY_NOT_ACTUAL_SITE_ALLOCATION | STR-02/03/06, RPT-2083 | PROPOSED_NOT_ADMITTED_TO_APPROVED_WBS | FS | 0 | 188 | 190 | 190 | 188 | 0 | True | HAR-0296, HAR-0381 |  |
| HAR-0388 | HAR.SUBSTRUCTURE_COLUMNS.A6 | SUBSTRUCTURE_COLUMNS | A6 | Substructure column longitudinal reinforcement and Ø10/100 candidate ties | 1 | ILLUSTRATIVE_CREW_PLANNING_SEED_NOT_APPROVED | NOT_MEASURED | REBAR | REFERENCE_ONLY_NOT_ACTUAL_SITE_ALLOCATION | STR-02/03/06, RPT-2083 | PROPOSED_NOT_ADMITTED_TO_APPROVED_WBS | FS | 0 | 190 | 191 | 191 | 190 | 0 | True | HAR-0387, HAR-0382 |  |
| HAR-0389 | HAR.SUBSTRUCTURE_COLUMNS.A6 | SUBSTRUCTURE_COLUMNS | A6 | Substructure column cage confining/cover inspection | 0 | MILESTONE_ZERO_DURATION | NOT_MEASURED | ENGINEER_INSPECTION | REFERENCE_ONLY_NOT_ACTUAL_SITE_ALLOCATION | STR-02/03/06, RPT-2083 | PROPOSED_NOT_ADMITTED_TO_APPROVED_WBS | FS | 0 | 191 | 191 | 191 | 191 | 0 | True | HAR-0388, HAR-0383 | True |
| HAR-0390 | HAR.SUBSTRUCTURE_COLUMNS.A6 | SUBSTRUCTURE_COLUMNS | A6 | Column formwork / verticality / interface checks | 1 | ILLUSTRATIVE_CREW_PLANNING_SEED_NOT_APPROVED | NOT_MEASURED | FORMWORK | REFERENCE_ONLY_NOT_ACTUAL_SITE_ALLOCATION | STR-02/03/06, RPT-2083 | PROPOSED_NOT_ADMITTED_TO_APPROVED_WBS | FS | 0 | 191 | 192 | 192 | 191 | 0 | True | HAR-0389, HAR-0384 |  |
| HAR-0391 | HAR.SUBSTRUCTURE_COLUMNS.A6 | SUBSTRUCTURE_COLUMNS | A6 | M25 substructure column pour and specimens | 1 | ILLUSTRATIVE_CREW_PLANNING_SEED_NOT_APPROVED | NOT_MEASURED | CONCRETE | REFERENCE_ONLY_NOT_ACTUAL_SITE_ALLOCATION | STR-02/03/06, RPT-2083 | PROPOSED_NOT_ADMITTED_TO_APPROVED_WBS | FS | 0 | 192 | 193 | 193 | 192 | 0 | True | HAR-0390, HAR-0385 |  |
| HAR-0392 | HAR.SUBSTRUCTURE_COLUMNS.A6 | SUBSTRUCTURE_COLUMNS | A6 | Column curing / strip release | 2 | ILLUSTRATIVE_CREW_PLANNING_SEED_NOT_APPROVED | NOT_MEASURED | CONCRETE | REFERENCE_ONLY_NOT_ACTUAL_SITE_ALLOCATION | STR-02/03/06, RPT-2083 | PROPOSED_NOT_ADMITTED_TO_APPROVED_WBS | FS | 0 | 193 | 195 | 195 | 193 | 0 | True | HAR-0391, HAR-0386 |  |
| HAR-0393 | HAR.SUBSTRUCTURE_COLUMNS.B6 | SUBSTRUCTURE_COLUMNS | B6 | Column starter embedment, bend/lap and dowel BBS check | 2 | ILLUSTRATIVE_CREW_PLANNING_SEED_NOT_APPROVED | NOT_MEASURED | REBAR | REFERENCE_ONLY_NOT_ACTUAL_SITE_ALLOCATION | STR-02/03/06, RPT-2083 | PROPOSED_NOT_ADMITTED_TO_APPROVED_WBS | FS | 0 | 190 | 192 | 192 | 190 | 0 | True | HAR-0296, HAR-0387 |  |
| HAR-0394 | HAR.SUBSTRUCTURE_COLUMNS.B6 | SUBSTRUCTURE_COLUMNS | B6 | Substructure column longitudinal reinforcement and Ø10/100 candidate ties | 1 | ILLUSTRATIVE_CREW_PLANNING_SEED_NOT_APPROVED | NOT_MEASURED | REBAR | REFERENCE_ONLY_NOT_ACTUAL_SITE_ALLOCATION | STR-02/03/06, RPT-2083 | PROPOSED_NOT_ADMITTED_TO_APPROVED_WBS | FS | 0 | 192 | 193 | 193 | 192 | 0 | True | HAR-0393, HAR-0388 |  |
| HAR-0395 | HAR.SUBSTRUCTURE_COLUMNS.B6 | SUBSTRUCTURE_COLUMNS | B6 | Substructure column cage confining/cover inspection | 0 | MILESTONE_ZERO_DURATION | NOT_MEASURED | ENGINEER_INSPECTION | REFERENCE_ONLY_NOT_ACTUAL_SITE_ALLOCATION | STR-02/03/06, RPT-2083 | PROPOSED_NOT_ADMITTED_TO_APPROVED_WBS | FS | 0 | 193 | 193 | 193 | 193 | 0 | True | HAR-0394, HAR-0389 | True |
| HAR-0396 | HAR.SUBSTRUCTURE_COLUMNS.B6 | SUBSTRUCTURE_COLUMNS | B6 | Column formwork / verticality / interface checks | 1 | ILLUSTRATIVE_CREW_PLANNING_SEED_NOT_APPROVED | NOT_MEASURED | FORMWORK | REFERENCE_ONLY_NOT_ACTUAL_SITE_ALLOCATION | STR-02/03/06, RPT-2083 | PROPOSED_NOT_ADMITTED_TO_APPROVED_WBS | FS | 0 | 193 | 194 | 194 | 193 | 0 | True | HAR-0395, HAR-0390 |  |
| HAR-0397 | HAR.SUBSTRUCTURE_COLUMNS.B6 | SUBSTRUCTURE_COLUMNS | B6 | M25 substructure column pour and specimens | 1 | ILLUSTRATIVE_CREW_PLANNING_SEED_NOT_APPROVED | NOT_MEASURED | CONCRETE | REFERENCE_ONLY_NOT_ACTUAL_SITE_ALLOCATION | STR-02/03/06, RPT-2083 | PROPOSED_NOT_ADMITTED_TO_APPROVED_WBS | FS | 0 | 194 | 195 | 195 | 194 | 0 | True | HAR-0396, HAR-0391 |  |
| HAR-0398 | HAR.SUBSTRUCTURE_COLUMNS.B6 | SUBSTRUCTURE_COLUMNS | B6 | Column curing / strip release | 2 | ILLUSTRATIVE_CREW_PLANNING_SEED_NOT_APPROVED | NOT_MEASURED | CONCRETE | REFERENCE_ONLY_NOT_ACTUAL_SITE_ALLOCATION | STR-02/03/06, RPT-2083 | PROPOSED_NOT_ADMITTED_TO_APPROVED_WBS | FS | 0 | 195 | 197 | 197 | 195 | 0 | True | HAR-0397, HAR-0392 |  |
| HAR-0399 | HAR.SUBSTRUCTURE_COLUMNS.C6 | SUBSTRUCTURE_COLUMNS | C6 | Column starter embedment, bend/lap and dowel BBS check | 2 | ILLUSTRATIVE_CREW_PLANNING_SEED_NOT_APPROVED | NOT_MEASURED | REBAR | REFERENCE_ONLY_NOT_ACTUAL_SITE_ALLOCATION | STR-02/03/06, RPT-2083 | PROPOSED_NOT_ADMITTED_TO_APPROVED_WBS | FS | 0 | 192 | 194 | 194 | 192 | 0 | True | HAR-0296, HAR-0393 |  |
| HAR-0400 | HAR.SUBSTRUCTURE_COLUMNS.C6 | SUBSTRUCTURE_COLUMNS | C6 | Substructure column longitudinal reinforcement and Ø10/100 candidate ties | 1 | ILLUSTRATIVE_CREW_PLANNING_SEED_NOT_APPROVED | NOT_MEASURED | REBAR | REFERENCE_ONLY_NOT_ACTUAL_SITE_ALLOCATION | STR-02/03/06, RPT-2083 | PROPOSED_NOT_ADMITTED_TO_APPROVED_WBS | FS | 0 | 194 | 195 | 195 | 194 | 0 | True | HAR-0399, HAR-0394 |  |
| HAR-0401 | HAR.SUBSTRUCTURE_COLUMNS.C6 | SUBSTRUCTURE_COLUMNS | C6 | Substructure column cage confining/cover inspection | 0 | MILESTONE_ZERO_DURATION | NOT_MEASURED | ENGINEER_INSPECTION | REFERENCE_ONLY_NOT_ACTUAL_SITE_ALLOCATION | STR-02/03/06, RPT-2083 | PROPOSED_NOT_ADMITTED_TO_APPROVED_WBS | FS | 0 | 195 | 195 | 195 | 195 | 0 | True | HAR-0400, HAR-0395 | True |
| HAR-0402 | HAR.SUBSTRUCTURE_COLUMNS.C6 | SUBSTRUCTURE_COLUMNS | C6 | Column formwork / verticality / interface checks | 1 | ILLUSTRATIVE_CREW_PLANNING_SEED_NOT_APPROVED | NOT_MEASURED | FORMWORK | REFERENCE_ONLY_NOT_ACTUAL_SITE_ALLOCATION | STR-02/03/06, RPT-2083 | PROPOSED_NOT_ADMITTED_TO_APPROVED_WBS | FS | 0 | 195 | 196 | 196 | 195 | 0 | True | HAR-0401, HAR-0396 |  |
| HAR-0403 | HAR.SUBSTRUCTURE_COLUMNS.C6 | SUBSTRUCTURE_COLUMNS | C6 | M25 substructure column pour and specimens | 1 | ILLUSTRATIVE_CREW_PLANNING_SEED_NOT_APPROVED | NOT_MEASURED | CONCRETE | REFERENCE_ONLY_NOT_ACTUAL_SITE_ALLOCATION | STR-02/03/06, RPT-2083 | PROPOSED_NOT_ADMITTED_TO_APPROVED_WBS | FS | 0 | 196 | 197 | 197 | 196 | 0 | True | HAR-0402, HAR-0397 |  |
| HAR-0404 | HAR.SUBSTRUCTURE_COLUMNS.C6 | SUBSTRUCTURE_COLUMNS | C6 | Column curing / strip release | 2 | ILLUSTRATIVE_CREW_PLANNING_SEED_NOT_APPROVED | NOT_MEASURED | CONCRETE | REFERENCE_ONLY_NOT_ACTUAL_SITE_ALLOCATION | STR-02/03/06, RPT-2083 | PROPOSED_NOT_ADMITTED_TO_APPROVED_WBS | FS | 0 | 197 | 199 | 199 | 197 | 0 | True | HAR-0403, HAR-0398 |  |
| HAR-0405 | HAR.MILESTONES.COLUMNS | MILESTONES | COLUMNS | All substructure columns completed and inspected | 0 | MILESTONE_ZERO_DURATION | NOT_MEASURED | GENERAL_CIVIL_REFERENCE | REFERENCE_ONLY_NOT_ACTUAL_SITE_ALLOCATION | ARC-2026, STR-2026, RPT-2083, NEP-DUDBC-2081 | PROPOSED_NOT_ADMITTED_TO_APPROVED_WBS | FS | 0 | 199 | 199 | 199 | 199 | 0 | True | HAR-0302, HAR-0308, HAR-0314, HAR-0320, HAR-0326, HAR-0332, HAR-0338, HAR-0344, HAR-0350, HAR-0356, HAR-0362, HAR-0368, HAR-0374, HAR-0380, HAR-0386, HAR-0392, HAR-0398, HAR-0404 | True |
| HAR-0406 | HAR.PLINTH.BAY-01 | PLINTH | BAY-01 | Plinth beam alignment and level set-out | 1 | ILLUSTRATIVE_CREW_PLANNING_SEED_NOT_APPROVED | NOT_MEASURED | SURVEY | REFERENCE_ONLY_NOT_ACTUAL_SITE_ALLOCATION | STR-04/05, ARC-07, RPT-2083 | PROPOSED_NOT_ADMITTED_TO_APPROVED_WBS | FS | 0 | 199 | 200 | 200 | 199 | 0 | True | HAR-0405 |  |
| HAR-0407 | HAR.PLINTH.BAY-01 | PLINTH | BAY-01 | Plinth beam / tie beam soffit shuttering and supports | 2 | ILLUSTRATIVE_CREW_PLANNING_SEED_NOT_APPROVED | NOT_MEASURED | FORMWORK | REFERENCE_ONLY_NOT_ACTUAL_SITE_ALLOCATION | STR-04/05, ARC-07, RPT-2083 | PROPOSED_NOT_ADMITTED_TO_APPROVED_WBS | FS | 0 | 200 | 202 | 202 | 200 | 0 | True | HAR-0406 |  |
| HAR-0408 | HAR.PLINTH.BAY-01 | PLINTH | BAY-01 | Plinth beams longitudinal bars, shear links and junction steel | 2 | ILLUSTRATIVE_CREW_PLANNING_SEED_NOT_APPROVED | NOT_MEASURED | REBAR | REFERENCE_ONLY_NOT_ACTUAL_SITE_ALLOCATION | STR-04/05, ARC-07, RPT-2083 | PROPOSED_NOT_ADMITTED_TO_APPROVED_WBS | FS | 0 | 202 | 204 | 204 | 202 | 0 | True | HAR-0407 |  |
| HAR-0409 | HAR.PLINTH.BAY-01 | PLINTH | BAY-01 | Plinth services sleeves, electrical earth provision and embedment | 1 | ILLUSTRATIVE_CREW_PLANNING_SEED_NOT_APPROVED | NOT_MEASURED | MEP_COORDINATION | REFERENCE_ONLY_NOT_ACTUAL_SITE_ALLOCATION | STR-04/05, ARC-07, RPT-2083 | PROPOSED_NOT_ADMITTED_TO_APPROVED_WBS | FS | 0 | 204 | 205 | 205 | 204 | 0 | True | HAR-0408 |  |
| HAR-0410 | HAR.PLINTH.BAY-01 | PLINTH | BAY-01 | Pre-pour plinth inspection: tie details, cover, offsets, embeds | 0 | MILESTONE_ZERO_DURATION | NOT_MEASURED | ENGINEER_INSPECTION | REFERENCE_ONLY_NOT_ACTUAL_SITE_ALLOCATION | STR-04/05, ARC-07, RPT-2083 | PROPOSED_NOT_ADMITTED_TO_APPROVED_WBS | FS | 0 | 205 | 205 | 205 | 205 | 0 | True | HAR-0409 | True |
| HAR-0411 | HAR.PLINTH.BAY-01 | PLINTH | BAY-01 | Plinth beam M25 concrete placement and tests | 1 | ILLUSTRATIVE_CREW_PLANNING_SEED_NOT_APPROVED | NOT_MEASURED | CONCRETE | REFERENCE_ONLY_NOT_ACTUAL_SITE_ALLOCATION | STR-04/05, ARC-07, RPT-2083 | PROPOSED_NOT_ADMITTED_TO_APPROVED_WBS | FS | 0 | 205 | 206 | 206 | 205 | 0 | True | HAR-0410 |  |
| HAR-0412 | HAR.PLINTH.BAY-01 | PLINTH | BAY-01 | Plinth curing and support monitoring | 2 | ILLUSTRATIVE_CREW_PLANNING_SEED_NOT_APPROVED | NOT_MEASURED | CONCRETE | REFERENCE_ONLY_NOT_ACTUAL_SITE_ALLOCATION | STR-04/05, ARC-07, RPT-2083 | PROPOSED_NOT_ADMITTED_TO_APPROVED_WBS | FS | 0 | 206 | 208 | 208 | 206 | 0 | True | HAR-0411 |  |
| HAR-0413 | HAR.PLINTH.BAY-01 | PLINTH | BAY-01 | Plinth beams inspection and level QA | 0 | MILESTONE_ZERO_DURATION | NOT_MEASURED | ENGINEER_INSPECTION | REFERENCE_ONLY_NOT_ACTUAL_SITE_ALLOCATION | STR-04/05, ARC-07, RPT-2083 | PROPOSED_NOT_ADMITTED_TO_APPROVED_WBS | FS | 0 | 208 | 208 | 218 | 218 | 10 |  | HAR-0412 | True |
| HAR-0414 | HAR.PLINTH.BAY-02 | PLINTH | BAY-02 | Plinth beam alignment and level set-out | 1 | ILLUSTRATIVE_CREW_PLANNING_SEED_NOT_APPROVED | NOT_MEASURED | SURVEY | REFERENCE_ONLY_NOT_ACTUAL_SITE_ALLOCATION | STR-04/05, ARC-07, RPT-2083 | PROPOSED_NOT_ADMITTED_TO_APPROVED_WBS | FS | 0 | 200 | 201 | 202 | 201 | 1 |  | HAR-0405, HAR-0406 |  |
| HAR-0415 | HAR.PLINTH.BAY-02 | PLINTH | BAY-02 | Plinth beam / tie beam soffit shuttering and supports | 2 | ILLUSTRATIVE_CREW_PLANNING_SEED_NOT_APPROVED | NOT_MEASURED | FORMWORK | REFERENCE_ONLY_NOT_ACTUAL_SITE_ALLOCATION | STR-04/05, ARC-07, RPT-2083 | PROPOSED_NOT_ADMITTED_TO_APPROVED_WBS | FS | 0 | 202 | 204 | 204 | 202 | 0 | True | HAR-0414, HAR-0407 |  |
| HAR-0416 | HAR.PLINTH.BAY-02 | PLINTH | BAY-02 | Plinth beams longitudinal bars, shear links and junction steel | 2 | ILLUSTRATIVE_CREW_PLANNING_SEED_NOT_APPROVED | NOT_MEASURED | REBAR | REFERENCE_ONLY_NOT_ACTUAL_SITE_ALLOCATION | STR-04/05, ARC-07, RPT-2083 | PROPOSED_NOT_ADMITTED_TO_APPROVED_WBS | FS | 0 | 204 | 206 | 206 | 204 | 0 | True | HAR-0415, HAR-0408 |  |
| HAR-0417 | HAR.PLINTH.BAY-02 | PLINTH | BAY-02 | Plinth services sleeves, electrical earth provision and embedment | 1 | ILLUSTRATIVE_CREW_PLANNING_SEED_NOT_APPROVED | NOT_MEASURED | MEP_COORDINATION | REFERENCE_ONLY_NOT_ACTUAL_SITE_ALLOCATION | STR-04/05, ARC-07, RPT-2083 | PROPOSED_NOT_ADMITTED_TO_APPROVED_WBS | FS | 0 | 206 | 207 | 207 | 206 | 0 | True | HAR-0416, HAR-0409 |  |
| HAR-0418 | HAR.PLINTH.BAY-02 | PLINTH | BAY-02 | Pre-pour plinth inspection: tie details, cover, offsets, embeds | 0 | MILESTONE_ZERO_DURATION | NOT_MEASURED | ENGINEER_INSPECTION | REFERENCE_ONLY_NOT_ACTUAL_SITE_ALLOCATION | STR-04/05, ARC-07, RPT-2083 | PROPOSED_NOT_ADMITTED_TO_APPROVED_WBS | FS | 0 | 207 | 207 | 207 | 207 | 0 | True | HAR-0417, HAR-0410 | True |
| HAR-0419 | HAR.PLINTH.BAY-02 | PLINTH | BAY-02 | Plinth beam M25 concrete placement and tests | 1 | ILLUSTRATIVE_CREW_PLANNING_SEED_NOT_APPROVED | NOT_MEASURED | CONCRETE | REFERENCE_ONLY_NOT_ACTUAL_SITE_ALLOCATION | STR-04/05, ARC-07, RPT-2083 | PROPOSED_NOT_ADMITTED_TO_APPROVED_WBS | FS | 0 | 207 | 208 | 208 | 207 | 0 | True | HAR-0418, HAR-0411 |  |
| HAR-0420 | HAR.PLINTH.BAY-02 | PLINTH | BAY-02 | Plinth curing and support monitoring | 2 | ILLUSTRATIVE_CREW_PLANNING_SEED_NOT_APPROVED | NOT_MEASURED | CONCRETE | REFERENCE_ONLY_NOT_ACTUAL_SITE_ALLOCATION | STR-04/05, ARC-07, RPT-2083 | PROPOSED_NOT_ADMITTED_TO_APPROVED_WBS | FS | 0 | 208 | 210 | 210 | 208 | 0 | True | HAR-0419, HAR-0412 |  |

| activity_id | wbs | phase | scope | title | duration_workdays | duration_basis | quantity_basis | crew_category | crew_basis | source_refs | status | logic_type | lag_workdays | planned_start_workday | planned_finish_workday | latest_finish_workday | latest_start_workday | total_float_workdays | critical | predecessor_ids | engineering_hold |
| --- | --- | --- | --- | --- | --- | --- | --- | --- | --- | --- | --- | --- | --- | --- | --- | --- | --- | --- | --- | --- | --- |
| HAR-0421 | HAR.PLINTH.BAY-02 | PLINTH | BAY-02 | Plinth beams inspection and level QA | 0 | MILESTONE_ZERO_DURATION | NOT_MEASURED | ENGINEER_INSPECTION | REFERENCE_ONLY_NOT_ACTUAL_SITE_ALLOCATION | STR-04/05, ARC-07, RPT-2083 | PROPOSED_NOT_ADMITTED_TO_APPROVED_WBS | FS | 0 | 210 | 210 | 218 | 218 | 8 |  | HAR-0420, HAR-0413 | True |
| HAR-0422 | HAR.PLINTH.BAY-03 | PLINTH | BAY-03 | Plinth beam alignment and level set-out | 1 | ILLUSTRATIVE_CREW_PLANNING_SEED_NOT_APPROVED | NOT_MEASURED | SURVEY | REFERENCE_ONLY_NOT_ACTUAL_SITE_ALLOCATION | STR-04/05, ARC-07, RPT-2083 | PROPOSED_NOT_ADMITTED_TO_APPROVED_WBS | FS | 0 | 201 | 202 | 204 | 203 | 2 |  | HAR-0405, HAR-0414 |  |
| HAR-0423 | HAR.PLINTH.BAY-03 | PLINTH | BAY-03 | Plinth beam / tie beam soffit shuttering and supports | 2 | ILLUSTRATIVE_CREW_PLANNING_SEED_NOT_APPROVED | NOT_MEASURED | FORMWORK | REFERENCE_ONLY_NOT_ACTUAL_SITE_ALLOCATION | STR-04/05, ARC-07, RPT-2083 | PROPOSED_NOT_ADMITTED_TO_APPROVED_WBS | FS | 0 | 204 | 206 | 206 | 204 | 0 | True | HAR-0422, HAR-0415 |  |
| HAR-0424 | HAR.PLINTH.BAY-03 | PLINTH | BAY-03 | Plinth beams longitudinal bars, shear links and junction steel | 2 | ILLUSTRATIVE_CREW_PLANNING_SEED_NOT_APPROVED | NOT_MEASURED | REBAR | REFERENCE_ONLY_NOT_ACTUAL_SITE_ALLOCATION | STR-04/05, ARC-07, RPT-2083 | PROPOSED_NOT_ADMITTED_TO_APPROVED_WBS | FS | 0 | 206 | 208 | 208 | 206 | 0 | True | HAR-0423, HAR-0416 |  |
| HAR-0425 | HAR.PLINTH.BAY-03 | PLINTH | BAY-03 | Plinth services sleeves, electrical earth provision and embedment | 1 | ILLUSTRATIVE_CREW_PLANNING_SEED_NOT_APPROVED | NOT_MEASURED | MEP_COORDINATION | REFERENCE_ONLY_NOT_ACTUAL_SITE_ALLOCATION | STR-04/05, ARC-07, RPT-2083 | PROPOSED_NOT_ADMITTED_TO_APPROVED_WBS | FS | 0 | 208 | 209 | 209 | 208 | 0 | True | HAR-0424, HAR-0417 |  |
| HAR-0426 | HAR.PLINTH.BAY-03 | PLINTH | BAY-03 | Pre-pour plinth inspection: tie details, cover, offsets, embeds | 0 | MILESTONE_ZERO_DURATION | NOT_MEASURED | ENGINEER_INSPECTION | REFERENCE_ONLY_NOT_ACTUAL_SITE_ALLOCATION | STR-04/05, ARC-07, RPT-2083 | PROPOSED_NOT_ADMITTED_TO_APPROVED_WBS | FS | 0 | 209 | 209 | 209 | 209 | 0 | True | HAR-0425, HAR-0418 | True |
| HAR-0427 | HAR.PLINTH.BAY-03 | PLINTH | BAY-03 | Plinth beam M25 concrete placement and tests | 1 | ILLUSTRATIVE_CREW_PLANNING_SEED_NOT_APPROVED | NOT_MEASURED | CONCRETE | REFERENCE_ONLY_NOT_ACTUAL_SITE_ALLOCATION | STR-04/05, ARC-07, RPT-2083 | PROPOSED_NOT_ADMITTED_TO_APPROVED_WBS | FS | 0 | 209 | 210 | 210 | 209 | 0 | True | HAR-0426, HAR-0419 |  |
| HAR-0428 | HAR.PLINTH.BAY-03 | PLINTH | BAY-03 | Plinth curing and support monitoring | 2 | ILLUSTRATIVE_CREW_PLANNING_SEED_NOT_APPROVED | NOT_MEASURED | CONCRETE | REFERENCE_ONLY_NOT_ACTUAL_SITE_ALLOCATION | STR-04/05, ARC-07, RPT-2083 | PROPOSED_NOT_ADMITTED_TO_APPROVED_WBS | FS | 0 | 210 | 212 | 212 | 210 | 0 | True | HAR-0427, HAR-0420 |  |
| HAR-0429 | HAR.PLINTH.BAY-03 | PLINTH | BAY-03 | Plinth beams inspection and level QA | 0 | MILESTONE_ZERO_DURATION | NOT_MEASURED | ENGINEER_INSPECTION | REFERENCE_ONLY_NOT_ACTUAL_SITE_ALLOCATION | STR-04/05, ARC-07, RPT-2083 | PROPOSED_NOT_ADMITTED_TO_APPROVED_WBS | FS | 0 | 212 | 212 | 218 | 218 | 6 |  | HAR-0428, HAR-0421 | True |
| HAR-0430 | HAR.PLINTH.BAY-04 | PLINTH | BAY-04 | Plinth beam alignment and level set-out | 1 | ILLUSTRATIVE_CREW_PLANNING_SEED_NOT_APPROVED | NOT_MEASURED | SURVEY | REFERENCE_ONLY_NOT_ACTUAL_SITE_ALLOCATION | STR-04/05, ARC-07, RPT-2083 | PROPOSED_NOT_ADMITTED_TO_APPROVED_WBS | FS | 0 | 202 | 203 | 206 | 205 | 3 |  | HAR-0405, HAR-0422 |  |
| HAR-0431 | HAR.PLINTH.BAY-04 | PLINTH | BAY-04 | Plinth beam / tie beam soffit shuttering and supports | 2 | ILLUSTRATIVE_CREW_PLANNING_SEED_NOT_APPROVED | NOT_MEASURED | FORMWORK | REFERENCE_ONLY_NOT_ACTUAL_SITE_ALLOCATION | STR-04/05, ARC-07, RPT-2083 | PROPOSED_NOT_ADMITTED_TO_APPROVED_WBS | FS | 0 | 206 | 208 | 208 | 206 | 0 | True | HAR-0430, HAR-0423 |  |
| HAR-0432 | HAR.PLINTH.BAY-04 | PLINTH | BAY-04 | Plinth beams longitudinal bars, shear links and junction steel | 2 | ILLUSTRATIVE_CREW_PLANNING_SEED_NOT_APPROVED | NOT_MEASURED | REBAR | REFERENCE_ONLY_NOT_ACTUAL_SITE_ALLOCATION | STR-04/05, ARC-07, RPT-2083 | PROPOSED_NOT_ADMITTED_TO_APPROVED_WBS | FS | 0 | 208 | 210 | 210 | 208 | 0 | True | HAR-0431, HAR-0424 |  |
| HAR-0433 | HAR.PLINTH.BAY-04 | PLINTH | BAY-04 | Plinth services sleeves, electrical earth provision and embedment | 1 | ILLUSTRATIVE_CREW_PLANNING_SEED_NOT_APPROVED | NOT_MEASURED | MEP_COORDINATION | REFERENCE_ONLY_NOT_ACTUAL_SITE_ALLOCATION | STR-04/05, ARC-07, RPT-2083 | PROPOSED_NOT_ADMITTED_TO_APPROVED_WBS | FS | 0 | 210 | 211 | 211 | 210 | 0 | True | HAR-0432, HAR-0425 |  |
| HAR-0434 | HAR.PLINTH.BAY-04 | PLINTH | BAY-04 | Pre-pour plinth inspection: tie details, cover, offsets, embeds | 0 | MILESTONE_ZERO_DURATION | NOT_MEASURED | ENGINEER_INSPECTION | REFERENCE_ONLY_NOT_ACTUAL_SITE_ALLOCATION | STR-04/05, ARC-07, RPT-2083 | PROPOSED_NOT_ADMITTED_TO_APPROVED_WBS | FS | 0 | 211 | 211 | 211 | 211 | 0 | True | HAR-0433, HAR-0426 | True |
| HAR-0435 | HAR.PLINTH.BAY-04 | PLINTH | BAY-04 | Plinth beam M25 concrete placement and tests | 1 | ILLUSTRATIVE_CREW_PLANNING_SEED_NOT_APPROVED | NOT_MEASURED | CONCRETE | REFERENCE_ONLY_NOT_ACTUAL_SITE_ALLOCATION | STR-04/05, ARC-07, RPT-2083 | PROPOSED_NOT_ADMITTED_TO_APPROVED_WBS | FS | 0 | 211 | 212 | 212 | 211 | 0 | True | HAR-0434, HAR-0427 |  |
| HAR-0436 | HAR.PLINTH.BAY-04 | PLINTH | BAY-04 | Plinth curing and support monitoring | 2 | ILLUSTRATIVE_CREW_PLANNING_SEED_NOT_APPROVED | NOT_MEASURED | CONCRETE | REFERENCE_ONLY_NOT_ACTUAL_SITE_ALLOCATION | STR-04/05, ARC-07, RPT-2083 | PROPOSED_NOT_ADMITTED_TO_APPROVED_WBS | FS | 0 | 212 | 214 | 214 | 212 | 0 | True | HAR-0435, HAR-0428 |  |
| HAR-0437 | HAR.PLINTH.BAY-04 | PLINTH | BAY-04 | Plinth beams inspection and level QA | 0 | MILESTONE_ZERO_DURATION | NOT_MEASURED | ENGINEER_INSPECTION | REFERENCE_ONLY_NOT_ACTUAL_SITE_ALLOCATION | STR-04/05, ARC-07, RPT-2083 | PROPOSED_NOT_ADMITTED_TO_APPROVED_WBS | FS | 0 | 214 | 214 | 218 | 218 | 4 |  | HAR-0436, HAR-0429 | True |
| HAR-0438 | HAR.PLINTH.BAY-05 | PLINTH | BAY-05 | Plinth beam alignment and level set-out | 1 | ILLUSTRATIVE_CREW_PLANNING_SEED_NOT_APPROVED | NOT_MEASURED | SURVEY | REFERENCE_ONLY_NOT_ACTUAL_SITE_ALLOCATION | STR-04/05, ARC-07, RPT-2083 | PROPOSED_NOT_ADMITTED_TO_APPROVED_WBS | FS | 0 | 203 | 204 | 208 | 207 | 4 |  | HAR-0405, HAR-0430 |  |
| HAR-0439 | HAR.PLINTH.BAY-05 | PLINTH | BAY-05 | Plinth beam / tie beam soffit shuttering and supports | 2 | ILLUSTRATIVE_CREW_PLANNING_SEED_NOT_APPROVED | NOT_MEASURED | FORMWORK | REFERENCE_ONLY_NOT_ACTUAL_SITE_ALLOCATION | STR-04/05, ARC-07, RPT-2083 | PROPOSED_NOT_ADMITTED_TO_APPROVED_WBS | FS | 0 | 208 | 210 | 210 | 208 | 0 | True | HAR-0438, HAR-0431 |  |
| HAR-0440 | HAR.PLINTH.BAY-05 | PLINTH | BAY-05 | Plinth beams longitudinal bars, shear links and junction steel | 2 | ILLUSTRATIVE_CREW_PLANNING_SEED_NOT_APPROVED | NOT_MEASURED | REBAR | REFERENCE_ONLY_NOT_ACTUAL_SITE_ALLOCATION | STR-04/05, ARC-07, RPT-2083 | PROPOSED_NOT_ADMITTED_TO_APPROVED_WBS | FS | 0 | 210 | 212 | 212 | 210 | 0 | True | HAR-0439, HAR-0432 |  |
| HAR-0441 | HAR.PLINTH.BAY-05 | PLINTH | BAY-05 | Plinth services sleeves, electrical earth provision and embedment | 1 | ILLUSTRATIVE_CREW_PLANNING_SEED_NOT_APPROVED | NOT_MEASURED | MEP_COORDINATION | REFERENCE_ONLY_NOT_ACTUAL_SITE_ALLOCATION | STR-04/05, ARC-07, RPT-2083 | PROPOSED_NOT_ADMITTED_TO_APPROVED_WBS | FS | 0 | 212 | 213 | 213 | 212 | 0 | True | HAR-0440, HAR-0433 |  |
| HAR-0442 | HAR.PLINTH.BAY-05 | PLINTH | BAY-05 | Pre-pour plinth inspection: tie details, cover, offsets, embeds | 0 | MILESTONE_ZERO_DURATION | NOT_MEASURED | ENGINEER_INSPECTION | REFERENCE_ONLY_NOT_ACTUAL_SITE_ALLOCATION | STR-04/05, ARC-07, RPT-2083 | PROPOSED_NOT_ADMITTED_TO_APPROVED_WBS | FS | 0 | 213 | 213 | 213 | 213 | 0 | True | HAR-0441, HAR-0434 | True |
| HAR-0443 | HAR.PLINTH.BAY-05 | PLINTH | BAY-05 | Plinth beam M25 concrete placement and tests | 1 | ILLUSTRATIVE_CREW_PLANNING_SEED_NOT_APPROVED | NOT_MEASURED | CONCRETE | REFERENCE_ONLY_NOT_ACTUAL_SITE_ALLOCATION | STR-04/05, ARC-07, RPT-2083 | PROPOSED_NOT_ADMITTED_TO_APPROVED_WBS | FS | 0 | 213 | 214 | 214 | 213 | 0 | True | HAR-0442, HAR-0435 |  |
| HAR-0444 | HAR.PLINTH.BAY-05 | PLINTH | BAY-05 | Plinth curing and support monitoring | 2 | ILLUSTRATIVE_CREW_PLANNING_SEED_NOT_APPROVED | NOT_MEASURED | CONCRETE | REFERENCE_ONLY_NOT_ACTUAL_SITE_ALLOCATION | STR-04/05, ARC-07, RPT-2083 | PROPOSED_NOT_ADMITTED_TO_APPROVED_WBS | FS | 0 | 214 | 216 | 216 | 214 | 0 | True | HAR-0443, HAR-0436 |  |
| HAR-0445 | HAR.PLINTH.BAY-05 | PLINTH | BAY-05 | Plinth beams inspection and level QA | 0 | MILESTONE_ZERO_DURATION | NOT_MEASURED | ENGINEER_INSPECTION | REFERENCE_ONLY_NOT_ACTUAL_SITE_ALLOCATION | STR-04/05, ARC-07, RPT-2083 | PROPOSED_NOT_ADMITTED_TO_APPROVED_WBS | FS | 0 | 216 | 216 | 218 | 218 | 2 |  | HAR-0444, HAR-0437 | True |
| HAR-0446 | HAR.PLINTH.BAY-06 | PLINTH | BAY-06 | Plinth beam alignment and level set-out | 1 | ILLUSTRATIVE_CREW_PLANNING_SEED_NOT_APPROVED | NOT_MEASURED | SURVEY | REFERENCE_ONLY_NOT_ACTUAL_SITE_ALLOCATION | STR-04/05, ARC-07, RPT-2083 | PROPOSED_NOT_ADMITTED_TO_APPROVED_WBS | FS | 0 | 204 | 205 | 210 | 209 | 5 |  | HAR-0405, HAR-0438 |  |
| HAR-0447 | HAR.PLINTH.BAY-06 | PLINTH | BAY-06 | Plinth beam / tie beam soffit shuttering and supports | 2 | ILLUSTRATIVE_CREW_PLANNING_SEED_NOT_APPROVED | NOT_MEASURED | FORMWORK | REFERENCE_ONLY_NOT_ACTUAL_SITE_ALLOCATION | STR-04/05, ARC-07, RPT-2083 | PROPOSED_NOT_ADMITTED_TO_APPROVED_WBS | FS | 0 | 210 | 212 | 212 | 210 | 0 | True | HAR-0446, HAR-0439 |  |
| HAR-0448 | HAR.PLINTH.BAY-06 | PLINTH | BAY-06 | Plinth beams longitudinal bars, shear links and junction steel | 2 | ILLUSTRATIVE_CREW_PLANNING_SEED_NOT_APPROVED | NOT_MEASURED | REBAR | REFERENCE_ONLY_NOT_ACTUAL_SITE_ALLOCATION | STR-04/05, ARC-07, RPT-2083 | PROPOSED_NOT_ADMITTED_TO_APPROVED_WBS | FS | 0 | 212 | 214 | 214 | 212 | 0 | True | HAR-0447, HAR-0440 |  |
| HAR-0449 | HAR.PLINTH.BAY-06 | PLINTH | BAY-06 | Plinth services sleeves, electrical earth provision and embedment | 1 | ILLUSTRATIVE_CREW_PLANNING_SEED_NOT_APPROVED | NOT_MEASURED | MEP_COORDINATION | REFERENCE_ONLY_NOT_ACTUAL_SITE_ALLOCATION | STR-04/05, ARC-07, RPT-2083 | PROPOSED_NOT_ADMITTED_TO_APPROVED_WBS | FS | 0 | 214 | 215 | 215 | 214 | 0 | True | HAR-0448, HAR-0441 |  |
| HAR-0450 | HAR.PLINTH.BAY-06 | PLINTH | BAY-06 | Pre-pour plinth inspection: tie details, cover, offsets, embeds | 0 | MILESTONE_ZERO_DURATION | NOT_MEASURED | ENGINEER_INSPECTION | REFERENCE_ONLY_NOT_ACTUAL_SITE_ALLOCATION | STR-04/05, ARC-07, RPT-2083 | PROPOSED_NOT_ADMITTED_TO_APPROVED_WBS | FS | 0 | 215 | 215 | 215 | 215 | 0 | True | HAR-0449, HAR-0442 | True |
| HAR-0451 | HAR.PLINTH.BAY-06 | PLINTH | BAY-06 | Plinth beam M25 concrete placement and tests | 1 | ILLUSTRATIVE_CREW_PLANNING_SEED_NOT_APPROVED | NOT_MEASURED | CONCRETE | REFERENCE_ONLY_NOT_ACTUAL_SITE_ALLOCATION | STR-04/05, ARC-07, RPT-2083 | PROPOSED_NOT_ADMITTED_TO_APPROVED_WBS | FS | 0 | 215 | 216 | 216 | 215 | 0 | True | HAR-0450, HAR-0443 |  |
| HAR-0452 | HAR.PLINTH.BAY-06 | PLINTH | BAY-06 | Plinth curing and support monitoring | 2 | ILLUSTRATIVE_CREW_PLANNING_SEED_NOT_APPROVED | NOT_MEASURED | CONCRETE | REFERENCE_ONLY_NOT_ACTUAL_SITE_ALLOCATION | STR-04/05, ARC-07, RPT-2083 | PROPOSED_NOT_ADMITTED_TO_APPROVED_WBS | FS | 0 | 216 | 218 | 218 | 216 | 0 | True | HAR-0451, HAR-0444 |  |
| HAR-0453 | HAR.PLINTH.BAY-06 | PLINTH | BAY-06 | Plinth beams inspection and level QA | 0 | MILESTONE_ZERO_DURATION | NOT_MEASURED | ENGINEER_INSPECTION | REFERENCE_ONLY_NOT_ACTUAL_SITE_ALLOCATION | STR-04/05, ARC-07, RPT-2083 | PROPOSED_NOT_ADMITTED_TO_APPROVED_WBS | FS | 0 | 218 | 218 | 218 | 218 | 0 | True | HAR-0452, HAR-0445 | True |
| HAR-0454 | HAR.MILESTONES.PLINTH | MILESTONES | PLINTH | Plinth/superstructure launch approval gate | 0 | MILESTONE_ZERO_DURATION | NOT_MEASURED | GENERAL_CIVIL_REFERENCE | REFERENCE_ONLY_NOT_ACTUAL_SITE_ALLOCATION | ARC-2026, STR-2026, RPT-2083, NEP-DUDBC-2081 | PROPOSED_NOT_ADMITTED_TO_APPROVED_WBS | FS | 0 | 218 | 218 | 218 | 218 | 0 | True | HAR-0413, HAR-0421, HAR-0429, HAR-0437, HAR-0445, HAR-0453 | True |
| HAR-0455 | HAR.SUPERSTRUCTURE.GROUND | SUPERSTRUCTURE | GROUND | Ground floor: Level/grid set-out and survey acceptance | 1 | ILLUSTRATIVE_CREW_PLANNING_SEED_NOT_APPROVED | NOT_MEASURED | SURVEY | REFERENCE_ONLY_NOT_ACTUAL_SITE_ALLOCATION | ARC-02/05, STR-03/17, RPT-2083 | PROPOSED_NOT_ADMITTED_TO_APPROVED_WBS | FS | 0 | 218 | 219 | 219 | 218 | 0 | True | HAR-0454 |  |
| HAR-0456 | HAR.SUPERSTRUCTURE.GROUND | SUPERSTRUCTURE | GROUND | Ground floor: Working platform, access/scaffold / fall protection | 2 | ILLUSTRATIVE_CREW_PLANNING_SEED_NOT_APPROVED | NOT_MEASURED | FORMWORK | REFERENCE_ONLY_NOT_ACTUAL_SITE_ALLOCATION | ARC-02/05, STR-03/17, RPT-2083 | PROPOSED_NOT_ADMITTED_TO_APPROVED_WBS | FS | 0 | 219 | 221 | 221 | 219 | 0 | True | HAR-0455 |  |
| HAR-0457 | HAR.SUPERSTRUCTURE.GROUND | SUPERSTRUCTURE | GROUND | Ground floor: Column reinforcement cutting/bending and splice checks | 2 | ILLUSTRATIVE_CREW_PLANNING_SEED_NOT_APPROVED | NOT_MEASURED | REBAR | REFERENCE_ONLY_NOT_ACTUAL_SITE_ALLOCATION | ARC-02/05, STR-03/17, RPT-2083 | PROPOSED_NOT_ADMITTED_TO_APPROVED_WBS | FS | 0 | 221 | 223 | 223 | 221 | 0 | True | HAR-0456 |  |
| HAR-0458 | HAR.SUPERSTRUCTURE.GROUND | SUPERSTRUCTURE | GROUND | Ground floor: Column tie/confinement six-leg detail inspection | 0 | MILESTONE_ZERO_DURATION | NOT_MEASURED | ENGINEER_INSPECTION | REFERENCE_ONLY_NOT_ACTUAL_SITE_ALLOCATION | ARC-02/05, STR-03/17, RPT-2083 | PROPOSED_NOT_ADMITTED_TO_APPROVED_WBS | FS | 0 | 223 | 223 | 223 | 223 | 0 | True | HAR-0457 | True |
| HAR-0459 | HAR.SUPERSTRUCTURE.GROUND | SUPERSTRUCTURE | GROUND | Ground floor: Column shutter, line and verticality | 2 | ILLUSTRATIVE_CREW_PLANNING_SEED_NOT_APPROVED | NOT_MEASURED | FORMWORK | REFERENCE_ONLY_NOT_ACTUAL_SITE_ALLOCATION | ARC-02/05, STR-03/17, RPT-2083 | PROPOSED_NOT_ADMITTED_TO_APPROVED_WBS | FS | 0 | 223 | 225 | 225 | 223 | 0 | True | HAR-0458 |  |
| HAR-0460 | HAR.SUPERSTRUCTURE.GROUND | SUPERSTRUCTURE | GROUND | Ground floor: Column M25 pour, vibration and samples | 1 | ILLUSTRATIVE_CREW_PLANNING_SEED_NOT_APPROVED | NOT_MEASURED | CONCRETE | REFERENCE_ONLY_NOT_ACTUAL_SITE_ALLOCATION | ARC-02/05, STR-03/17, RPT-2083 | PROPOSED_NOT_ADMITTED_TO_APPROVED_WBS | FS | 0 | 225 | 226 | 226 | 225 | 0 | True | HAR-0459 |  |
| HAR-0461 | HAR.SUPERSTRUCTURE.GROUND | SUPERSTRUCTURE | GROUND | Ground floor: Column/beam junction strength/strip hold | 2 | ILLUSTRATIVE_CREW_PLANNING_SEED_NOT_APPROVED | NOT_MEASURED | ENGINEER_INSPECTION | REFERENCE_ONLY_NOT_ACTUAL_SITE_ALLOCATION | ARC-02/05, STR-03/17, RPT-2083 | PROPOSED_NOT_ADMITTED_TO_APPROVED_WBS | FS | 0 | 226 | 228 | 228 | 226 | 0 | True | HAR-0460 |  |
| HAR-0462 | HAR.SUPERSTRUCTURE.GROUND | SUPERSTRUCTURE | GROUND | Ground floor: Shear/lift wall reinforcement and boundary elements | 2 | ILLUSTRATIVE_CREW_PLANNING_SEED_NOT_APPROVED | NOT_MEASURED | REBAR | REFERENCE_ONLY_NOT_ACTUAL_SITE_ALLOCATION | ARC-02/05, STR-03/17, RPT-2083 | PROPOSED_NOT_ADMITTED_TO_APPROVED_WBS | FS | 0 | 228 | 230 | 230 | 228 | 0 | True | HAR-0461 |  |
| HAR-0463 | HAR.SUPERSTRUCTURE.GROUND | SUPERSTRUCTURE | GROUND | Ground floor: Shear/lift wall embedded plates, boxes, sleeves | 1 | ILLUSTRATIVE_CREW_PLANNING_SEED_NOT_APPROVED | NOT_MEASURED | MEP_COORDINATION | REFERENCE_ONLY_NOT_ACTUAL_SITE_ALLOCATION | ARC-02/05, STR-03/17, RPT-2083 | PROPOSED_NOT_ADMITTED_TO_APPROVED_WBS | FS | 0 | 230 | 231 | 231 | 230 | 0 | True | HAR-0462 |  |
| HAR-0464 | HAR.SUPERSTRUCTURE.GROUND | SUPERSTRUCTURE | GROUND | Ground floor: Shear/lift wall formwork and inspection | 1 | ILLUSTRATIVE_CREW_PLANNING_SEED_NOT_APPROVED | NOT_MEASURED | FORMWORK | REFERENCE_ONLY_NOT_ACTUAL_SITE_ALLOCATION | ARC-02/05, STR-03/17, RPT-2083 | PROPOSED_NOT_ADMITTED_TO_APPROVED_WBS | FS | 0 | 231 | 232 | 232 | 231 | 0 | True | HAR-0463 |  |
| HAR-0465 | HAR.SUPERSTRUCTURE.GROUND | SUPERSTRUCTURE | GROUND | Ground floor: Shear/lift wall M25 pour and tests | 1 | ILLUSTRATIVE_CREW_PLANNING_SEED_NOT_APPROVED | NOT_MEASURED | CONCRETE | REFERENCE_ONLY_NOT_ACTUAL_SITE_ALLOCATION | ARC-02/05, STR-03/17, RPT-2083 | PROPOSED_NOT_ADMITTED_TO_APPROVED_WBS | FS | 0 | 232 | 233 | 233 | 232 | 0 | True | HAR-0464 |  |
| HAR-0466 | HAR.SUPERSTRUCTURE.GROUND | SUPERSTRUCTURE | GROUND | Ground floor: Beam soffit formwork, props and deck platforms | 3 | ILLUSTRATIVE_CREW_PLANNING_SEED_NOT_APPROVED | NOT_MEASURED | FORMWORK | REFERENCE_ONLY_NOT_ACTUAL_SITE_ALLOCATION | ARC-02/05, STR-03/17, RPT-2083 | PROPOSED_NOT_ADMITTED_TO_APPROVED_WBS | FS | 0 | 233 | 236 | 236 | 233 | 0 | True | HAR-0465 |  |
| HAR-0467 | HAR.SUPERSTRUCTURE.GROUND | SUPERSTRUCTURE | GROUND | Ground floor: Slab deck, openings, stair flights and terrace edge shuttering | 3 | ILLUSTRATIVE_CREW_PLANNING_SEED_NOT_APPROVED | NOT_MEASURED | FORMWORK | REFERENCE_ONLY_NOT_ACTUAL_SITE_ALLOCATION | ARC-02/05, STR-03/17, RPT-2083 | PROPOSED_NOT_ADMITTED_TO_APPROVED_WBS | FS | 0 | 236 | 239 | 239 | 236 | 0 | True | HAR-0466 |  |
| HAR-0468 | HAR.SUPERSTRUCTURE.GROUND | SUPERSTRUCTURE | GROUND | Ground floor: Beam flexural and shear reinforcement including junction continuity | 3 | ILLUSTRATIVE_CREW_PLANNING_SEED_NOT_APPROVED | NOT_MEASURED | REBAR | REFERENCE_ONLY_NOT_ACTUAL_SITE_ALLOCATION | ARC-02/05, STR-03/17, RPT-2083 | PROPOSED_NOT_ADMITTED_TO_APPROVED_WBS | FS | 0 | 239 | 242 | 242 | 239 | 0 | True | HAR-0467 |  |
| HAR-0469 | HAR.SUPERSTRUCTURE.GROUND | SUPERSTRUCTURE | GROUND | Ground floor: Slab top/bottom mats, extra bars and staircase steel | 3 | ILLUSTRATIVE_CREW_PLANNING_SEED_NOT_APPROVED | NOT_MEASURED | REBAR | REFERENCE_ONLY_NOT_ACTUAL_SITE_ALLOCATION | ARC-02/05, STR-03/17, RPT-2083 | PROPOSED_NOT_ADMITTED_TO_APPROVED_WBS | FS | 0 | 242 | 245 | 245 | 242 | 0 | True | HAR-0468 |  |
| HAR-0470 | HAR.SUPERSTRUCTURE.GROUND | SUPERSTRUCTURE | GROUND | Ground floor: Electrical conduits, plumbing sleeves and floor penetrations | 2 | ILLUSTRATIVE_CREW_PLANNING_SEED_NOT_APPROVED | NOT_MEASURED | MEP_COORDINATION | REFERENCE_ONLY_NOT_ACTUAL_SITE_ALLOCATION | ARC-02/05, STR-03/17, RPT-2083 | PROPOSED_NOT_ADMITTED_TO_APPROVED_WBS | FS | 0 | 245 | 247 | 247 | 245 | 0 | True | HAR-0469 |  |
| HAR-0471 | HAR.SUPERSTRUCTURE.GROUND | SUPERSTRUCTURE | GROUND | Ground floor: Beam/slab/stair formwork & steel hold-point inspection | 0 | MILESTONE_ZERO_DURATION | NOT_MEASURED | ENGINEER_INSPECTION | REFERENCE_ONLY_NOT_ACTUAL_SITE_ALLOCATION | ARC-02/05, STR-03/17, RPT-2083 | PROPOSED_NOT_ADMITTED_TO_APPROVED_WBS | FS | 0 | 247 | 247 | 247 | 247 | 0 | True | HAR-0470 | True |
| HAR-0472 | HAR.SUPERSTRUCTURE.GROUND | SUPERSTRUCTURE | GROUND | Ground floor: M25 beam/slab/stair placement, slump/cubes and leveling | 2 | ILLUSTRATIVE_CREW_PLANNING_SEED_NOT_APPROVED | PROVISIONAL_GEOMETRY_FROM_SOURCE | CONCRETE | REFERENCE_ONLY_NOT_ACTUAL_SITE_ALLOCATION | ARC-02/05, STR-03/17, RPT-2083 | PROPOSED_NOT_ADMITTED_TO_APPROVED_WBS | FS | 0 | 247 | 249 | 249 | 247 | 0 | True | HAR-0471 |  |
| HAR-0473 | HAR.SUPERSTRUCTURE.GROUND | SUPERSTRUCTURE | GROUND | Ground floor: Curing, prop-retention and construction-load control | 7 | ILLUSTRATIVE_CREW_PLANNING_SEED_NOT_APPROVED | NOT_MEASURED | CONCRETE | REFERENCE_ONLY_NOT_ACTUAL_SITE_ALLOCATION | ARC-02/05, STR-03/17, RPT-2083 | PROPOSED_NOT_ADMITTED_TO_APPROVED_WBS | FS | 0 | 249 | 256 | 256 | 249 | 0 | True | HAR-0472 |  |
| HAR-0474 | HAR.SUPERSTRUCTURE.GROUND | SUPERSTRUCTURE | GROUND | Ground floor: Structural pour and dimensional QA hold | 0 | MILESTONE_ZERO_DURATION | NOT_MEASURED | ENGINEER_INSPECTION | REFERENCE_ONLY_NOT_ACTUAL_SITE_ALLOCATION | ARC-02/05, STR-03/17, RPT-2083 | PROPOSED_NOT_ADMITTED_TO_APPROVED_WBS | FS | 0 | 256 | 256 | 256 | 256 | 0 | True | HAR-0473 | True |
| HAR-0475 | HAR.MASONRY.GROUND | MASONRY | GROUND | Ground floor: Masonry set-out, openings and wall thickness check | 1 | ILLUSTRATIVE_CREW_PLANNING_SEED_NOT_APPROVED | NOT_MEASURED | SURVEY | REFERENCE_ONLY_NOT_ACTUAL_SITE_ALLOCATION | ARC-02/05, CAD-R000002-PROVISIONAL | PROPOSED_NOT_ADMITTED_TO_APPROVED_WBS | FS | 0 | 256 | 257 | 411 | 410 | 154 |  | HAR-0474 |  |
| HAR-0476 | HAR.MASONRY.GROUND | MASONRY | GROUND | Ground floor: Masonry material sampling, wetting and mortar preparation | 1 | ILLUSTRATIVE_CREW_PLANNING_SEED_NOT_APPROVED | NOT_MEASURED | MASONRY | REFERENCE_ONLY_NOT_ACTUAL_SITE_ALLOCATION | ARC-02/05, CAD-R000002-PROVISIONAL | PROPOSED_NOT_ADMITTED_TO_APPROVED_WBS | FS | 0 | 257 | 258 | 412 | 411 | 154 |  | HAR-0475 |  |
| HAR-0477 | HAR.MASONRY.GROUND | MASONRY | GROUND | Ground floor: External wall masonry lifts incl. lintel interface | 4 | ILLUSTRATIVE_CREW_PLANNING_SEED_NOT_APPROVED | NOT_MEASURED | MASONRY | REFERENCE_ONLY_NOT_ACTUAL_SITE_ALLOCATION | ARC-02/05, CAD-R000002-PROVISIONAL | PROPOSED_NOT_ADMITTED_TO_APPROVED_WBS | FS | 0 | 258 | 262 | 416 | 412 | 154 |  | HAR-0476 |  |
| HAR-0478 | HAR.MASONRY.GROUND | MASONRY | GROUND | Ground floor: Internal partition masonry lifts and ties | 3 | ILLUSTRATIVE_CREW_PLANNING_SEED_NOT_APPROVED | NOT_MEASURED | MASONRY | REFERENCE_ONLY_NOT_ACTUAL_SITE_ALLOCATION | ARC-02/05, CAD-R000002-PROVISIONAL | PROPOSED_NOT_ADMITTED_TO_APPROVED_WBS | FS | 0 | 262 | 265 | 419 | 416 | 154 |  | HAR-0477 |  |
| HAR-0479 | HAR.MASONRY.GROUND | MASONRY | GROUND | Ground floor: Door and window opening verification with schedules | 1 | ILLUSTRATIVE_CREW_PLANNING_SEED_NOT_APPROVED | NOT_MEASURED | SURVEY | REFERENCE_ONLY_NOT_ACTUAL_SITE_ALLOCATION | ARC-02/05, CAD-R000002-PROVISIONAL | PROPOSED_NOT_ADMITTED_TO_APPROVED_WBS | FS | 0 | 265 | 266 | 420 | 419 | 154 |  | HAR-0478 |  |
| HAR-0480 | HAR.MASONRY.GROUND | MASONRY | GROUND | Ground floor: Nonstructural wall hold / seismic separation check | 0 | MILESTONE_ZERO_DURATION | NOT_MEASURED | ENGINEER_INSPECTION | REFERENCE_ONLY_NOT_ACTUAL_SITE_ALLOCATION | ARC-02/05, CAD-R000002-PROVISIONAL | PROPOSED_NOT_ADMITTED_TO_APPROVED_WBS | FS | 0 | 266 | 266 | 420 | 420 | 154 |  | HAR-0479 | True |
| HAR-0481 | HAR.MASONRY.GROUND | MASONRY | GROUND | Ground floor: Internal and external chasing coordinates agreed with MEP | 1 | ILLUSTRATIVE_CREW_PLANNING_SEED_NOT_APPROVED | NOT_MEASURED | MEP_COORDINATION | REFERENCE_ONLY_NOT_ACTUAL_SITE_ALLOCATION | ARC-02/05, CAD-R000002-PROVISIONAL | PROPOSED_NOT_ADMITTED_TO_APPROVED_WBS | FS | 0 | 266 | 267 | 421 | 420 | 154 |  | HAR-0480 |  |
| HAR-0482 | HAR.MEP_ROUGH_IN.GROUND | MEP_ROUGH_IN | GROUND | Ground floor: MEP floor drawing coordination and ceiling-zone clash review | 2 | ILLUSTRATIVE_CREW_PLANNING_SEED_NOT_APPROVED | NOT_MEASURED | MEP_COORDINATION | REFERENCE_ONLY_NOT_ACTUAL_SITE_ALLOCATION | ARC-02/05, DUDBC-2081, SCOPE_TO_CONFIRM | PROPOSED_NOT_ADMITTED_TO_APPROVED_WBS | FS | 0 | 267 | 269 | 423 | 421 | 154 |  | HAR-0481, HAR-0054, HAR-0055, HAR-0056, HAR-0058 |  |
| HAR-0483 | HAR.MEP_ROUGH_IN.GROUND | MEP_ROUGH_IN | GROUND | Ground floor: Drainage stack riser supports and sleeve installation | 2 | ILLUSTRATIVE_CREW_PLANNING_SEED_NOT_APPROVED | NOT_MEASURED | PLUMBING | REFERENCE_ONLY_NOT_ACTUAL_SITE_ALLOCATION | ARC-02/05, DUDBC-2081, SCOPE_TO_CONFIRM | PROPOSED_NOT_ADMITTED_TO_APPROVED_WBS | FS | 0 | 269 | 271 | 425 | 423 | 154 |  | HAR-0482 |  |
| HAR-0484 | HAR.MEP_ROUGH_IN.GROUND | MEP_ROUGH_IN | GROUND | Ground floor: Cold water distribution and pressure-line rough in | 2 | ILLUSTRATIVE_CREW_PLANNING_SEED_NOT_APPROVED | NOT_MEASURED | PLUMBING | REFERENCE_ONLY_NOT_ACTUAL_SITE_ALLOCATION | ARC-02/05, DUDBC-2081, SCOPE_TO_CONFIRM | PROPOSED_NOT_ADMITTED_TO_APPROVED_WBS | FS | 0 | 271 | 273 | 427 | 425 | 154 |  | HAR-0483 |  |
| HAR-0485 | HAR.MEP_ROUGH_IN.GROUND | MEP_ROUGH_IN | GROUND | Ground floor: Soil/waste/vent pipe branches and floor traps | 2 | ILLUSTRATIVE_CREW_PLANNING_SEED_NOT_APPROVED | NOT_MEASURED | PLUMBING | REFERENCE_ONLY_NOT_ACTUAL_SITE_ALLOCATION | ARC-02/05, DUDBC-2081, SCOPE_TO_CONFIRM | PROPOSED_NOT_ADMITTED_TO_APPROVED_WBS | FS | 0 | 273 | 275 | 429 | 427 | 154 |  | HAR-0484 |  |
| HAR-0486 | HAR.MEP_ROUGH_IN.GROUND | MEP_ROUGH_IN | GROUND | Ground floor: Sanitary wall sleeve, shaft access and cleanout placement | 1 | ILLUSTRATIVE_CREW_PLANNING_SEED_NOT_APPROVED | NOT_MEASURED | PLUMBING | REFERENCE_ONLY_NOT_ACTUAL_SITE_ALLOCATION | ARC-02/05, DUDBC-2081, SCOPE_TO_CONFIRM | PROPOSED_NOT_ADMITTED_TO_APPROVED_WBS | FS | 0 | 275 | 276 | 430 | 429 | 154 |  | HAR-0485 |  |
| HAR-0487 | HAR.MEP_ROUGH_IN.GROUND | MEP_ROUGH_IN | GROUND | Ground floor: Electrical concealed conduit and switchboard rough in | 2 | ILLUSTRATIVE_CREW_PLANNING_SEED_NOT_APPROVED | NOT_MEASURED | ELECTRICAL | REFERENCE_ONLY_NOT_ACTUAL_SITE_ALLOCATION | ARC-02/05, DUDBC-2081, SCOPE_TO_CONFIRM | PROPOSED_NOT_ADMITTED_TO_APPROVED_WBS | FS | 0 | 276 | 278 | 432 | 430 | 154 |  | HAR-0486 |  |
| HAR-0488 | HAR.MEP_ROUGH_IN.GROUND | MEP_ROUGH_IN | GROUND | Ground floor: Electrical riser ducts, earthing/bonding rough in | 2 | ILLUSTRATIVE_CREW_PLANNING_SEED_NOT_APPROVED | NOT_MEASURED | ELECTRICAL | REFERENCE_ONLY_NOT_ACTUAL_SITE_ALLOCATION | ARC-02/05, DUDBC-2081, SCOPE_TO_CONFIRM | PROPOSED_NOT_ADMITTED_TO_APPROVED_WBS | FS | 0 | 278 | 280 | 434 | 432 | 154 |  | HAR-0487 |  |
| HAR-0489 | HAR.MEP_ROUGH_IN.GROUND | MEP_ROUGH_IN | GROUND | Ground floor: Fire detection/alarm conduits and interfaces | 2 | ILLUSTRATIVE_CREW_PLANNING_SEED_NOT_APPROVED | NOT_MEASURED | FIRE | REFERENCE_ONLY_NOT_ACTUAL_SITE_ALLOCATION | ARC-02/05, DUDBC-2081, SCOPE_TO_CONFIRM | PROPOSED_NOT_ADMITTED_TO_APPROVED_WBS | FS | 0 | 280 | 282 | 436 | 434 | 154 |  | HAR-0488 |  |
| HAR-0490 | HAR.MEP_ROUGH_IN.GROUND | MEP_ROUGH_IN | GROUND | Ground floor: Emergency/exit-lighting circuits rough in | 1 | ILLUSTRATIVE_CREW_PLANNING_SEED_NOT_APPROVED | NOT_MEASURED | ELECTRICAL | REFERENCE_ONLY_NOT_ACTUAL_SITE_ALLOCATION | ARC-02/05, DUDBC-2081, SCOPE_TO_CONFIRM | PROPOSED_NOT_ADMITTED_TO_APPROVED_WBS | FS | 0 | 282 | 283 | 437 | 436 | 154 |  | HAR-0489 |  |

| activity_id | wbs | phase | scope | title | duration_workdays | duration_basis | quantity_basis | crew_category | crew_basis | source_refs | status | logic_type | lag_workdays | planned_start_workday | planned_finish_workday | latest_finish_workday | latest_start_workday | total_float_workdays | critical | predecessor_ids | engineering_hold |
| --- | --- | --- | --- | --- | --- | --- | --- | --- | --- | --- | --- | --- | --- | --- | --- | --- | --- | --- | --- | --- | --- |
| HAR-0491 | HAR.MEP_ROUGH_IN.GROUND | MEP_ROUGH_IN | GROUND | Ground floor: Telecom/data/CCTV service raceway rough in (if in scope) | 2 | ILLUSTRATIVE_CREW_PLANNING_SEED_NOT_APPROVED | NOT_MEASURED | LOW_VOLTAGE | REFERENCE_ONLY_NOT_ACTUAL_SITE_ALLOCATION | ARC-02/05, DUDBC-2081, SCOPE_TO_CONFIRM | PROPOSED_NOT_ADMITTED_TO_APPROVED_WBS | FS | 0 | 283 | 285 | 439 | 437 | 154 |  | HAR-0490 |  |
| HAR-0492 | HAR.MEP_ROUGH_IN.GROUND | MEP_ROUGH_IN | GROUND | Ground floor: Ventilation / exhaust pathways and shafts (subject to design) | 2 | ILLUSTRATIVE_CREW_PLANNING_SEED_NOT_APPROVED | NOT_MEASURED | VENTILATION | REFERENCE_ONLY_NOT_ACTUAL_SITE_ALLOCATION | ARC-02/05, DUDBC-2081, SCOPE_TO_CONFIRM | PROPOSED_NOT_ADMITTED_TO_APPROVED_WBS | FS | 0 | 285 | 287 | 441 | 439 | 154 |  | HAR-0491 |  |
| HAR-0493 | HAR.MEP_ROUGH_IN.GROUND | MEP_ROUGH_IN | GROUND | Ground floor: Lift shaft dimension, embed and access coordination (where applicable) | 1 | ILLUSTRATIVE_CREW_PLANNING_SEED_NOT_APPROVED | NOT_MEASURED | LIFT | REFERENCE_ONLY_NOT_ACTUAL_SITE_ALLOCATION | ARC-02/05, DUDBC-2081, SCOPE_TO_CONFIRM | PROPOSED_NOT_ADMITTED_TO_APPROVED_WBS | FS | 0 | 287 | 288 | 442 | 441 | 154 |  | HAR-0492 |  |
| HAR-0494 | HAR.MEP_ROUGH_IN.GROUND | MEP_ROUGH_IN | GROUND | Ground floor: MEP pressure/leak tests before plaster | 0 | MILESTONE_ZERO_DURATION | NOT_MEASURED | INSPECTION | REFERENCE_ONLY_NOT_ACTUAL_SITE_ALLOCATION | ARC-02/05, DUDBC-2081, SCOPE_TO_CONFIRM | PROPOSED_NOT_ADMITTED_TO_APPROVED_WBS | FS | 0 | 288 | 288 | 442 | 442 | 154 |  | HAR-0493 | True |
| HAR-0495 | HAR.MEP_ROUGH_IN.GROUND | MEP_ROUGH_IN | GROUND | Ground floor: MEP cable continuity and conduit inspection hold | 0 | MILESTONE_ZERO_DURATION | NOT_MEASURED | INSPECTION | REFERENCE_ONLY_NOT_ACTUAL_SITE_ALLOCATION | ARC-02/05, DUDBC-2081, SCOPE_TO_CONFIRM | PROPOSED_NOT_ADMITTED_TO_APPROVED_WBS | FS | 0 | 288 | 288 | 442 | 442 | 154 |  | HAR-0494 | True |
| HAR-0496 | HAR.MEP_ROUGH_IN.GROUND | MEP_ROUGH_IN | GROUND | Ground floor: Repair chase cuts and firestop service penetrations | 1 | ILLUSTRATIVE_CREW_PLANNING_SEED_NOT_APPROVED | NOT_MEASURED | MASONRY | REFERENCE_ONLY_NOT_ACTUAL_SITE_ALLOCATION | ARC-02/05, DUDBC-2081, SCOPE_TO_CONFIRM | PROPOSED_NOT_ADMITTED_TO_APPROVED_WBS | FS | 0 | 288 | 289 | 443 | 442 | 154 |  | HAR-0495 |  |
| HAR-0497 | HAR.MEP_ROUGH_IN.GROUND | MEP_ROUGH_IN | GROUND | Ground floor: MEP first-fix release milestone | 0 | MILESTONE_ZERO_DURATION | NOT_MEASURED | INSPECTION | REFERENCE_ONLY_NOT_ACTUAL_SITE_ALLOCATION | ARC-02/05, DUDBC-2081, SCOPE_TO_CONFIRM | PROPOSED_NOT_ADMITTED_TO_APPROVED_WBS | FS | 0 | 289 | 289 | 443 | 443 | 154 |  | HAR-0496 | True |
| HAR-0498 | HAR.FINISHES.GROUND | FINISHES | GROUND | Ground floor: Wet area screed and falls inspection | 2 | ILLUSTRATIVE_CREW_PLANNING_SEED_NOT_APPROVED | NOT_MEASURED | FLOORING | REFERENCE_ONLY_NOT_ACTUAL_SITE_ALLOCATION | ARC-02/05, DUDBC-2081, SCOPE_TO_CONFIRM | PROPOSED_NOT_ADMITTED_TO_APPROVED_WBS | FS | 0 | 289 | 291 | 445 | 443 | 154 |  | HAR-0497 |  |
| HAR-0499 | HAR.FINISHES.GROUND | FINISHES | GROUND | Ground floor: Waterproofing substrate moisture / surface preparation | 2 | ILLUSTRATIVE_CREW_PLANNING_SEED_NOT_APPROVED | NOT_MEASURED | WATERPROOFING | REFERENCE_ONLY_NOT_ACTUAL_SITE_ALLOCATION | ARC-02/05, DUDBC-2081, SCOPE_TO_CONFIRM | PROPOSED_NOT_ADMITTED_TO_APPROVED_WBS | FS | 0 | 291 | 293 | 447 | 445 | 154 |  | HAR-0498, HAR-0051 |  |
| HAR-0500 | HAR.FINISHES.GROUND | FINISHES | GROUND | Ground floor: Wet area waterproofing membranes and upstands | 2 | ILLUSTRATIVE_CREW_PLANNING_SEED_NOT_APPROVED | NOT_MEASURED | WATERPROOFING | REFERENCE_ONLY_NOT_ACTUAL_SITE_ALLOCATION | ARC-02/05, DUDBC-2081, SCOPE_TO_CONFIRM | PROPOSED_NOT_ADMITTED_TO_APPROVED_WBS | FS | 0 | 293 | 295 | 449 | 447 | 154 |  | HAR-0499 |  |
| HAR-0501 | HAR.FINISHES.GROUND | FINISHES | GROUND | Ground floor: Flood test and waterproofing hold | 0 | MILESTONE_ZERO_DURATION | NOT_MEASURED | INSPECTION | REFERENCE_ONLY_NOT_ACTUAL_SITE_ALLOCATION | ARC-02/05, DUDBC-2081, SCOPE_TO_CONFIRM | PROPOSED_NOT_ADMITTED_TO_APPROVED_WBS | FS | 0 | 295 | 295 | 449 | 449 | 154 |  | HAR-0500 | True |
| HAR-0502 | HAR.FINISHES.GROUND | FINISHES | GROUND | Ground floor: Internal plaster/render to walls | 4 | ILLUSTRATIVE_CREW_PLANNING_SEED_NOT_APPROVED | NOT_MEASURED | PLASTER | REFERENCE_ONLY_NOT_ACTUAL_SITE_ALLOCATION | ARC-02/05, DUDBC-2081, SCOPE_TO_CONFIRM | PROPOSED_NOT_ADMITTED_TO_APPROVED_WBS | FS | 0 | 295 | 299 | 453 | 449 | 154 |  | HAR-0501 |  |
| HAR-0503 | HAR.FINISHES.GROUND | FINISHES | GROUND | Ground floor: External render and wall repair | 4 | ILLUSTRATIVE_CREW_PLANNING_SEED_NOT_APPROVED | NOT_MEASURED | PLASTER | REFERENCE_ONLY_NOT_ACTUAL_SITE_ALLOCATION | ARC-02/05, DUDBC-2081, SCOPE_TO_CONFIRM | PROPOSED_NOT_ADMITTED_TO_APPROVED_WBS | FS | 0 | 299 | 303 | 457 | 453 | 154 |  | HAR-0502 |  |
| HAR-0504 | HAR.FINISHES.GROUND | FINISHES | GROUND | Ground floor: Plaster curing and line/plumb QA | 2 | ILLUSTRATIVE_CREW_PLANNING_SEED_NOT_APPROVED | NOT_MEASURED | PLASTER | REFERENCE_ONLY_NOT_ACTUAL_SITE_ALLOCATION | ARC-02/05, DUDBC-2081, SCOPE_TO_CONFIRM | PROPOSED_NOT_ADMITTED_TO_APPROVED_WBS | FS | 0 | 303 | 305 | 459 | 457 | 154 |  | HAR-0503 |  |
| HAR-0505 | HAR.FINISHES.GROUND | FINISHES | GROUND | Ground floor: Floor levelling / screed and flatness checks | 2 | ILLUSTRATIVE_CREW_PLANNING_SEED_NOT_APPROVED | NOT_MEASURED | FLOORING | REFERENCE_ONLY_NOT_ACTUAL_SITE_ALLOCATION | ARC-02/05, DUDBC-2081, SCOPE_TO_CONFIRM | PROPOSED_NOT_ADMITTED_TO_APPROVED_WBS | FS | 0 | 305 | 307 | 461 | 459 | 154 |  | HAR-0504 |  |
| HAR-0506 | HAR.FINISHES.GROUND | FINISHES | GROUND | Ground floor: Ceiling suspension / plasterboard preparation where designed | 2 | ILLUSTRATIVE_CREW_PLANNING_SEED_NOT_APPROVED | NOT_MEASURED | CEILING | REFERENCE_ONLY_NOT_ACTUAL_SITE_ALLOCATION | ARC-02/05, DUDBC-2081, SCOPE_TO_CONFIRM | PROPOSED_NOT_ADMITTED_TO_APPROVED_WBS | FS | 0 | 307 | 309 | 463 | 461 | 154 |  | HAR-0505 |  |
| HAR-0507 | HAR.FINISHES.GROUND | FINISHES | GROUND | Ground floor: Floor tile/stone/finish laying | 4 | ILLUSTRATIVE_CREW_PLANNING_SEED_NOT_APPROVED | NOT_MEASURED | FLOORING | REFERENCE_ONLY_NOT_ACTUAL_SITE_ALLOCATION | ARC-02/05, DUDBC-2081, SCOPE_TO_CONFIRM | PROPOSED_NOT_ADMITTED_TO_APPROVED_WBS | FS | 0 | 309 | 313 | 467 | 463 | 154 |  | HAR-0506 |  |
| HAR-0508 | HAR.FINISHES.GROUND | FINISHES | GROUND | Ground floor: Wall tiles in wet and service areas | 3 | ILLUSTRATIVE_CREW_PLANNING_SEED_NOT_APPROVED | NOT_MEASURED | FLOORING | REFERENCE_ONLY_NOT_ACTUAL_SITE_ALLOCATION | ARC-02/05, DUDBC-2081, SCOPE_TO_CONFIRM | PROPOSED_NOT_ADMITTED_TO_APPROVED_WBS | FS | 0 | 313 | 316 | 470 | 467 | 154 |  | HAR-0507 |  |
| HAR-0509 | HAR.FINISHES.GROUND | FINISHES | GROUND | Ground floor: Door frame installation and alignment | 2 | ILLUSTRATIVE_CREW_PLANNING_SEED_NOT_APPROVED | NOT_MEASURED | JOINERY | REFERENCE_ONLY_NOT_ACTUAL_SITE_ALLOCATION | ARC-02/05, DUDBC-2081, SCOPE_TO_CONFIRM | PROPOSED_NOT_ADMITTED_TO_APPROVED_WBS | FS | 0 | 316 | 318 | 472 | 470 | 154 |  | HAR-0508, HAR-0053 |  |
| HAR-0510 | HAR.FINISHES.GROUND | FINISHES | GROUND | Ground floor: Window frame installation / flashing / sealant | 2 | ILLUSTRATIVE_CREW_PLANNING_SEED_NOT_APPROVED | NOT_MEASURED | JOINERY | REFERENCE_ONLY_NOT_ACTUAL_SITE_ALLOCATION | ARC-02/05, DUDBC-2081, SCOPE_TO_CONFIRM | PROPOSED_NOT_ADMITTED_TO_APPROVED_WBS | FS | 0 | 318 | 320 | 474 | 472 | 154 |  | HAR-0509 |  |
| HAR-0511 | HAR.FINISHES.GROUND | FINISHES | GROUND | Ground floor: Internal door leaves, hardware and locks | 2 | ILLUSTRATIVE_CREW_PLANNING_SEED_NOT_APPROVED | NOT_MEASURED | JOINERY | REFERENCE_ONLY_NOT_ACTUAL_SITE_ALLOCATION | ARC-02/05, DUDBC-2081, SCOPE_TO_CONFIRM | PROPOSED_NOT_ADMITTED_TO_APPROVED_WBS | FS | 0 | 320 | 322 | 476 | 474 | 154 |  | HAR-0510 |  |
| HAR-0512 | HAR.FINISHES.GROUND | FINISHES | GROUND | Ground floor: Electrical cable pulling, fittings, DB final connections | 2 | ILLUSTRATIVE_CREW_PLANNING_SEED_NOT_APPROVED | NOT_MEASURED | ELECTRICAL | REFERENCE_ONLY_NOT_ACTUAL_SITE_ALLOCATION | ARC-02/05, DUDBC-2081, SCOPE_TO_CONFIRM | PROPOSED_NOT_ADMITTED_TO_APPROVED_WBS | FS | 0 | 322 | 324 | 478 | 476 | 154 |  | HAR-0511 |  |
| HAR-0513 | HAR.FINISHES.GROUND | FINISHES | GROUND | Ground floor: Plumbing fixtures, valves, sanitary fittings | 2 | ILLUSTRATIVE_CREW_PLANNING_SEED_NOT_APPROVED | NOT_MEASURED | PLUMBING | REFERENCE_ONLY_NOT_ACTUAL_SITE_ALLOCATION | ARC-02/05, DUDBC-2081, SCOPE_TO_CONFIRM | PROPOSED_NOT_ADMITTED_TO_APPROVED_WBS | FS | 0 | 324 | 326 | 480 | 478 | 154 |  | HAR-0512 |  |
| HAR-0514 | HAR.FINISHES.GROUND | FINISHES | GROUND | Ground floor: Fire alarm devices, emergency lighting and first-stage checks | 2 | ILLUSTRATIVE_CREW_PLANNING_SEED_NOT_APPROVED | NOT_MEASURED | FIRE | REFERENCE_ONLY_NOT_ACTUAL_SITE_ALLOCATION | ARC-02/05, DUDBC-2081, SCOPE_TO_CONFIRM | PROPOSED_NOT_ADMITTED_TO_APPROVED_WBS | FS | 0 | 326 | 328 | 482 | 480 | 154 |  | HAR-0513 |  |
| HAR-0515 | HAR.FINISHES.GROUND | FINISHES | GROUND | Ground floor: Surface primer, putty and finish coats | 3 | ILLUSTRATIVE_CREW_PLANNING_SEED_NOT_APPROVED | NOT_MEASURED | PAINTING | REFERENCE_ONLY_NOT_ACTUAL_SITE_ALLOCATION | ARC-02/05, DUDBC-2081, SCOPE_TO_CONFIRM | PROPOSED_NOT_ADMITTED_TO_APPROVED_WBS | FS | 0 | 328 | 331 | 485 | 482 | 154 |  | HAR-0514 |  |
| HAR-0516 | HAR.FINISHES.GROUND | FINISHES | GROUND | Ground floor: Balustrades, handrails and stair finishes | 2 | ILLUSTRATIVE_CREW_PLANNING_SEED_NOT_APPROVED | NOT_MEASURED | METALWORK | REFERENCE_ONLY_NOT_ACTUAL_SITE_ALLOCATION | ARC-02/05, DUDBC-2081, SCOPE_TO_CONFIRM | PROPOSED_NOT_ADMITTED_TO_APPROVED_WBS | FS | 0 | 331 | 333 | 487 | 485 | 154 |  | HAR-0515 |  |
| HAR-0517 | HAR.FINISHES.GROUND | FINISHES | GROUND | Ground floor: Room-level electrical, plumbing and leakage tests | 0 | MILESTONE_ZERO_DURATION | NOT_MEASURED | INSPECTION | REFERENCE_ONLY_NOT_ACTUAL_SITE_ALLOCATION | ARC-02/05, DUDBC-2081, SCOPE_TO_CONFIRM | PROPOSED_NOT_ADMITTED_TO_APPROVED_WBS | FS | 0 | 333 | 333 | 487 | 487 | 154 |  | HAR-0516 | True |
| HAR-0518 | HAR.FINISHES.GROUND | FINISHES | GROUND | Ground floor: Floor defects/punch list and as-built capture | 2 | ILLUSTRATIVE_CREW_PLANNING_SEED_NOT_APPROVED | NOT_MEASURED | QA | REFERENCE_ONLY_NOT_ACTUAL_SITE_ALLOCATION | ARC-02/05, DUDBC-2081, SCOPE_TO_CONFIRM | PROPOSED_NOT_ADMITTED_TO_APPROVED_WBS | FS | 0 | 333 | 335 | 489 | 487 | 154 |  | HAR-0517 |  |
| HAR-0519 | HAR.SUPERSTRUCTURE.FIRST | SUPERSTRUCTURE | FIRST | First floor: Level/grid set-out and survey acceptance | 1 | ILLUSTRATIVE_CREW_PLANNING_SEED_NOT_APPROVED | NOT_MEASURED | SURVEY | REFERENCE_ONLY_NOT_ACTUAL_SITE_ALLOCATION | ARC-02/05, STR-03/17, RPT-2083 | PROPOSED_NOT_ADMITTED_TO_APPROVED_WBS | FS | 0 | 256 | 257 | 257 | 256 | 0 | True | HAR-0474 |  |
| HAR-0520 | HAR.SUPERSTRUCTURE.FIRST | SUPERSTRUCTURE | FIRST | First floor: Working platform, access/scaffold / fall protection | 2 | ILLUSTRATIVE_CREW_PLANNING_SEED_NOT_APPROVED | NOT_MEASURED | FORMWORK | REFERENCE_ONLY_NOT_ACTUAL_SITE_ALLOCATION | ARC-02/05, STR-03/17, RPT-2083 | PROPOSED_NOT_ADMITTED_TO_APPROVED_WBS | FS | 0 | 257 | 259 | 259 | 257 | 0 | True | HAR-0519 |  |
| HAR-0521 | HAR.SUPERSTRUCTURE.FIRST | SUPERSTRUCTURE | FIRST | First floor: Column reinforcement cutting/bending and splice checks | 2 | ILLUSTRATIVE_CREW_PLANNING_SEED_NOT_APPROVED | NOT_MEASURED | REBAR | REFERENCE_ONLY_NOT_ACTUAL_SITE_ALLOCATION | ARC-02/05, STR-03/17, RPT-2083 | PROPOSED_NOT_ADMITTED_TO_APPROVED_WBS | FS | 0 | 259 | 261 | 261 | 259 | 0 | True | HAR-0520 |  |
| HAR-0522 | HAR.SUPERSTRUCTURE.FIRST | SUPERSTRUCTURE | FIRST | First floor: Column tie/confinement six-leg detail inspection | 0 | MILESTONE_ZERO_DURATION | NOT_MEASURED | ENGINEER_INSPECTION | REFERENCE_ONLY_NOT_ACTUAL_SITE_ALLOCATION | ARC-02/05, STR-03/17, RPT-2083 | PROPOSED_NOT_ADMITTED_TO_APPROVED_WBS | FS | 0 | 261 | 261 | 261 | 261 | 0 | True | HAR-0521 | True |
| HAR-0523 | HAR.SUPERSTRUCTURE.FIRST | SUPERSTRUCTURE | FIRST | First floor: Column shutter, line and verticality | 2 | ILLUSTRATIVE_CREW_PLANNING_SEED_NOT_APPROVED | NOT_MEASURED | FORMWORK | REFERENCE_ONLY_NOT_ACTUAL_SITE_ALLOCATION | ARC-02/05, STR-03/17, RPT-2083 | PROPOSED_NOT_ADMITTED_TO_APPROVED_WBS | FS | 0 | 261 | 263 | 263 | 261 | 0 | True | HAR-0522 |  |
| HAR-0524 | HAR.SUPERSTRUCTURE.FIRST | SUPERSTRUCTURE | FIRST | First floor: Column M25 pour, vibration and samples | 1 | ILLUSTRATIVE_CREW_PLANNING_SEED_NOT_APPROVED | NOT_MEASURED | CONCRETE | REFERENCE_ONLY_NOT_ACTUAL_SITE_ALLOCATION | ARC-02/05, STR-03/17, RPT-2083 | PROPOSED_NOT_ADMITTED_TO_APPROVED_WBS | FS | 0 | 263 | 264 | 264 | 263 | 0 | True | HAR-0523 |  |
| HAR-0525 | HAR.SUPERSTRUCTURE.FIRST | SUPERSTRUCTURE | FIRST | First floor: Column/beam junction strength/strip hold | 2 | ILLUSTRATIVE_CREW_PLANNING_SEED_NOT_APPROVED | NOT_MEASURED | ENGINEER_INSPECTION | REFERENCE_ONLY_NOT_ACTUAL_SITE_ALLOCATION | ARC-02/05, STR-03/17, RPT-2083 | PROPOSED_NOT_ADMITTED_TO_APPROVED_WBS | FS | 0 | 264 | 266 | 266 | 264 | 0 | True | HAR-0524 |  |
| HAR-0526 | HAR.SUPERSTRUCTURE.FIRST | SUPERSTRUCTURE | FIRST | First floor: Shear/lift wall reinforcement and boundary elements | 2 | ILLUSTRATIVE_CREW_PLANNING_SEED_NOT_APPROVED | NOT_MEASURED | REBAR | REFERENCE_ONLY_NOT_ACTUAL_SITE_ALLOCATION | ARC-02/05, STR-03/17, RPT-2083 | PROPOSED_NOT_ADMITTED_TO_APPROVED_WBS | FS | 0 | 266 | 268 | 268 | 266 | 0 | True | HAR-0525 |  |
| HAR-0527 | HAR.SUPERSTRUCTURE.FIRST | SUPERSTRUCTURE | FIRST | First floor: Shear/lift wall embedded plates, boxes, sleeves | 1 | ILLUSTRATIVE_CREW_PLANNING_SEED_NOT_APPROVED | NOT_MEASURED | MEP_COORDINATION | REFERENCE_ONLY_NOT_ACTUAL_SITE_ALLOCATION | ARC-02/05, STR-03/17, RPT-2083 | PROPOSED_NOT_ADMITTED_TO_APPROVED_WBS | FS | 0 | 268 | 269 | 269 | 268 | 0 | True | HAR-0526 |  |
| HAR-0528 | HAR.SUPERSTRUCTURE.FIRST | SUPERSTRUCTURE | FIRST | First floor: Shear/lift wall formwork and inspection | 1 | ILLUSTRATIVE_CREW_PLANNING_SEED_NOT_APPROVED | NOT_MEASURED | FORMWORK | REFERENCE_ONLY_NOT_ACTUAL_SITE_ALLOCATION | ARC-02/05, STR-03/17, RPT-2083 | PROPOSED_NOT_ADMITTED_TO_APPROVED_WBS | FS | 0 | 269 | 270 | 270 | 269 | 0 | True | HAR-0527 |  |
| HAR-0529 | HAR.SUPERSTRUCTURE.FIRST | SUPERSTRUCTURE | FIRST | First floor: Shear/lift wall M25 pour and tests | 1 | ILLUSTRATIVE_CREW_PLANNING_SEED_NOT_APPROVED | NOT_MEASURED | CONCRETE | REFERENCE_ONLY_NOT_ACTUAL_SITE_ALLOCATION | ARC-02/05, STR-03/17, RPT-2083 | PROPOSED_NOT_ADMITTED_TO_APPROVED_WBS | FS | 0 | 270 | 271 | 271 | 270 | 0 | True | HAR-0528 |  |
| HAR-0530 | HAR.SUPERSTRUCTURE.FIRST | SUPERSTRUCTURE | FIRST | First floor: Beam soffit formwork, props and deck platforms | 3 | ILLUSTRATIVE_CREW_PLANNING_SEED_NOT_APPROVED | NOT_MEASURED | FORMWORK | REFERENCE_ONLY_NOT_ACTUAL_SITE_ALLOCATION | ARC-02/05, STR-03/17, RPT-2083 | PROPOSED_NOT_ADMITTED_TO_APPROVED_WBS | FS | 0 | 271 | 274 | 274 | 271 | 0 | True | HAR-0529 |  |
| HAR-0531 | HAR.SUPERSTRUCTURE.FIRST | SUPERSTRUCTURE | FIRST | First floor: Slab deck, openings, stair flights and terrace edge shuttering | 3 | ILLUSTRATIVE_CREW_PLANNING_SEED_NOT_APPROVED | NOT_MEASURED | FORMWORK | REFERENCE_ONLY_NOT_ACTUAL_SITE_ALLOCATION | ARC-02/05, STR-03/17, RPT-2083 | PROPOSED_NOT_ADMITTED_TO_APPROVED_WBS | FS | 0 | 274 | 277 | 277 | 274 | 0 | True | HAR-0530 |  |
| HAR-0532 | HAR.SUPERSTRUCTURE.FIRST | SUPERSTRUCTURE | FIRST | First floor: Beam flexural and shear reinforcement including junction continuity | 3 | ILLUSTRATIVE_CREW_PLANNING_SEED_NOT_APPROVED | NOT_MEASURED | REBAR | REFERENCE_ONLY_NOT_ACTUAL_SITE_ALLOCATION | ARC-02/05, STR-03/17, RPT-2083 | PROPOSED_NOT_ADMITTED_TO_APPROVED_WBS | FS | 0 | 277 | 280 | 280 | 277 | 0 | True | HAR-0531 |  |
| HAR-0533 | HAR.SUPERSTRUCTURE.FIRST | SUPERSTRUCTURE | FIRST | First floor: Slab top/bottom mats, extra bars and staircase steel | 3 | ILLUSTRATIVE_CREW_PLANNING_SEED_NOT_APPROVED | NOT_MEASURED | REBAR | REFERENCE_ONLY_NOT_ACTUAL_SITE_ALLOCATION | ARC-02/05, STR-03/17, RPT-2083 | PROPOSED_NOT_ADMITTED_TO_APPROVED_WBS | FS | 0 | 280 | 283 | 283 | 280 | 0 | True | HAR-0532 |  |
| HAR-0534 | HAR.SUPERSTRUCTURE.FIRST | SUPERSTRUCTURE | FIRST | First floor: Electrical conduits, plumbing sleeves and floor penetrations | 2 | ILLUSTRATIVE_CREW_PLANNING_SEED_NOT_APPROVED | NOT_MEASURED | MEP_COORDINATION | REFERENCE_ONLY_NOT_ACTUAL_SITE_ALLOCATION | ARC-02/05, STR-03/17, RPT-2083 | PROPOSED_NOT_ADMITTED_TO_APPROVED_WBS | FS | 0 | 283 | 285 | 285 | 283 | 0 | True | HAR-0533 |  |
| HAR-0535 | HAR.SUPERSTRUCTURE.FIRST | SUPERSTRUCTURE | FIRST | First floor: Beam/slab/stair formwork & steel hold-point inspection | 0 | MILESTONE_ZERO_DURATION | NOT_MEASURED | ENGINEER_INSPECTION | REFERENCE_ONLY_NOT_ACTUAL_SITE_ALLOCATION | ARC-02/05, STR-03/17, RPT-2083 | PROPOSED_NOT_ADMITTED_TO_APPROVED_WBS | FS | 0 | 285 | 285 | 285 | 285 | 0 | True | HAR-0534 | True |
| HAR-0536 | HAR.SUPERSTRUCTURE.FIRST | SUPERSTRUCTURE | FIRST | First floor: M25 beam/slab/stair placement, slump/cubes and leveling | 2 | ILLUSTRATIVE_CREW_PLANNING_SEED_NOT_APPROVED | PROVISIONAL_GEOMETRY_FROM_SOURCE | CONCRETE | REFERENCE_ONLY_NOT_ACTUAL_SITE_ALLOCATION | ARC-02/05, STR-03/17, RPT-2083 | PROPOSED_NOT_ADMITTED_TO_APPROVED_WBS | FS | 0 | 285 | 287 | 287 | 285 | 0 | True | HAR-0535 |  |
| HAR-0537 | HAR.SUPERSTRUCTURE.FIRST | SUPERSTRUCTURE | FIRST | First floor: Curing, prop-retention and construction-load control | 7 | ILLUSTRATIVE_CREW_PLANNING_SEED_NOT_APPROVED | NOT_MEASURED | CONCRETE | REFERENCE_ONLY_NOT_ACTUAL_SITE_ALLOCATION | ARC-02/05, STR-03/17, RPT-2083 | PROPOSED_NOT_ADMITTED_TO_APPROVED_WBS | FS | 0 | 287 | 294 | 294 | 287 | 0 | True | HAR-0536 |  |
| HAR-0538 | HAR.SUPERSTRUCTURE.FIRST | SUPERSTRUCTURE | FIRST | First floor: Structural pour and dimensional QA hold | 0 | MILESTONE_ZERO_DURATION | NOT_MEASURED | ENGINEER_INSPECTION | REFERENCE_ONLY_NOT_ACTUAL_SITE_ALLOCATION | ARC-02/05, STR-03/17, RPT-2083 | PROPOSED_NOT_ADMITTED_TO_APPROVED_WBS | FS | 0 | 294 | 294 | 294 | 294 | 0 | True | HAR-0537 | True |
| HAR-0539 | HAR.MASONRY.FIRST | MASONRY | FIRST | First floor: Masonry set-out, openings and wall thickness check | 1 | ILLUSTRATIVE_CREW_PLANNING_SEED_NOT_APPROVED | NOT_MEASURED | SURVEY | REFERENCE_ONLY_NOT_ACTUAL_SITE_ALLOCATION | ARC-02/05, CAD-R000002-PROVISIONAL | PROPOSED_NOT_ADMITTED_TO_APPROVED_WBS | FS | 0 | 294 | 295 | 411 | 410 | 116 |  | HAR-0538 |  |
| HAR-0540 | HAR.MASONRY.FIRST | MASONRY | FIRST | First floor: Masonry material sampling, wetting and mortar preparation | 1 | ILLUSTRATIVE_CREW_PLANNING_SEED_NOT_APPROVED | NOT_MEASURED | MASONRY | REFERENCE_ONLY_NOT_ACTUAL_SITE_ALLOCATION | ARC-02/05, CAD-R000002-PROVISIONAL | PROPOSED_NOT_ADMITTED_TO_APPROVED_WBS | FS | 0 | 295 | 296 | 412 | 411 | 116 |  | HAR-0539 |  |
| HAR-0541 | HAR.MASONRY.FIRST | MASONRY | FIRST | First floor: External wall masonry lifts incl. lintel interface | 4 | ILLUSTRATIVE_CREW_PLANNING_SEED_NOT_APPROVED | NOT_MEASURED | MASONRY | REFERENCE_ONLY_NOT_ACTUAL_SITE_ALLOCATION | ARC-02/05, CAD-R000002-PROVISIONAL | PROPOSED_NOT_ADMITTED_TO_APPROVED_WBS | FS | 0 | 296 | 300 | 416 | 412 | 116 |  | HAR-0540 |  |
| HAR-0542 | HAR.MASONRY.FIRST | MASONRY | FIRST | First floor: Internal partition masonry lifts and ties | 3 | ILLUSTRATIVE_CREW_PLANNING_SEED_NOT_APPROVED | NOT_MEASURED | MASONRY | REFERENCE_ONLY_NOT_ACTUAL_SITE_ALLOCATION | ARC-02/05, CAD-R000002-PROVISIONAL | PROPOSED_NOT_ADMITTED_TO_APPROVED_WBS | FS | 0 | 300 | 303 | 419 | 416 | 116 |  | HAR-0541 |  |
| HAR-0543 | HAR.MASONRY.FIRST | MASONRY | FIRST | First floor: Door and window opening verification with schedules | 1 | ILLUSTRATIVE_CREW_PLANNING_SEED_NOT_APPROVED | NOT_MEASURED | SURVEY | REFERENCE_ONLY_NOT_ACTUAL_SITE_ALLOCATION | ARC-02/05, CAD-R000002-PROVISIONAL | PROPOSED_NOT_ADMITTED_TO_APPROVED_WBS | FS | 0 | 303 | 304 | 420 | 419 | 116 |  | HAR-0542 |  |
| HAR-0544 | HAR.MASONRY.FIRST | MASONRY | FIRST | First floor: Nonstructural wall hold / seismic separation check | 0 | MILESTONE_ZERO_DURATION | NOT_MEASURED | ENGINEER_INSPECTION | REFERENCE_ONLY_NOT_ACTUAL_SITE_ALLOCATION | ARC-02/05, CAD-R000002-PROVISIONAL | PROPOSED_NOT_ADMITTED_TO_APPROVED_WBS | FS | 0 | 304 | 304 | 420 | 420 | 116 |  | HAR-0543 | True |
| HAR-0545 | HAR.MASONRY.FIRST | MASONRY | FIRST | First floor: Internal and external chasing coordinates agreed with MEP | 1 | ILLUSTRATIVE_CREW_PLANNING_SEED_NOT_APPROVED | NOT_MEASURED | MEP_COORDINATION | REFERENCE_ONLY_NOT_ACTUAL_SITE_ALLOCATION | ARC-02/05, CAD-R000002-PROVISIONAL | PROPOSED_NOT_ADMITTED_TO_APPROVED_WBS | FS | 0 | 304 | 305 | 421 | 420 | 116 |  | HAR-0544 |  |
| HAR-0546 | HAR.MEP_ROUGH_IN.FIRST | MEP_ROUGH_IN | FIRST | First floor: MEP floor drawing coordination and ceiling-zone clash review | 2 | ILLUSTRATIVE_CREW_PLANNING_SEED_NOT_APPROVED | NOT_MEASURED | MEP_COORDINATION | REFERENCE_ONLY_NOT_ACTUAL_SITE_ALLOCATION | ARC-02/05, DUDBC-2081, SCOPE_TO_CONFIRM | PROPOSED_NOT_ADMITTED_TO_APPROVED_WBS | FS | 0 | 305 | 307 | 423 | 421 | 116 |  | HAR-0545, HAR-0054, HAR-0055, HAR-0056, HAR-0058 |  |
| HAR-0547 | HAR.MEP_ROUGH_IN.FIRST | MEP_ROUGH_IN | FIRST | First floor: Drainage stack riser supports and sleeve installation | 2 | ILLUSTRATIVE_CREW_PLANNING_SEED_NOT_APPROVED | NOT_MEASURED | PLUMBING | REFERENCE_ONLY_NOT_ACTUAL_SITE_ALLOCATION | ARC-02/05, DUDBC-2081, SCOPE_TO_CONFIRM | PROPOSED_NOT_ADMITTED_TO_APPROVED_WBS | FS | 0 | 307 | 309 | 425 | 423 | 116 |  | HAR-0546 |  |
| HAR-0548 | HAR.MEP_ROUGH_IN.FIRST | MEP_ROUGH_IN | FIRST | First floor: Cold water distribution and pressure-line rough in | 2 | ILLUSTRATIVE_CREW_PLANNING_SEED_NOT_APPROVED | NOT_MEASURED | PLUMBING | REFERENCE_ONLY_NOT_ACTUAL_SITE_ALLOCATION | ARC-02/05, DUDBC-2081, SCOPE_TO_CONFIRM | PROPOSED_NOT_ADMITTED_TO_APPROVED_WBS | FS | 0 | 309 | 311 | 427 | 425 | 116 |  | HAR-0547 |  |
| HAR-0549 | HAR.MEP_ROUGH_IN.FIRST | MEP_ROUGH_IN | FIRST | First floor: Soil/waste/vent pipe branches and floor traps | 2 | ILLUSTRATIVE_CREW_PLANNING_SEED_NOT_APPROVED | NOT_MEASURED | PLUMBING | REFERENCE_ONLY_NOT_ACTUAL_SITE_ALLOCATION | ARC-02/05, DUDBC-2081, SCOPE_TO_CONFIRM | PROPOSED_NOT_ADMITTED_TO_APPROVED_WBS | FS | 0 | 311 | 313 | 429 | 427 | 116 |  | HAR-0548 |  |
| HAR-0550 | HAR.MEP_ROUGH_IN.FIRST | MEP_ROUGH_IN | FIRST | First floor: Sanitary wall sleeve, shaft access and cleanout placement | 1 | ILLUSTRATIVE_CREW_PLANNING_SEED_NOT_APPROVED | NOT_MEASURED | PLUMBING | REFERENCE_ONLY_NOT_ACTUAL_SITE_ALLOCATION | ARC-02/05, DUDBC-2081, SCOPE_TO_CONFIRM | PROPOSED_NOT_ADMITTED_TO_APPROVED_WBS | FS | 0 | 313 | 314 | 430 | 429 | 116 |  | HAR-0549 |  |
| HAR-0551 | HAR.MEP_ROUGH_IN.FIRST | MEP_ROUGH_IN | FIRST | First floor: Electrical concealed conduit and switchboard rough in | 2 | ILLUSTRATIVE_CREW_PLANNING_SEED_NOT_APPROVED | NOT_MEASURED | ELECTRICAL | REFERENCE_ONLY_NOT_ACTUAL_SITE_ALLOCATION | ARC-02/05, DUDBC-2081, SCOPE_TO_CONFIRM | PROPOSED_NOT_ADMITTED_TO_APPROVED_WBS | FS | 0 | 314 | 316 | 432 | 430 | 116 |  | HAR-0550 |  |
| HAR-0552 | HAR.MEP_ROUGH_IN.FIRST | MEP_ROUGH_IN | FIRST | First floor: Electrical riser ducts, earthing/bonding rough in | 2 | ILLUSTRATIVE_CREW_PLANNING_SEED_NOT_APPROVED | NOT_MEASURED | ELECTRICAL | REFERENCE_ONLY_NOT_ACTUAL_SITE_ALLOCATION | ARC-02/05, DUDBC-2081, SCOPE_TO_CONFIRM | PROPOSED_NOT_ADMITTED_TO_APPROVED_WBS | FS | 0 | 316 | 318 | 434 | 432 | 116 |  | HAR-0551 |  |
| HAR-0553 | HAR.MEP_ROUGH_IN.FIRST | MEP_ROUGH_IN | FIRST | First floor: Fire detection/alarm conduits and interfaces | 2 | ILLUSTRATIVE_CREW_PLANNING_SEED_NOT_APPROVED | NOT_MEASURED | FIRE | REFERENCE_ONLY_NOT_ACTUAL_SITE_ALLOCATION | ARC-02/05, DUDBC-2081, SCOPE_TO_CONFIRM | PROPOSED_NOT_ADMITTED_TO_APPROVED_WBS | FS | 0 | 318 | 320 | 436 | 434 | 116 |  | HAR-0552 |  |
| HAR-0554 | HAR.MEP_ROUGH_IN.FIRST | MEP_ROUGH_IN | FIRST | First floor: Emergency/exit-lighting circuits rough in | 1 | ILLUSTRATIVE_CREW_PLANNING_SEED_NOT_APPROVED | NOT_MEASURED | ELECTRICAL | REFERENCE_ONLY_NOT_ACTUAL_SITE_ALLOCATION | ARC-02/05, DUDBC-2081, SCOPE_TO_CONFIRM | PROPOSED_NOT_ADMITTED_TO_APPROVED_WBS | FS | 0 | 320 | 321 | 437 | 436 | 116 |  | HAR-0553 |  |
| HAR-0555 | HAR.MEP_ROUGH_IN.FIRST | MEP_ROUGH_IN | FIRST | First floor: Telecom/data/CCTV service raceway rough in (if in scope) | 2 | ILLUSTRATIVE_CREW_PLANNING_SEED_NOT_APPROVED | NOT_MEASURED | LOW_VOLTAGE | REFERENCE_ONLY_NOT_ACTUAL_SITE_ALLOCATION | ARC-02/05, DUDBC-2081, SCOPE_TO_CONFIRM | PROPOSED_NOT_ADMITTED_TO_APPROVED_WBS | FS | 0 | 321 | 323 | 439 | 437 | 116 |  | HAR-0554 |  |
| HAR-0556 | HAR.MEP_ROUGH_IN.FIRST | MEP_ROUGH_IN | FIRST | First floor: Ventilation / exhaust pathways and shafts (subject to design) | 2 | ILLUSTRATIVE_CREW_PLANNING_SEED_NOT_APPROVED | NOT_MEASURED | VENTILATION | REFERENCE_ONLY_NOT_ACTUAL_SITE_ALLOCATION | ARC-02/05, DUDBC-2081, SCOPE_TO_CONFIRM | PROPOSED_NOT_ADMITTED_TO_APPROVED_WBS | FS | 0 | 323 | 325 | 441 | 439 | 116 |  | HAR-0555 |  |
| HAR-0557 | HAR.MEP_ROUGH_IN.FIRST | MEP_ROUGH_IN | FIRST | First floor: Lift shaft dimension, embed and access coordination (where applicable) | 1 | ILLUSTRATIVE_CREW_PLANNING_SEED_NOT_APPROVED | NOT_MEASURED | LIFT | REFERENCE_ONLY_NOT_ACTUAL_SITE_ALLOCATION | ARC-02/05, DUDBC-2081, SCOPE_TO_CONFIRM | PROPOSED_NOT_ADMITTED_TO_APPROVED_WBS | FS | 0 | 325 | 326 | 442 | 441 | 116 |  | HAR-0556 |  |
| HAR-0558 | HAR.MEP_ROUGH_IN.FIRST | MEP_ROUGH_IN | FIRST | First floor: MEP pressure/leak tests before plaster | 0 | MILESTONE_ZERO_DURATION | NOT_MEASURED | INSPECTION | REFERENCE_ONLY_NOT_ACTUAL_SITE_ALLOCATION | ARC-02/05, DUDBC-2081, SCOPE_TO_CONFIRM | PROPOSED_NOT_ADMITTED_TO_APPROVED_WBS | FS | 0 | 326 | 326 | 442 | 442 | 116 |  | HAR-0557 | True |
| HAR-0559 | HAR.MEP_ROUGH_IN.FIRST | MEP_ROUGH_IN | FIRST | First floor: MEP cable continuity and conduit inspection hold | 0 | MILESTONE_ZERO_DURATION | NOT_MEASURED | INSPECTION | REFERENCE_ONLY_NOT_ACTUAL_SITE_ALLOCATION | ARC-02/05, DUDBC-2081, SCOPE_TO_CONFIRM | PROPOSED_NOT_ADMITTED_TO_APPROVED_WBS | FS | 0 | 326 | 326 | 442 | 442 | 116 |  | HAR-0558 | True |
| HAR-0560 | HAR.MEP_ROUGH_IN.FIRST | MEP_ROUGH_IN | FIRST | First floor: Repair chase cuts and firestop service penetrations | 1 | ILLUSTRATIVE_CREW_PLANNING_SEED_NOT_APPROVED | NOT_MEASURED | MASONRY | REFERENCE_ONLY_NOT_ACTUAL_SITE_ALLOCATION | ARC-02/05, DUDBC-2081, SCOPE_TO_CONFIRM | PROPOSED_NOT_ADMITTED_TO_APPROVED_WBS | FS | 0 | 326 | 327 | 443 | 442 | 116 |  | HAR-0559 |  |

| activity_id | wbs | phase | scope | title | duration_workdays | duration_basis | quantity_basis | crew_category | crew_basis | source_refs | status | logic_type | lag_workdays | planned_start_workday | planned_finish_workday | latest_finish_workday | latest_start_workday | total_float_workdays | critical | predecessor_ids | engineering_hold |
| --- | --- | --- | --- | --- | --- | --- | --- | --- | --- | --- | --- | --- | --- | --- | --- | --- | --- | --- | --- | --- | --- |
| HAR-0561 | HAR.MEP_ROUGH_IN.FIRST | MEP_ROUGH_IN | FIRST | First floor: MEP first-fix release milestone | 0 | MILESTONE_ZERO_DURATION | NOT_MEASURED | INSPECTION | REFERENCE_ONLY_NOT_ACTUAL_SITE_ALLOCATION | ARC-02/05, DUDBC-2081, SCOPE_TO_CONFIRM | PROPOSED_NOT_ADMITTED_TO_APPROVED_WBS | FS | 0 | 327 | 327 | 443 | 443 | 116 |  | HAR-0560 | True |
| HAR-0562 | HAR.FINISHES.FIRST | FINISHES | FIRST | First floor: Wet area screed and falls inspection | 2 | ILLUSTRATIVE_CREW_PLANNING_SEED_NOT_APPROVED | NOT_MEASURED | FLOORING | REFERENCE_ONLY_NOT_ACTUAL_SITE_ALLOCATION | ARC-02/05, DUDBC-2081, SCOPE_TO_CONFIRM | PROPOSED_NOT_ADMITTED_TO_APPROVED_WBS | FS | 0 | 327 | 329 | 445 | 443 | 116 |  | HAR-0561 |  |
| HAR-0563 | HAR.FINISHES.FIRST | FINISHES | FIRST | First floor: Waterproofing substrate moisture / surface preparation | 2 | ILLUSTRATIVE_CREW_PLANNING_SEED_NOT_APPROVED | NOT_MEASURED | WATERPROOFING | REFERENCE_ONLY_NOT_ACTUAL_SITE_ALLOCATION | ARC-02/05, DUDBC-2081, SCOPE_TO_CONFIRM | PROPOSED_NOT_ADMITTED_TO_APPROVED_WBS | FS | 0 | 329 | 331 | 447 | 445 | 116 |  | HAR-0562, HAR-0051 |  |
| HAR-0564 | HAR.FINISHES.FIRST | FINISHES | FIRST | First floor: Wet area waterproofing membranes and upstands | 2 | ILLUSTRATIVE_CREW_PLANNING_SEED_NOT_APPROVED | NOT_MEASURED | WATERPROOFING | REFERENCE_ONLY_NOT_ACTUAL_SITE_ALLOCATION | ARC-02/05, DUDBC-2081, SCOPE_TO_CONFIRM | PROPOSED_NOT_ADMITTED_TO_APPROVED_WBS | FS | 0 | 331 | 333 | 449 | 447 | 116 |  | HAR-0563 |  |
| HAR-0565 | HAR.FINISHES.FIRST | FINISHES | FIRST | First floor: Flood test and waterproofing hold | 0 | MILESTONE_ZERO_DURATION | NOT_MEASURED | INSPECTION | REFERENCE_ONLY_NOT_ACTUAL_SITE_ALLOCATION | ARC-02/05, DUDBC-2081, SCOPE_TO_CONFIRM | PROPOSED_NOT_ADMITTED_TO_APPROVED_WBS | FS | 0 | 333 | 333 | 449 | 449 | 116 |  | HAR-0564 | True |
| HAR-0566 | HAR.FINISHES.FIRST | FINISHES | FIRST | First floor: Internal plaster/render to walls | 4 | ILLUSTRATIVE_CREW_PLANNING_SEED_NOT_APPROVED | NOT_MEASURED | PLASTER | REFERENCE_ONLY_NOT_ACTUAL_SITE_ALLOCATION | ARC-02/05, DUDBC-2081, SCOPE_TO_CONFIRM | PROPOSED_NOT_ADMITTED_TO_APPROVED_WBS | FS | 0 | 333 | 337 | 453 | 449 | 116 |  | HAR-0565 |  |
| HAR-0567 | HAR.FINISHES.FIRST | FINISHES | FIRST | First floor: External render and wall repair | 4 | ILLUSTRATIVE_CREW_PLANNING_SEED_NOT_APPROVED | NOT_MEASURED | PLASTER | REFERENCE_ONLY_NOT_ACTUAL_SITE_ALLOCATION | ARC-02/05, DUDBC-2081, SCOPE_TO_CONFIRM | PROPOSED_NOT_ADMITTED_TO_APPROVED_WBS | FS | 0 | 337 | 341 | 457 | 453 | 116 |  | HAR-0566 |  |
| HAR-0568 | HAR.FINISHES.FIRST | FINISHES | FIRST | First floor: Plaster curing and line/plumb QA | 2 | ILLUSTRATIVE_CREW_PLANNING_SEED_NOT_APPROVED | NOT_MEASURED | PLASTER | REFERENCE_ONLY_NOT_ACTUAL_SITE_ALLOCATION | ARC-02/05, DUDBC-2081, SCOPE_TO_CONFIRM | PROPOSED_NOT_ADMITTED_TO_APPROVED_WBS | FS | 0 | 341 | 343 | 459 | 457 | 116 |  | HAR-0567 |  |
| HAR-0569 | HAR.FINISHES.FIRST | FINISHES | FIRST | First floor: Floor levelling / screed and flatness checks | 2 | ILLUSTRATIVE_CREW_PLANNING_SEED_NOT_APPROVED | NOT_MEASURED | FLOORING | REFERENCE_ONLY_NOT_ACTUAL_SITE_ALLOCATION | ARC-02/05, DUDBC-2081, SCOPE_TO_CONFIRM | PROPOSED_NOT_ADMITTED_TO_APPROVED_WBS | FS | 0 | 343 | 345 | 461 | 459 | 116 |  | HAR-0568 |  |
| HAR-0570 | HAR.FINISHES.FIRST | FINISHES | FIRST | First floor: Ceiling suspension / plasterboard preparation where designed | 2 | ILLUSTRATIVE_CREW_PLANNING_SEED_NOT_APPROVED | NOT_MEASURED | CEILING | REFERENCE_ONLY_NOT_ACTUAL_SITE_ALLOCATION | ARC-02/05, DUDBC-2081, SCOPE_TO_CONFIRM | PROPOSED_NOT_ADMITTED_TO_APPROVED_WBS | FS | 0 | 345 | 347 | 463 | 461 | 116 |  | HAR-0569 |  |
| HAR-0571 | HAR.FINISHES.FIRST | FINISHES | FIRST | First floor: Floor tile/stone/finish laying | 4 | ILLUSTRATIVE_CREW_PLANNING_SEED_NOT_APPROVED | NOT_MEASURED | FLOORING | REFERENCE_ONLY_NOT_ACTUAL_SITE_ALLOCATION | ARC-02/05, DUDBC-2081, SCOPE_TO_CONFIRM | PROPOSED_NOT_ADMITTED_TO_APPROVED_WBS | FS | 0 | 347 | 351 | 467 | 463 | 116 |  | HAR-0570 |  |
| HAR-0572 | HAR.FINISHES.FIRST | FINISHES | FIRST | First floor: Wall tiles in wet and service areas | 3 | ILLUSTRATIVE_CREW_PLANNING_SEED_NOT_APPROVED | NOT_MEASURED | FLOORING | REFERENCE_ONLY_NOT_ACTUAL_SITE_ALLOCATION | ARC-02/05, DUDBC-2081, SCOPE_TO_CONFIRM | PROPOSED_NOT_ADMITTED_TO_APPROVED_WBS | FS | 0 | 351 | 354 | 470 | 467 | 116 |  | HAR-0571 |  |
| HAR-0573 | HAR.FINISHES.FIRST | FINISHES | FIRST | First floor: Door frame installation and alignment | 2 | ILLUSTRATIVE_CREW_PLANNING_SEED_NOT_APPROVED | NOT_MEASURED | JOINERY | REFERENCE_ONLY_NOT_ACTUAL_SITE_ALLOCATION | ARC-02/05, DUDBC-2081, SCOPE_TO_CONFIRM | PROPOSED_NOT_ADMITTED_TO_APPROVED_WBS | FS | 0 | 354 | 356 | 472 | 470 | 116 |  | HAR-0572, HAR-0053 |  |
| HAR-0574 | HAR.FINISHES.FIRST | FINISHES | FIRST | First floor: Window frame installation / flashing / sealant | 2 | ILLUSTRATIVE_CREW_PLANNING_SEED_NOT_APPROVED | NOT_MEASURED | JOINERY | REFERENCE_ONLY_NOT_ACTUAL_SITE_ALLOCATION | ARC-02/05, DUDBC-2081, SCOPE_TO_CONFIRM | PROPOSED_NOT_ADMITTED_TO_APPROVED_WBS | FS | 0 | 356 | 358 | 474 | 472 | 116 |  | HAR-0573 |  |
| HAR-0575 | HAR.FINISHES.FIRST | FINISHES | FIRST | First floor: Internal door leaves, hardware and locks | 2 | ILLUSTRATIVE_CREW_PLANNING_SEED_NOT_APPROVED | NOT_MEASURED | JOINERY | REFERENCE_ONLY_NOT_ACTUAL_SITE_ALLOCATION | ARC-02/05, DUDBC-2081, SCOPE_TO_CONFIRM | PROPOSED_NOT_ADMITTED_TO_APPROVED_WBS | FS | 0 | 358 | 360 | 476 | 474 | 116 |  | HAR-0574 |  |
| HAR-0576 | HAR.FINISHES.FIRST | FINISHES | FIRST | First floor: Electrical cable pulling, fittings, DB final connections | 2 | ILLUSTRATIVE_CREW_PLANNING_SEED_NOT_APPROVED | NOT_MEASURED | ELECTRICAL | REFERENCE_ONLY_NOT_ACTUAL_SITE_ALLOCATION | ARC-02/05, DUDBC-2081, SCOPE_TO_CONFIRM | PROPOSED_NOT_ADMITTED_TO_APPROVED_WBS | FS | 0 | 360 | 362 | 478 | 476 | 116 |  | HAR-0575 |  |
| HAR-0577 | HAR.FINISHES.FIRST | FINISHES | FIRST | First floor: Plumbing fixtures, valves, sanitary fittings | 2 | ILLUSTRATIVE_CREW_PLANNING_SEED_NOT_APPROVED | NOT_MEASURED | PLUMBING | REFERENCE_ONLY_NOT_ACTUAL_SITE_ALLOCATION | ARC-02/05, DUDBC-2081, SCOPE_TO_CONFIRM | PROPOSED_NOT_ADMITTED_TO_APPROVED_WBS | FS | 0 | 362 | 364 | 480 | 478 | 116 |  | HAR-0576 |  |
| HAR-0578 | HAR.FINISHES.FIRST | FINISHES | FIRST | First floor: Fire alarm devices, emergency lighting and first-stage checks | 2 | ILLUSTRATIVE_CREW_PLANNING_SEED_NOT_APPROVED | NOT_MEASURED | FIRE | REFERENCE_ONLY_NOT_ACTUAL_SITE_ALLOCATION | ARC-02/05, DUDBC-2081, SCOPE_TO_CONFIRM | PROPOSED_NOT_ADMITTED_TO_APPROVED_WBS | FS | 0 | 364 | 366 | 482 | 480 | 116 |  | HAR-0577 |  |
| HAR-0579 | HAR.FINISHES.FIRST | FINISHES | FIRST | First floor: Surface primer, putty and finish coats | 3 | ILLUSTRATIVE_CREW_PLANNING_SEED_NOT_APPROVED | NOT_MEASURED | PAINTING | REFERENCE_ONLY_NOT_ACTUAL_SITE_ALLOCATION | ARC-02/05, DUDBC-2081, SCOPE_TO_CONFIRM | PROPOSED_NOT_ADMITTED_TO_APPROVED_WBS | FS | 0 | 366 | 369 | 485 | 482 | 116 |  | HAR-0578 |  |
| HAR-0580 | HAR.FINISHES.FIRST | FINISHES | FIRST | First floor: Balustrades, handrails and stair finishes | 2 | ILLUSTRATIVE_CREW_PLANNING_SEED_NOT_APPROVED | NOT_MEASURED | METALWORK | REFERENCE_ONLY_NOT_ACTUAL_SITE_ALLOCATION | ARC-02/05, DUDBC-2081, SCOPE_TO_CONFIRM | PROPOSED_NOT_ADMITTED_TO_APPROVED_WBS | FS | 0 | 369 | 371 | 487 | 485 | 116 |  | HAR-0579 |  |
| HAR-0581 | HAR.FINISHES.FIRST | FINISHES | FIRST | First floor: Room-level electrical, plumbing and leakage tests | 0 | MILESTONE_ZERO_DURATION | NOT_MEASURED | INSPECTION | REFERENCE_ONLY_NOT_ACTUAL_SITE_ALLOCATION | ARC-02/05, DUDBC-2081, SCOPE_TO_CONFIRM | PROPOSED_NOT_ADMITTED_TO_APPROVED_WBS | FS | 0 | 371 | 371 | 487 | 487 | 116 |  | HAR-0580 | True |
| HAR-0582 | HAR.FINISHES.FIRST | FINISHES | FIRST | First floor: Floor defects/punch list and as-built capture | 2 | ILLUSTRATIVE_CREW_PLANNING_SEED_NOT_APPROVED | NOT_MEASURED | QA | REFERENCE_ONLY_NOT_ACTUAL_SITE_ALLOCATION | ARC-02/05, DUDBC-2081, SCOPE_TO_CONFIRM | PROPOSED_NOT_ADMITTED_TO_APPROVED_WBS | FS | 0 | 371 | 373 | 489 | 487 | 116 |  | HAR-0581 |  |
| HAR-0583 | HAR.SUPERSTRUCTURE.SECOND | SUPERSTRUCTURE | SECOND | Second floor: Level/grid set-out and survey acceptance | 1 | ILLUSTRATIVE_CREW_PLANNING_SEED_NOT_APPROVED | NOT_MEASURED | SURVEY | REFERENCE_ONLY_NOT_ACTUAL_SITE_ALLOCATION | ARC-02/05, STR-03/17, RPT-2083 | PROPOSED_NOT_ADMITTED_TO_APPROVED_WBS | FS | 0 | 294 | 295 | 295 | 294 | 0 | True | HAR-0538 |  |
| HAR-0584 | HAR.SUPERSTRUCTURE.SECOND | SUPERSTRUCTURE | SECOND | Second floor: Working platform, access/scaffold / fall protection | 2 | ILLUSTRATIVE_CREW_PLANNING_SEED_NOT_APPROVED | NOT_MEASURED | FORMWORK | REFERENCE_ONLY_NOT_ACTUAL_SITE_ALLOCATION | ARC-02/05, STR-03/17, RPT-2083 | PROPOSED_NOT_ADMITTED_TO_APPROVED_WBS | FS | 0 | 295 | 297 | 297 | 295 | 0 | True | HAR-0583 |  |
| HAR-0585 | HAR.SUPERSTRUCTURE.SECOND | SUPERSTRUCTURE | SECOND | Second floor: Column reinforcement cutting/bending and splice checks | 2 | ILLUSTRATIVE_CREW_PLANNING_SEED_NOT_APPROVED | NOT_MEASURED | REBAR | REFERENCE_ONLY_NOT_ACTUAL_SITE_ALLOCATION | ARC-02/05, STR-03/17, RPT-2083 | PROPOSED_NOT_ADMITTED_TO_APPROVED_WBS | FS | 0 | 297 | 299 | 299 | 297 | 0 | True | HAR-0584 |  |
| HAR-0586 | HAR.SUPERSTRUCTURE.SECOND | SUPERSTRUCTURE | SECOND | Second floor: Column tie/confinement six-leg detail inspection | 0 | MILESTONE_ZERO_DURATION | NOT_MEASURED | ENGINEER_INSPECTION | REFERENCE_ONLY_NOT_ACTUAL_SITE_ALLOCATION | ARC-02/05, STR-03/17, RPT-2083 | PROPOSED_NOT_ADMITTED_TO_APPROVED_WBS | FS | 0 | 299 | 299 | 299 | 299 | 0 | True | HAR-0585 | True |
| HAR-0587 | HAR.SUPERSTRUCTURE.SECOND | SUPERSTRUCTURE | SECOND | Second floor: Column shutter, line and verticality | 2 | ILLUSTRATIVE_CREW_PLANNING_SEED_NOT_APPROVED | NOT_MEASURED | FORMWORK | REFERENCE_ONLY_NOT_ACTUAL_SITE_ALLOCATION | ARC-02/05, STR-03/17, RPT-2083 | PROPOSED_NOT_ADMITTED_TO_APPROVED_WBS | FS | 0 | 299 | 301 | 301 | 299 | 0 | True | HAR-0586 |  |
| HAR-0588 | HAR.SUPERSTRUCTURE.SECOND | SUPERSTRUCTURE | SECOND | Second floor: Column M25 pour, vibration and samples | 1 | ILLUSTRATIVE_CREW_PLANNING_SEED_NOT_APPROVED | NOT_MEASURED | CONCRETE | REFERENCE_ONLY_NOT_ACTUAL_SITE_ALLOCATION | ARC-02/05, STR-03/17, RPT-2083 | PROPOSED_NOT_ADMITTED_TO_APPROVED_WBS | FS | 0 | 301 | 302 | 302 | 301 | 0 | True | HAR-0587 |  |
| HAR-0589 | HAR.SUPERSTRUCTURE.SECOND | SUPERSTRUCTURE | SECOND | Second floor: Column/beam junction strength/strip hold | 2 | ILLUSTRATIVE_CREW_PLANNING_SEED_NOT_APPROVED | NOT_MEASURED | ENGINEER_INSPECTION | REFERENCE_ONLY_NOT_ACTUAL_SITE_ALLOCATION | ARC-02/05, STR-03/17, RPT-2083 | PROPOSED_NOT_ADMITTED_TO_APPROVED_WBS | FS | 0 | 302 | 304 | 304 | 302 | 0 | True | HAR-0588 |  |
| HAR-0590 | HAR.SUPERSTRUCTURE.SECOND | SUPERSTRUCTURE | SECOND | Second floor: Shear/lift wall reinforcement and boundary elements | 2 | ILLUSTRATIVE_CREW_PLANNING_SEED_NOT_APPROVED | NOT_MEASURED | REBAR | REFERENCE_ONLY_NOT_ACTUAL_SITE_ALLOCATION | ARC-02/05, STR-03/17, RPT-2083 | PROPOSED_NOT_ADMITTED_TO_APPROVED_WBS | FS | 0 | 304 | 306 | 306 | 304 | 0 | True | HAR-0589 |  |
| HAR-0591 | HAR.SUPERSTRUCTURE.SECOND | SUPERSTRUCTURE | SECOND | Second floor: Shear/lift wall embedded plates, boxes, sleeves | 1 | ILLUSTRATIVE_CREW_PLANNING_SEED_NOT_APPROVED | NOT_MEASURED | MEP_COORDINATION | REFERENCE_ONLY_NOT_ACTUAL_SITE_ALLOCATION | ARC-02/05, STR-03/17, RPT-2083 | PROPOSED_NOT_ADMITTED_TO_APPROVED_WBS | FS | 0 | 306 | 307 | 307 | 306 | 0 | True | HAR-0590 |  |
| HAR-0592 | HAR.SUPERSTRUCTURE.SECOND | SUPERSTRUCTURE | SECOND | Second floor: Shear/lift wall formwork and inspection | 1 | ILLUSTRATIVE_CREW_PLANNING_SEED_NOT_APPROVED | NOT_MEASURED | FORMWORK | REFERENCE_ONLY_NOT_ACTUAL_SITE_ALLOCATION | ARC-02/05, STR-03/17, RPT-2083 | PROPOSED_NOT_ADMITTED_TO_APPROVED_WBS | FS | 0 | 307 | 308 | 308 | 307 | 0 | True | HAR-0591 |  |
| HAR-0593 | HAR.SUPERSTRUCTURE.SECOND | SUPERSTRUCTURE | SECOND | Second floor: Shear/lift wall M25 pour and tests | 1 | ILLUSTRATIVE_CREW_PLANNING_SEED_NOT_APPROVED | NOT_MEASURED | CONCRETE | REFERENCE_ONLY_NOT_ACTUAL_SITE_ALLOCATION | ARC-02/05, STR-03/17, RPT-2083 | PROPOSED_NOT_ADMITTED_TO_APPROVED_WBS | FS | 0 | 308 | 309 | 309 | 308 | 0 | True | HAR-0592 |  |
| HAR-0594 | HAR.SUPERSTRUCTURE.SECOND | SUPERSTRUCTURE | SECOND | Second floor: Beam soffit formwork, props and deck platforms | 3 | ILLUSTRATIVE_CREW_PLANNING_SEED_NOT_APPROVED | NOT_MEASURED | FORMWORK | REFERENCE_ONLY_NOT_ACTUAL_SITE_ALLOCATION | ARC-02/05, STR-03/17, RPT-2083 | PROPOSED_NOT_ADMITTED_TO_APPROVED_WBS | FS | 0 | 309 | 312 | 312 | 309 | 0 | True | HAR-0593 |  |
| HAR-0595 | HAR.SUPERSTRUCTURE.SECOND | SUPERSTRUCTURE | SECOND | Second floor: Slab deck, openings, stair flights and terrace edge shuttering | 3 | ILLUSTRATIVE_CREW_PLANNING_SEED_NOT_APPROVED | NOT_MEASURED | FORMWORK | REFERENCE_ONLY_NOT_ACTUAL_SITE_ALLOCATION | ARC-02/05, STR-03/17, RPT-2083 | PROPOSED_NOT_ADMITTED_TO_APPROVED_WBS | FS | 0 | 312 | 315 | 315 | 312 | 0 | True | HAR-0594 |  |
| HAR-0596 | HAR.SUPERSTRUCTURE.SECOND | SUPERSTRUCTURE | SECOND | Second floor: Beam flexural and shear reinforcement including junction continuity | 3 | ILLUSTRATIVE_CREW_PLANNING_SEED_NOT_APPROVED | NOT_MEASURED | REBAR | REFERENCE_ONLY_NOT_ACTUAL_SITE_ALLOCATION | ARC-02/05, STR-03/17, RPT-2083 | PROPOSED_NOT_ADMITTED_TO_APPROVED_WBS | FS | 0 | 315 | 318 | 318 | 315 | 0 | True | HAR-0595 |  |
| HAR-0597 | HAR.SUPERSTRUCTURE.SECOND | SUPERSTRUCTURE | SECOND | Second floor: Slab top/bottom mats, extra bars and staircase steel | 3 | ILLUSTRATIVE_CREW_PLANNING_SEED_NOT_APPROVED | NOT_MEASURED | REBAR | REFERENCE_ONLY_NOT_ACTUAL_SITE_ALLOCATION | ARC-02/05, STR-03/17, RPT-2083 | PROPOSED_NOT_ADMITTED_TO_APPROVED_WBS | FS | 0 | 318 | 321 | 321 | 318 | 0 | True | HAR-0596 |  |
| HAR-0598 | HAR.SUPERSTRUCTURE.SECOND | SUPERSTRUCTURE | SECOND | Second floor: Electrical conduits, plumbing sleeves and floor penetrations | 2 | ILLUSTRATIVE_CREW_PLANNING_SEED_NOT_APPROVED | NOT_MEASURED | MEP_COORDINATION | REFERENCE_ONLY_NOT_ACTUAL_SITE_ALLOCATION | ARC-02/05, STR-03/17, RPT-2083 | PROPOSED_NOT_ADMITTED_TO_APPROVED_WBS | FS | 0 | 321 | 323 | 323 | 321 | 0 | True | HAR-0597 |  |
| HAR-0599 | HAR.SUPERSTRUCTURE.SECOND | SUPERSTRUCTURE | SECOND | Second floor: Beam/slab/stair formwork & steel hold-point inspection | 0 | MILESTONE_ZERO_DURATION | NOT_MEASURED | ENGINEER_INSPECTION | REFERENCE_ONLY_NOT_ACTUAL_SITE_ALLOCATION | ARC-02/05, STR-03/17, RPT-2083 | PROPOSED_NOT_ADMITTED_TO_APPROVED_WBS | FS | 0 | 323 | 323 | 323 | 323 | 0 | True | HAR-0598 | True |
| HAR-0600 | HAR.SUPERSTRUCTURE.SECOND | SUPERSTRUCTURE | SECOND | Second floor: M25 beam/slab/stair placement, slump/cubes and leveling | 2 | ILLUSTRATIVE_CREW_PLANNING_SEED_NOT_APPROVED | PROVISIONAL_GEOMETRY_FROM_SOURCE | CONCRETE | REFERENCE_ONLY_NOT_ACTUAL_SITE_ALLOCATION | ARC-02/05, STR-03/17, RPT-2083 | PROPOSED_NOT_ADMITTED_TO_APPROVED_WBS | FS | 0 | 323 | 325 | 325 | 323 | 0 | True | HAR-0599 |  |
| HAR-0601 | HAR.SUPERSTRUCTURE.SECOND | SUPERSTRUCTURE | SECOND | Second floor: Curing, prop-retention and construction-load control | 7 | ILLUSTRATIVE_CREW_PLANNING_SEED_NOT_APPROVED | NOT_MEASURED | CONCRETE | REFERENCE_ONLY_NOT_ACTUAL_SITE_ALLOCATION | ARC-02/05, STR-03/17, RPT-2083 | PROPOSED_NOT_ADMITTED_TO_APPROVED_WBS | FS | 0 | 325 | 332 | 332 | 325 | 0 | True | HAR-0600 |  |
| HAR-0602 | HAR.SUPERSTRUCTURE.SECOND | SUPERSTRUCTURE | SECOND | Second floor: Structural pour and dimensional QA hold | 0 | MILESTONE_ZERO_DURATION | NOT_MEASURED | ENGINEER_INSPECTION | REFERENCE_ONLY_NOT_ACTUAL_SITE_ALLOCATION | ARC-02/05, STR-03/17, RPT-2083 | PROPOSED_NOT_ADMITTED_TO_APPROVED_WBS | FS | 0 | 332 | 332 | 332 | 332 | 0 | True | HAR-0601 | True |
| HAR-0603 | HAR.MASONRY.SECOND | MASONRY | SECOND | Second floor: Masonry set-out, openings and wall thickness check | 1 | ILLUSTRATIVE_CREW_PLANNING_SEED_NOT_APPROVED | NOT_MEASURED | SURVEY | REFERENCE_ONLY_NOT_ACTUAL_SITE_ALLOCATION | ARC-02/05, CAD-R000002-PROVISIONAL | PROPOSED_NOT_ADMITTED_TO_APPROVED_WBS | FS | 0 | 332 | 333 | 411 | 410 | 78 |  | HAR-0602 |  |
| HAR-0604 | HAR.MASONRY.SECOND | MASONRY | SECOND | Second floor: Masonry material sampling, wetting and mortar preparation | 1 | ILLUSTRATIVE_CREW_PLANNING_SEED_NOT_APPROVED | NOT_MEASURED | MASONRY | REFERENCE_ONLY_NOT_ACTUAL_SITE_ALLOCATION | ARC-02/05, CAD-R000002-PROVISIONAL | PROPOSED_NOT_ADMITTED_TO_APPROVED_WBS | FS | 0 | 333 | 334 | 412 | 411 | 78 |  | HAR-0603 |  |
| HAR-0605 | HAR.MASONRY.SECOND | MASONRY | SECOND | Second floor: External wall masonry lifts incl. lintel interface | 4 | ILLUSTRATIVE_CREW_PLANNING_SEED_NOT_APPROVED | NOT_MEASURED | MASONRY | REFERENCE_ONLY_NOT_ACTUAL_SITE_ALLOCATION | ARC-02/05, CAD-R000002-PROVISIONAL | PROPOSED_NOT_ADMITTED_TO_APPROVED_WBS | FS | 0 | 334 | 338 | 416 | 412 | 78 |  | HAR-0604 |  |
| HAR-0606 | HAR.MASONRY.SECOND | MASONRY | SECOND | Second floor: Internal partition masonry lifts and ties | 3 | ILLUSTRATIVE_CREW_PLANNING_SEED_NOT_APPROVED | NOT_MEASURED | MASONRY | REFERENCE_ONLY_NOT_ACTUAL_SITE_ALLOCATION | ARC-02/05, CAD-R000002-PROVISIONAL | PROPOSED_NOT_ADMITTED_TO_APPROVED_WBS | FS | 0 | 338 | 341 | 419 | 416 | 78 |  | HAR-0605 |  |
| HAR-0607 | HAR.MASONRY.SECOND | MASONRY | SECOND | Second floor: Door and window opening verification with schedules | 1 | ILLUSTRATIVE_CREW_PLANNING_SEED_NOT_APPROVED | NOT_MEASURED | SURVEY | REFERENCE_ONLY_NOT_ACTUAL_SITE_ALLOCATION | ARC-02/05, CAD-R000002-PROVISIONAL | PROPOSED_NOT_ADMITTED_TO_APPROVED_WBS | FS | 0 | 341 | 342 | 420 | 419 | 78 |  | HAR-0606 |  |
| HAR-0608 | HAR.MASONRY.SECOND | MASONRY | SECOND | Second floor: Nonstructural wall hold / seismic separation check | 0 | MILESTONE_ZERO_DURATION | NOT_MEASURED | ENGINEER_INSPECTION | REFERENCE_ONLY_NOT_ACTUAL_SITE_ALLOCATION | ARC-02/05, CAD-R000002-PROVISIONAL | PROPOSED_NOT_ADMITTED_TO_APPROVED_WBS | FS | 0 | 342 | 342 | 420 | 420 | 78 |  | HAR-0607 | True |
| HAR-0609 | HAR.MASONRY.SECOND | MASONRY | SECOND | Second floor: Internal and external chasing coordinates agreed with MEP | 1 | ILLUSTRATIVE_CREW_PLANNING_SEED_NOT_APPROVED | NOT_MEASURED | MEP_COORDINATION | REFERENCE_ONLY_NOT_ACTUAL_SITE_ALLOCATION | ARC-02/05, CAD-R000002-PROVISIONAL | PROPOSED_NOT_ADMITTED_TO_APPROVED_WBS | FS | 0 | 342 | 343 | 421 | 420 | 78 |  | HAR-0608 |  |
| HAR-0610 | HAR.MEP_ROUGH_IN.SECOND | MEP_ROUGH_IN | SECOND | Second floor: MEP floor drawing coordination and ceiling-zone clash review | 2 | ILLUSTRATIVE_CREW_PLANNING_SEED_NOT_APPROVED | NOT_MEASURED | MEP_COORDINATION | REFERENCE_ONLY_NOT_ACTUAL_SITE_ALLOCATION | ARC-02/05, DUDBC-2081, SCOPE_TO_CONFIRM | PROPOSED_NOT_ADMITTED_TO_APPROVED_WBS | FS | 0 | 343 | 345 | 423 | 421 | 78 |  | HAR-0609, HAR-0054, HAR-0055, HAR-0056, HAR-0058 |  |
| HAR-0611 | HAR.MEP_ROUGH_IN.SECOND | MEP_ROUGH_IN | SECOND | Second floor: Drainage stack riser supports and sleeve installation | 2 | ILLUSTRATIVE_CREW_PLANNING_SEED_NOT_APPROVED | NOT_MEASURED | PLUMBING | REFERENCE_ONLY_NOT_ACTUAL_SITE_ALLOCATION | ARC-02/05, DUDBC-2081, SCOPE_TO_CONFIRM | PROPOSED_NOT_ADMITTED_TO_APPROVED_WBS | FS | 0 | 345 | 347 | 425 | 423 | 78 |  | HAR-0610 |  |
| HAR-0612 | HAR.MEP_ROUGH_IN.SECOND | MEP_ROUGH_IN | SECOND | Second floor: Cold water distribution and pressure-line rough in | 2 | ILLUSTRATIVE_CREW_PLANNING_SEED_NOT_APPROVED | NOT_MEASURED | PLUMBING | REFERENCE_ONLY_NOT_ACTUAL_SITE_ALLOCATION | ARC-02/05, DUDBC-2081, SCOPE_TO_CONFIRM | PROPOSED_NOT_ADMITTED_TO_APPROVED_WBS | FS | 0 | 347 | 349 | 427 | 425 | 78 |  | HAR-0611 |  |
| HAR-0613 | HAR.MEP_ROUGH_IN.SECOND | MEP_ROUGH_IN | SECOND | Second floor: Soil/waste/vent pipe branches and floor traps | 2 | ILLUSTRATIVE_CREW_PLANNING_SEED_NOT_APPROVED | NOT_MEASURED | PLUMBING | REFERENCE_ONLY_NOT_ACTUAL_SITE_ALLOCATION | ARC-02/05, DUDBC-2081, SCOPE_TO_CONFIRM | PROPOSED_NOT_ADMITTED_TO_APPROVED_WBS | FS | 0 | 349 | 351 | 429 | 427 | 78 |  | HAR-0612 |  |
| HAR-0614 | HAR.MEP_ROUGH_IN.SECOND | MEP_ROUGH_IN | SECOND | Second floor: Sanitary wall sleeve, shaft access and cleanout placement | 1 | ILLUSTRATIVE_CREW_PLANNING_SEED_NOT_APPROVED | NOT_MEASURED | PLUMBING | REFERENCE_ONLY_NOT_ACTUAL_SITE_ALLOCATION | ARC-02/05, DUDBC-2081, SCOPE_TO_CONFIRM | PROPOSED_NOT_ADMITTED_TO_APPROVED_WBS | FS | 0 | 351 | 352 | 430 | 429 | 78 |  | HAR-0613 |  |
| HAR-0615 | HAR.MEP_ROUGH_IN.SECOND | MEP_ROUGH_IN | SECOND | Second floor: Electrical concealed conduit and switchboard rough in | 2 | ILLUSTRATIVE_CREW_PLANNING_SEED_NOT_APPROVED | NOT_MEASURED | ELECTRICAL | REFERENCE_ONLY_NOT_ACTUAL_SITE_ALLOCATION | ARC-02/05, DUDBC-2081, SCOPE_TO_CONFIRM | PROPOSED_NOT_ADMITTED_TO_APPROVED_WBS | FS | 0 | 352 | 354 | 432 | 430 | 78 |  | HAR-0614 |  |
| HAR-0616 | HAR.MEP_ROUGH_IN.SECOND | MEP_ROUGH_IN | SECOND | Second floor: Electrical riser ducts, earthing/bonding rough in | 2 | ILLUSTRATIVE_CREW_PLANNING_SEED_NOT_APPROVED | NOT_MEASURED | ELECTRICAL | REFERENCE_ONLY_NOT_ACTUAL_SITE_ALLOCATION | ARC-02/05, DUDBC-2081, SCOPE_TO_CONFIRM | PROPOSED_NOT_ADMITTED_TO_APPROVED_WBS | FS | 0 | 354 | 356 | 434 | 432 | 78 |  | HAR-0615 |  |
| HAR-0617 | HAR.MEP_ROUGH_IN.SECOND | MEP_ROUGH_IN | SECOND | Second floor: Fire detection/alarm conduits and interfaces | 2 | ILLUSTRATIVE_CREW_PLANNING_SEED_NOT_APPROVED | NOT_MEASURED | FIRE | REFERENCE_ONLY_NOT_ACTUAL_SITE_ALLOCATION | ARC-02/05, DUDBC-2081, SCOPE_TO_CONFIRM | PROPOSED_NOT_ADMITTED_TO_APPROVED_WBS | FS | 0 | 356 | 358 | 436 | 434 | 78 |  | HAR-0616 |  |
| HAR-0618 | HAR.MEP_ROUGH_IN.SECOND | MEP_ROUGH_IN | SECOND | Second floor: Emergency/exit-lighting circuits rough in | 1 | ILLUSTRATIVE_CREW_PLANNING_SEED_NOT_APPROVED | NOT_MEASURED | ELECTRICAL | REFERENCE_ONLY_NOT_ACTUAL_SITE_ALLOCATION | ARC-02/05, DUDBC-2081, SCOPE_TO_CONFIRM | PROPOSED_NOT_ADMITTED_TO_APPROVED_WBS | FS | 0 | 358 | 359 | 437 | 436 | 78 |  | HAR-0617 |  |
| HAR-0619 | HAR.MEP_ROUGH_IN.SECOND | MEP_ROUGH_IN | SECOND | Second floor: Telecom/data/CCTV service raceway rough in (if in scope) | 2 | ILLUSTRATIVE_CREW_PLANNING_SEED_NOT_APPROVED | NOT_MEASURED | LOW_VOLTAGE | REFERENCE_ONLY_NOT_ACTUAL_SITE_ALLOCATION | ARC-02/05, DUDBC-2081, SCOPE_TO_CONFIRM | PROPOSED_NOT_ADMITTED_TO_APPROVED_WBS | FS | 0 | 359 | 361 | 439 | 437 | 78 |  | HAR-0618 |  |
| HAR-0620 | HAR.MEP_ROUGH_IN.SECOND | MEP_ROUGH_IN | SECOND | Second floor: Ventilation / exhaust pathways and shafts (subject to design) | 2 | ILLUSTRATIVE_CREW_PLANNING_SEED_NOT_APPROVED | NOT_MEASURED | VENTILATION | REFERENCE_ONLY_NOT_ACTUAL_SITE_ALLOCATION | ARC-02/05, DUDBC-2081, SCOPE_TO_CONFIRM | PROPOSED_NOT_ADMITTED_TO_APPROVED_WBS | FS | 0 | 361 | 363 | 441 | 439 | 78 |  | HAR-0619 |  |
| HAR-0621 | HAR.MEP_ROUGH_IN.SECOND | MEP_ROUGH_IN | SECOND | Second floor: Lift shaft dimension, embed and access coordination (where applicable) | 1 | ILLUSTRATIVE_CREW_PLANNING_SEED_NOT_APPROVED | NOT_MEASURED | LIFT | REFERENCE_ONLY_NOT_ACTUAL_SITE_ALLOCATION | ARC-02/05, DUDBC-2081, SCOPE_TO_CONFIRM | PROPOSED_NOT_ADMITTED_TO_APPROVED_WBS | FS | 0 | 363 | 364 | 442 | 441 | 78 |  | HAR-0620 |  |
| HAR-0622 | HAR.MEP_ROUGH_IN.SECOND | MEP_ROUGH_IN | SECOND | Second floor: MEP pressure/leak tests before plaster | 0 | MILESTONE_ZERO_DURATION | NOT_MEASURED | INSPECTION | REFERENCE_ONLY_NOT_ACTUAL_SITE_ALLOCATION | ARC-02/05, DUDBC-2081, SCOPE_TO_CONFIRM | PROPOSED_NOT_ADMITTED_TO_APPROVED_WBS | FS | 0 | 364 | 364 | 442 | 442 | 78 |  | HAR-0621 | True |
| HAR-0623 | HAR.MEP_ROUGH_IN.SECOND | MEP_ROUGH_IN | SECOND | Second floor: MEP cable continuity and conduit inspection hold | 0 | MILESTONE_ZERO_DURATION | NOT_MEASURED | INSPECTION | REFERENCE_ONLY_NOT_ACTUAL_SITE_ALLOCATION | ARC-02/05, DUDBC-2081, SCOPE_TO_CONFIRM | PROPOSED_NOT_ADMITTED_TO_APPROVED_WBS | FS | 0 | 364 | 364 | 442 | 442 | 78 |  | HAR-0622 | True |
| HAR-0624 | HAR.MEP_ROUGH_IN.SECOND | MEP_ROUGH_IN | SECOND | Second floor: Repair chase cuts and firestop service penetrations | 1 | ILLUSTRATIVE_CREW_PLANNING_SEED_NOT_APPROVED | NOT_MEASURED | MASONRY | REFERENCE_ONLY_NOT_ACTUAL_SITE_ALLOCATION | ARC-02/05, DUDBC-2081, SCOPE_TO_CONFIRM | PROPOSED_NOT_ADMITTED_TO_APPROVED_WBS | FS | 0 | 364 | 365 | 443 | 442 | 78 |  | HAR-0623 |  |
| HAR-0625 | HAR.MEP_ROUGH_IN.SECOND | MEP_ROUGH_IN | SECOND | Second floor: MEP first-fix release milestone | 0 | MILESTONE_ZERO_DURATION | NOT_MEASURED | INSPECTION | REFERENCE_ONLY_NOT_ACTUAL_SITE_ALLOCATION | ARC-02/05, DUDBC-2081, SCOPE_TO_CONFIRM | PROPOSED_NOT_ADMITTED_TO_APPROVED_WBS | FS | 0 | 365 | 365 | 443 | 443 | 78 |  | HAR-0624 | True |
| HAR-0626 | HAR.FINISHES.SECOND | FINISHES | SECOND | Second floor: Wet area screed and falls inspection | 2 | ILLUSTRATIVE_CREW_PLANNING_SEED_NOT_APPROVED | NOT_MEASURED | FLOORING | REFERENCE_ONLY_NOT_ACTUAL_SITE_ALLOCATION | ARC-02/05, DUDBC-2081, SCOPE_TO_CONFIRM | PROPOSED_NOT_ADMITTED_TO_APPROVED_WBS | FS | 0 | 365 | 367 | 445 | 443 | 78 |  | HAR-0625 |  |
| HAR-0627 | HAR.FINISHES.SECOND | FINISHES | SECOND | Second floor: Waterproofing substrate moisture / surface preparation | 2 | ILLUSTRATIVE_CREW_PLANNING_SEED_NOT_APPROVED | NOT_MEASURED | WATERPROOFING | REFERENCE_ONLY_NOT_ACTUAL_SITE_ALLOCATION | ARC-02/05, DUDBC-2081, SCOPE_TO_CONFIRM | PROPOSED_NOT_ADMITTED_TO_APPROVED_WBS | FS | 0 | 367 | 369 | 447 | 445 | 78 |  | HAR-0626, HAR-0051 |  |
| HAR-0628 | HAR.FINISHES.SECOND | FINISHES | SECOND | Second floor: Wet area waterproofing membranes and upstands | 2 | ILLUSTRATIVE_CREW_PLANNING_SEED_NOT_APPROVED | NOT_MEASURED | WATERPROOFING | REFERENCE_ONLY_NOT_ACTUAL_SITE_ALLOCATION | ARC-02/05, DUDBC-2081, SCOPE_TO_CONFIRM | PROPOSED_NOT_ADMITTED_TO_APPROVED_WBS | FS | 0 | 369 | 371 | 449 | 447 | 78 |  | HAR-0627 |  |
| HAR-0629 | HAR.FINISHES.SECOND | FINISHES | SECOND | Second floor: Flood test and waterproofing hold | 0 | MILESTONE_ZERO_DURATION | NOT_MEASURED | INSPECTION | REFERENCE_ONLY_NOT_ACTUAL_SITE_ALLOCATION | ARC-02/05, DUDBC-2081, SCOPE_TO_CONFIRM | PROPOSED_NOT_ADMITTED_TO_APPROVED_WBS | FS | 0 | 371 | 371 | 449 | 449 | 78 |  | HAR-0628 | True |
| HAR-0630 | HAR.FINISHES.SECOND | FINISHES | SECOND | Second floor: Internal plaster/render to walls | 4 | ILLUSTRATIVE_CREW_PLANNING_SEED_NOT_APPROVED | NOT_MEASURED | PLASTER | REFERENCE_ONLY_NOT_ACTUAL_SITE_ALLOCATION | ARC-02/05, DUDBC-2081, SCOPE_TO_CONFIRM | PROPOSED_NOT_ADMITTED_TO_APPROVED_WBS | FS | 0 | 371 | 375 | 453 | 449 | 78 |  | HAR-0629 |  |

| activity_id | wbs | phase | scope | title | duration_workdays | duration_basis | quantity_basis | crew_category | crew_basis | source_refs | status | logic_type | lag_workdays | planned_start_workday | planned_finish_workday | latest_finish_workday | latest_start_workday | total_float_workdays | critical | predecessor_ids | engineering_hold |
| --- | --- | --- | --- | --- | --- | --- | --- | --- | --- | --- | --- | --- | --- | --- | --- | --- | --- | --- | --- | --- | --- |
| HAR-0631 | HAR.FINISHES.SECOND | FINISHES | SECOND | Second floor: External render and wall repair | 4 | ILLUSTRATIVE_CREW_PLANNING_SEED_NOT_APPROVED | NOT_MEASURED | PLASTER | REFERENCE_ONLY_NOT_ACTUAL_SITE_ALLOCATION | ARC-02/05, DUDBC-2081, SCOPE_TO_CONFIRM | PROPOSED_NOT_ADMITTED_TO_APPROVED_WBS | FS | 0 | 375 | 379 | 457 | 453 | 78 |  | HAR-0630 |  |
| HAR-0632 | HAR.FINISHES.SECOND | FINISHES | SECOND | Second floor: Plaster curing and line/plumb QA | 2 | ILLUSTRATIVE_CREW_PLANNING_SEED_NOT_APPROVED | NOT_MEASURED | PLASTER | REFERENCE_ONLY_NOT_ACTUAL_SITE_ALLOCATION | ARC-02/05, DUDBC-2081, SCOPE_TO_CONFIRM | PROPOSED_NOT_ADMITTED_TO_APPROVED_WBS | FS | 0 | 379 | 381 | 459 | 457 | 78 |  | HAR-0631 |  |
| HAR-0633 | HAR.FINISHES.SECOND | FINISHES | SECOND | Second floor: Floor levelling / screed and flatness checks | 2 | ILLUSTRATIVE_CREW_PLANNING_SEED_NOT_APPROVED | NOT_MEASURED | FLOORING | REFERENCE_ONLY_NOT_ACTUAL_SITE_ALLOCATION | ARC-02/05, DUDBC-2081, SCOPE_TO_CONFIRM | PROPOSED_NOT_ADMITTED_TO_APPROVED_WBS | FS | 0 | 381 | 383 | 461 | 459 | 78 |  | HAR-0632 |  |
| HAR-0634 | HAR.FINISHES.SECOND | FINISHES | SECOND | Second floor: Ceiling suspension / plasterboard preparation where designed | 2 | ILLUSTRATIVE_CREW_PLANNING_SEED_NOT_APPROVED | NOT_MEASURED | CEILING | REFERENCE_ONLY_NOT_ACTUAL_SITE_ALLOCATION | ARC-02/05, DUDBC-2081, SCOPE_TO_CONFIRM | PROPOSED_NOT_ADMITTED_TO_APPROVED_WBS | FS | 0 | 383 | 385 | 463 | 461 | 78 |  | HAR-0633 |  |
| HAR-0635 | HAR.FINISHES.SECOND | FINISHES | SECOND | Second floor: Floor tile/stone/finish laying | 4 | ILLUSTRATIVE_CREW_PLANNING_SEED_NOT_APPROVED | NOT_MEASURED | FLOORING | REFERENCE_ONLY_NOT_ACTUAL_SITE_ALLOCATION | ARC-02/05, DUDBC-2081, SCOPE_TO_CONFIRM | PROPOSED_NOT_ADMITTED_TO_APPROVED_WBS | FS | 0 | 385 | 389 | 467 | 463 | 78 |  | HAR-0634 |  |
| HAR-0636 | HAR.FINISHES.SECOND | FINISHES | SECOND | Second floor: Wall tiles in wet and service areas | 3 | ILLUSTRATIVE_CREW_PLANNING_SEED_NOT_APPROVED | NOT_MEASURED | FLOORING | REFERENCE_ONLY_NOT_ACTUAL_SITE_ALLOCATION | ARC-02/05, DUDBC-2081, SCOPE_TO_CONFIRM | PROPOSED_NOT_ADMITTED_TO_APPROVED_WBS | FS | 0 | 389 | 392 | 470 | 467 | 78 |  | HAR-0635 |  |
| HAR-0637 | HAR.FINISHES.SECOND | FINISHES | SECOND | Second floor: Door frame installation and alignment | 2 | ILLUSTRATIVE_CREW_PLANNING_SEED_NOT_APPROVED | NOT_MEASURED | JOINERY | REFERENCE_ONLY_NOT_ACTUAL_SITE_ALLOCATION | ARC-02/05, DUDBC-2081, SCOPE_TO_CONFIRM | PROPOSED_NOT_ADMITTED_TO_APPROVED_WBS | FS | 0 | 392 | 394 | 472 | 470 | 78 |  | HAR-0636, HAR-0053 |  |
| HAR-0638 | HAR.FINISHES.SECOND | FINISHES | SECOND | Second floor: Window frame installation / flashing / sealant | 2 | ILLUSTRATIVE_CREW_PLANNING_SEED_NOT_APPROVED | NOT_MEASURED | JOINERY | REFERENCE_ONLY_NOT_ACTUAL_SITE_ALLOCATION | ARC-02/05, DUDBC-2081, SCOPE_TO_CONFIRM | PROPOSED_NOT_ADMITTED_TO_APPROVED_WBS | FS | 0 | 394 | 396 | 474 | 472 | 78 |  | HAR-0637 |  |
| HAR-0639 | HAR.FINISHES.SECOND | FINISHES | SECOND | Second floor: Internal door leaves, hardware and locks | 2 | ILLUSTRATIVE_CREW_PLANNING_SEED_NOT_APPROVED | NOT_MEASURED | JOINERY | REFERENCE_ONLY_NOT_ACTUAL_SITE_ALLOCATION | ARC-02/05, DUDBC-2081, SCOPE_TO_CONFIRM | PROPOSED_NOT_ADMITTED_TO_APPROVED_WBS | FS | 0 | 396 | 398 | 476 | 474 | 78 |  | HAR-0638 |  |
| HAR-0640 | HAR.FINISHES.SECOND | FINISHES | SECOND | Second floor: Electrical cable pulling, fittings, DB final connections | 2 | ILLUSTRATIVE_CREW_PLANNING_SEED_NOT_APPROVED | NOT_MEASURED | ELECTRICAL | REFERENCE_ONLY_NOT_ACTUAL_SITE_ALLOCATION | ARC-02/05, DUDBC-2081, SCOPE_TO_CONFIRM | PROPOSED_NOT_ADMITTED_TO_APPROVED_WBS | FS | 0 | 398 | 400 | 478 | 476 | 78 |  | HAR-0639 |  |
| HAR-0641 | HAR.FINISHES.SECOND | FINISHES | SECOND | Second floor: Plumbing fixtures, valves, sanitary fittings | 2 | ILLUSTRATIVE_CREW_PLANNING_SEED_NOT_APPROVED | NOT_MEASURED | PLUMBING | REFERENCE_ONLY_NOT_ACTUAL_SITE_ALLOCATION | ARC-02/05, DUDBC-2081, SCOPE_TO_CONFIRM | PROPOSED_NOT_ADMITTED_TO_APPROVED_WBS | FS | 0 | 400 | 402 | 480 | 478 | 78 |  | HAR-0640 |  |
| HAR-0642 | HAR.FINISHES.SECOND | FINISHES | SECOND | Second floor: Fire alarm devices, emergency lighting and first-stage checks | 2 | ILLUSTRATIVE_CREW_PLANNING_SEED_NOT_APPROVED | NOT_MEASURED | FIRE | REFERENCE_ONLY_NOT_ACTUAL_SITE_ALLOCATION | ARC-02/05, DUDBC-2081, SCOPE_TO_CONFIRM | PROPOSED_NOT_ADMITTED_TO_APPROVED_WBS | FS | 0 | 402 | 404 | 482 | 480 | 78 |  | HAR-0641 |  |
| HAR-0643 | HAR.FINISHES.SECOND | FINISHES | SECOND | Second floor: Surface primer, putty and finish coats | 3 | ILLUSTRATIVE_CREW_PLANNING_SEED_NOT_APPROVED | NOT_MEASURED | PAINTING | REFERENCE_ONLY_NOT_ACTUAL_SITE_ALLOCATION | ARC-02/05, DUDBC-2081, SCOPE_TO_CONFIRM | PROPOSED_NOT_ADMITTED_TO_APPROVED_WBS | FS | 0 | 404 | 407 | 485 | 482 | 78 |  | HAR-0642 |  |
| HAR-0644 | HAR.FINISHES.SECOND | FINISHES | SECOND | Second floor: Balustrades, handrails and stair finishes | 2 | ILLUSTRATIVE_CREW_PLANNING_SEED_NOT_APPROVED | NOT_MEASURED | METALWORK | REFERENCE_ONLY_NOT_ACTUAL_SITE_ALLOCATION | ARC-02/05, DUDBC-2081, SCOPE_TO_CONFIRM | PROPOSED_NOT_ADMITTED_TO_APPROVED_WBS | FS | 0 | 407 | 409 | 487 | 485 | 78 |  | HAR-0643 |  |
| HAR-0645 | HAR.FINISHES.SECOND | FINISHES | SECOND | Second floor: Room-level electrical, plumbing and leakage tests | 0 | MILESTONE_ZERO_DURATION | NOT_MEASURED | INSPECTION | REFERENCE_ONLY_NOT_ACTUAL_SITE_ALLOCATION | ARC-02/05, DUDBC-2081, SCOPE_TO_CONFIRM | PROPOSED_NOT_ADMITTED_TO_APPROVED_WBS | FS | 0 | 409 | 409 | 487 | 487 | 78 |  | HAR-0644 | True |
| HAR-0646 | HAR.FINISHES.SECOND | FINISHES | SECOND | Second floor: Floor defects/punch list and as-built capture | 2 | ILLUSTRATIVE_CREW_PLANNING_SEED_NOT_APPROVED | NOT_MEASURED | QA | REFERENCE_ONLY_NOT_ACTUAL_SITE_ALLOCATION | ARC-02/05, DUDBC-2081, SCOPE_TO_CONFIRM | PROPOSED_NOT_ADMITTED_TO_APPROVED_WBS | FS | 0 | 409 | 411 | 489 | 487 | 78 |  | HAR-0645 |  |
| HAR-0647 | HAR.SUPERSTRUCTURE.THIRD | SUPERSTRUCTURE | THIRD | Third floor: Level/grid set-out and survey acceptance | 1 | ILLUSTRATIVE_CREW_PLANNING_SEED_NOT_APPROVED | NOT_MEASURED | SURVEY | REFERENCE_ONLY_NOT_ACTUAL_SITE_ALLOCATION | ARC-02/05, STR-03/17, RPT-2083 | PROPOSED_NOT_ADMITTED_TO_APPROVED_WBS | FS | 0 | 332 | 333 | 333 | 332 | 0 | True | HAR-0602 |  |
| HAR-0648 | HAR.SUPERSTRUCTURE.THIRD | SUPERSTRUCTURE | THIRD | Third floor: Working platform, access/scaffold / fall protection | 2 | ILLUSTRATIVE_CREW_PLANNING_SEED_NOT_APPROVED | NOT_MEASURED | FORMWORK | REFERENCE_ONLY_NOT_ACTUAL_SITE_ALLOCATION | ARC-02/05, STR-03/17, RPT-2083 | PROPOSED_NOT_ADMITTED_TO_APPROVED_WBS | FS | 0 | 333 | 335 | 335 | 333 | 0 | True | HAR-0647 |  |
| HAR-0649 | HAR.SUPERSTRUCTURE.THIRD | SUPERSTRUCTURE | THIRD | Third floor: Column reinforcement cutting/bending and splice checks | 2 | ILLUSTRATIVE_CREW_PLANNING_SEED_NOT_APPROVED | NOT_MEASURED | REBAR | REFERENCE_ONLY_NOT_ACTUAL_SITE_ALLOCATION | ARC-02/05, STR-03/17, RPT-2083 | PROPOSED_NOT_ADMITTED_TO_APPROVED_WBS | FS | 0 | 335 | 337 | 337 | 335 | 0 | True | HAR-0648 |  |
| HAR-0650 | HAR.SUPERSTRUCTURE.THIRD | SUPERSTRUCTURE | THIRD | Third floor: Column tie/confinement six-leg detail inspection | 0 | MILESTONE_ZERO_DURATION | NOT_MEASURED | ENGINEER_INSPECTION | REFERENCE_ONLY_NOT_ACTUAL_SITE_ALLOCATION | ARC-02/05, STR-03/17, RPT-2083 | PROPOSED_NOT_ADMITTED_TO_APPROVED_WBS | FS | 0 | 337 | 337 | 337 | 337 | 0 | True | HAR-0649 | True |
| HAR-0651 | HAR.SUPERSTRUCTURE.THIRD | SUPERSTRUCTURE | THIRD | Third floor: Column shutter, line and verticality | 2 | ILLUSTRATIVE_CREW_PLANNING_SEED_NOT_APPROVED | NOT_MEASURED | FORMWORK | REFERENCE_ONLY_NOT_ACTUAL_SITE_ALLOCATION | ARC-02/05, STR-03/17, RPT-2083 | PROPOSED_NOT_ADMITTED_TO_APPROVED_WBS | FS | 0 | 337 | 339 | 339 | 337 | 0 | True | HAR-0650 |  |
| HAR-0652 | HAR.SUPERSTRUCTURE.THIRD | SUPERSTRUCTURE | THIRD | Third floor: Column M25 pour, vibration and samples | 1 | ILLUSTRATIVE_CREW_PLANNING_SEED_NOT_APPROVED | NOT_MEASURED | CONCRETE | REFERENCE_ONLY_NOT_ACTUAL_SITE_ALLOCATION | ARC-02/05, STR-03/17, RPT-2083 | PROPOSED_NOT_ADMITTED_TO_APPROVED_WBS | FS | 0 | 339 | 340 | 340 | 339 | 0 | True | HAR-0651 |  |
| HAR-0653 | HAR.SUPERSTRUCTURE.THIRD | SUPERSTRUCTURE | THIRD | Third floor: Column/beam junction strength/strip hold | 2 | ILLUSTRATIVE_CREW_PLANNING_SEED_NOT_APPROVED | NOT_MEASURED | ENGINEER_INSPECTION | REFERENCE_ONLY_NOT_ACTUAL_SITE_ALLOCATION | ARC-02/05, STR-03/17, RPT-2083 | PROPOSED_NOT_ADMITTED_TO_APPROVED_WBS | FS | 0 | 340 | 342 | 342 | 340 | 0 | True | HAR-0652 |  |
| HAR-0654 | HAR.SUPERSTRUCTURE.THIRD | SUPERSTRUCTURE | THIRD | Third floor: Shear/lift wall reinforcement and boundary elements | 2 | ILLUSTRATIVE_CREW_PLANNING_SEED_NOT_APPROVED | NOT_MEASURED | REBAR | REFERENCE_ONLY_NOT_ACTUAL_SITE_ALLOCATION | ARC-02/05, STR-03/17, RPT-2083 | PROPOSED_NOT_ADMITTED_TO_APPROVED_WBS | FS | 0 | 342 | 344 | 344 | 342 | 0 | True | HAR-0653 |  |
| HAR-0655 | HAR.SUPERSTRUCTURE.THIRD | SUPERSTRUCTURE | THIRD | Third floor: Shear/lift wall embedded plates, boxes, sleeves | 1 | ILLUSTRATIVE_CREW_PLANNING_SEED_NOT_APPROVED | NOT_MEASURED | MEP_COORDINATION | REFERENCE_ONLY_NOT_ACTUAL_SITE_ALLOCATION | ARC-02/05, STR-03/17, RPT-2083 | PROPOSED_NOT_ADMITTED_TO_APPROVED_WBS | FS | 0 | 344 | 345 | 345 | 344 | 0 | True | HAR-0654 |  |
| HAR-0656 | HAR.SUPERSTRUCTURE.THIRD | SUPERSTRUCTURE | THIRD | Third floor: Shear/lift wall formwork and inspection | 1 | ILLUSTRATIVE_CREW_PLANNING_SEED_NOT_APPROVED | NOT_MEASURED | FORMWORK | REFERENCE_ONLY_NOT_ACTUAL_SITE_ALLOCATION | ARC-02/05, STR-03/17, RPT-2083 | PROPOSED_NOT_ADMITTED_TO_APPROVED_WBS | FS | 0 | 345 | 346 | 346 | 345 | 0 | True | HAR-0655 |  |
| HAR-0657 | HAR.SUPERSTRUCTURE.THIRD | SUPERSTRUCTURE | THIRD | Third floor: Shear/lift wall M25 pour and tests | 1 | ILLUSTRATIVE_CREW_PLANNING_SEED_NOT_APPROVED | NOT_MEASURED | CONCRETE | REFERENCE_ONLY_NOT_ACTUAL_SITE_ALLOCATION | ARC-02/05, STR-03/17, RPT-2083 | PROPOSED_NOT_ADMITTED_TO_APPROVED_WBS | FS | 0 | 346 | 347 | 347 | 346 | 0 | True | HAR-0656 |  |
| HAR-0658 | HAR.SUPERSTRUCTURE.THIRD | SUPERSTRUCTURE | THIRD | Third floor: Beam soffit formwork, props and deck platforms | 3 | ILLUSTRATIVE_CREW_PLANNING_SEED_NOT_APPROVED | NOT_MEASURED | FORMWORK | REFERENCE_ONLY_NOT_ACTUAL_SITE_ALLOCATION | ARC-02/05, STR-03/17, RPT-2083 | PROPOSED_NOT_ADMITTED_TO_APPROVED_WBS | FS | 0 | 347 | 350 | 350 | 347 | 0 | True | HAR-0657 |  |
| HAR-0659 | HAR.SUPERSTRUCTURE.THIRD | SUPERSTRUCTURE | THIRD | Third floor: Slab deck, openings, stair flights and terrace edge shuttering | 3 | ILLUSTRATIVE_CREW_PLANNING_SEED_NOT_APPROVED | NOT_MEASURED | FORMWORK | REFERENCE_ONLY_NOT_ACTUAL_SITE_ALLOCATION | ARC-02/05, STR-03/17, RPT-2083 | PROPOSED_NOT_ADMITTED_TO_APPROVED_WBS | FS | 0 | 350 | 353 | 353 | 350 | 0 | True | HAR-0658 |  |
| HAR-0660 | HAR.SUPERSTRUCTURE.THIRD | SUPERSTRUCTURE | THIRD | Third floor: Beam flexural and shear reinforcement including junction continuity | 3 | ILLUSTRATIVE_CREW_PLANNING_SEED_NOT_APPROVED | NOT_MEASURED | REBAR | REFERENCE_ONLY_NOT_ACTUAL_SITE_ALLOCATION | ARC-02/05, STR-03/17, RPT-2083 | PROPOSED_NOT_ADMITTED_TO_APPROVED_WBS | FS | 0 | 353 | 356 | 356 | 353 | 0 | True | HAR-0659 |  |
| HAR-0661 | HAR.SUPERSTRUCTURE.THIRD | SUPERSTRUCTURE | THIRD | Third floor: Slab top/bottom mats, extra bars and staircase steel | 3 | ILLUSTRATIVE_CREW_PLANNING_SEED_NOT_APPROVED | NOT_MEASURED | REBAR | REFERENCE_ONLY_NOT_ACTUAL_SITE_ALLOCATION | ARC-02/05, STR-03/17, RPT-2083 | PROPOSED_NOT_ADMITTED_TO_APPROVED_WBS | FS | 0 | 356 | 359 | 359 | 356 | 0 | True | HAR-0660 |  |
| HAR-0662 | HAR.SUPERSTRUCTURE.THIRD | SUPERSTRUCTURE | THIRD | Third floor: Electrical conduits, plumbing sleeves and floor penetrations | 2 | ILLUSTRATIVE_CREW_PLANNING_SEED_NOT_APPROVED | NOT_MEASURED | MEP_COORDINATION | REFERENCE_ONLY_NOT_ACTUAL_SITE_ALLOCATION | ARC-02/05, STR-03/17, RPT-2083 | PROPOSED_NOT_ADMITTED_TO_APPROVED_WBS | FS | 0 | 359 | 361 | 361 | 359 | 0 | True | HAR-0661 |  |
| HAR-0663 | HAR.SUPERSTRUCTURE.THIRD | SUPERSTRUCTURE | THIRD | Third floor: Beam/slab/stair formwork & steel hold-point inspection | 0 | MILESTONE_ZERO_DURATION | NOT_MEASURED | ENGINEER_INSPECTION | REFERENCE_ONLY_NOT_ACTUAL_SITE_ALLOCATION | ARC-02/05, STR-03/17, RPT-2083 | PROPOSED_NOT_ADMITTED_TO_APPROVED_WBS | FS | 0 | 361 | 361 | 361 | 361 | 0 | True | HAR-0662 | True |
| HAR-0664 | HAR.SUPERSTRUCTURE.THIRD | SUPERSTRUCTURE | THIRD | Third floor: M25 beam/slab/stair placement, slump/cubes and leveling | 2 | ILLUSTRATIVE_CREW_PLANNING_SEED_NOT_APPROVED | PROVISIONAL_GEOMETRY_FROM_SOURCE | CONCRETE | REFERENCE_ONLY_NOT_ACTUAL_SITE_ALLOCATION | ARC-02/05, STR-03/17, RPT-2083 | PROPOSED_NOT_ADMITTED_TO_APPROVED_WBS | FS | 0 | 361 | 363 | 363 | 361 | 0 | True | HAR-0663 |  |
| HAR-0665 | HAR.SUPERSTRUCTURE.THIRD | SUPERSTRUCTURE | THIRD | Third floor: Curing, prop-retention and construction-load control | 7 | ILLUSTRATIVE_CREW_PLANNING_SEED_NOT_APPROVED | NOT_MEASURED | CONCRETE | REFERENCE_ONLY_NOT_ACTUAL_SITE_ALLOCATION | ARC-02/05, STR-03/17, RPT-2083 | PROPOSED_NOT_ADMITTED_TO_APPROVED_WBS | FS | 0 | 363 | 370 | 370 | 363 | 0 | True | HAR-0664 |  |
| HAR-0666 | HAR.SUPERSTRUCTURE.THIRD | SUPERSTRUCTURE | THIRD | Third floor: Structural pour and dimensional QA hold | 0 | MILESTONE_ZERO_DURATION | NOT_MEASURED | ENGINEER_INSPECTION | REFERENCE_ONLY_NOT_ACTUAL_SITE_ALLOCATION | ARC-02/05, STR-03/17, RPT-2083 | PROPOSED_NOT_ADMITTED_TO_APPROVED_WBS | FS | 0 | 370 | 370 | 370 | 370 | 0 | True | HAR-0665 | True |
| HAR-0667 | HAR.MASONRY.THIRD | MASONRY | THIRD | Third floor: Masonry set-out, openings and wall thickness check | 1 | ILLUSTRATIVE_CREW_PLANNING_SEED_NOT_APPROVED | NOT_MEASURED | SURVEY | REFERENCE_ONLY_NOT_ACTUAL_SITE_ALLOCATION | ARC-02/05, CAD-R000002-PROVISIONAL | PROPOSED_NOT_ADMITTED_TO_APPROVED_WBS | FS | 0 | 370 | 371 | 411 | 410 | 40 |  | HAR-0666 |  |
| HAR-0668 | HAR.MASONRY.THIRD | MASONRY | THIRD | Third floor: Masonry material sampling, wetting and mortar preparation | 1 | ILLUSTRATIVE_CREW_PLANNING_SEED_NOT_APPROVED | NOT_MEASURED | MASONRY | REFERENCE_ONLY_NOT_ACTUAL_SITE_ALLOCATION | ARC-02/05, CAD-R000002-PROVISIONAL | PROPOSED_NOT_ADMITTED_TO_APPROVED_WBS | FS | 0 | 371 | 372 | 412 | 411 | 40 |  | HAR-0667 |  |
| HAR-0669 | HAR.MASONRY.THIRD | MASONRY | THIRD | Third floor: External wall masonry lifts incl. lintel interface | 4 | ILLUSTRATIVE_CREW_PLANNING_SEED_NOT_APPROVED | NOT_MEASURED | MASONRY | REFERENCE_ONLY_NOT_ACTUAL_SITE_ALLOCATION | ARC-02/05, CAD-R000002-PROVISIONAL | PROPOSED_NOT_ADMITTED_TO_APPROVED_WBS | FS | 0 | 372 | 376 | 416 | 412 | 40 |  | HAR-0668 |  |
| HAR-0670 | HAR.MASONRY.THIRD | MASONRY | THIRD | Third floor: Internal partition masonry lifts and ties | 3 | ILLUSTRATIVE_CREW_PLANNING_SEED_NOT_APPROVED | NOT_MEASURED | MASONRY | REFERENCE_ONLY_NOT_ACTUAL_SITE_ALLOCATION | ARC-02/05, CAD-R000002-PROVISIONAL | PROPOSED_NOT_ADMITTED_TO_APPROVED_WBS | FS | 0 | 376 | 379 | 419 | 416 | 40 |  | HAR-0669 |  |
| HAR-0671 | HAR.MASONRY.THIRD | MASONRY | THIRD | Third floor: Door and window opening verification with schedules | 1 | ILLUSTRATIVE_CREW_PLANNING_SEED_NOT_APPROVED | NOT_MEASURED | SURVEY | REFERENCE_ONLY_NOT_ACTUAL_SITE_ALLOCATION | ARC-02/05, CAD-R000002-PROVISIONAL | PROPOSED_NOT_ADMITTED_TO_APPROVED_WBS | FS | 0 | 379 | 380 | 420 | 419 | 40 |  | HAR-0670 |  |
| HAR-0672 | HAR.MASONRY.THIRD | MASONRY | THIRD | Third floor: Nonstructural wall hold / seismic separation check | 0 | MILESTONE_ZERO_DURATION | NOT_MEASURED | ENGINEER_INSPECTION | REFERENCE_ONLY_NOT_ACTUAL_SITE_ALLOCATION | ARC-02/05, CAD-R000002-PROVISIONAL | PROPOSED_NOT_ADMITTED_TO_APPROVED_WBS | FS | 0 | 380 | 380 | 420 | 420 | 40 |  | HAR-0671 | True |
| HAR-0673 | HAR.MASONRY.THIRD | MASONRY | THIRD | Third floor: Internal and external chasing coordinates agreed with MEP | 1 | ILLUSTRATIVE_CREW_PLANNING_SEED_NOT_APPROVED | NOT_MEASURED | MEP_COORDINATION | REFERENCE_ONLY_NOT_ACTUAL_SITE_ALLOCATION | ARC-02/05, CAD-R000002-PROVISIONAL | PROPOSED_NOT_ADMITTED_TO_APPROVED_WBS | FS | 0 | 380 | 381 | 421 | 420 | 40 |  | HAR-0672 |  |
| HAR-0674 | HAR.MEP_ROUGH_IN.THIRD | MEP_ROUGH_IN | THIRD | Third floor: MEP floor drawing coordination and ceiling-zone clash review | 2 | ILLUSTRATIVE_CREW_PLANNING_SEED_NOT_APPROVED | NOT_MEASURED | MEP_COORDINATION | REFERENCE_ONLY_NOT_ACTUAL_SITE_ALLOCATION | ARC-02/05, DUDBC-2081, SCOPE_TO_CONFIRM | PROPOSED_NOT_ADMITTED_TO_APPROVED_WBS | FS | 0 | 381 | 383 | 423 | 421 | 40 |  | HAR-0673, HAR-0054, HAR-0055, HAR-0056, HAR-0058 |  |
| HAR-0675 | HAR.MEP_ROUGH_IN.THIRD | MEP_ROUGH_IN | THIRD | Third floor: Drainage stack riser supports and sleeve installation | 2 | ILLUSTRATIVE_CREW_PLANNING_SEED_NOT_APPROVED | NOT_MEASURED | PLUMBING | REFERENCE_ONLY_NOT_ACTUAL_SITE_ALLOCATION | ARC-02/05, DUDBC-2081, SCOPE_TO_CONFIRM | PROPOSED_NOT_ADMITTED_TO_APPROVED_WBS | FS | 0 | 383 | 385 | 425 | 423 | 40 |  | HAR-0674 |  |
| HAR-0676 | HAR.MEP_ROUGH_IN.THIRD | MEP_ROUGH_IN | THIRD | Third floor: Cold water distribution and pressure-line rough in | 2 | ILLUSTRATIVE_CREW_PLANNING_SEED_NOT_APPROVED | NOT_MEASURED | PLUMBING | REFERENCE_ONLY_NOT_ACTUAL_SITE_ALLOCATION | ARC-02/05, DUDBC-2081, SCOPE_TO_CONFIRM | PROPOSED_NOT_ADMITTED_TO_APPROVED_WBS | FS | 0 | 385 | 387 | 427 | 425 | 40 |  | HAR-0675 |  |
| HAR-0677 | HAR.MEP_ROUGH_IN.THIRD | MEP_ROUGH_IN | THIRD | Third floor: Soil/waste/vent pipe branches and floor traps | 2 | ILLUSTRATIVE_CREW_PLANNING_SEED_NOT_APPROVED | NOT_MEASURED | PLUMBING | REFERENCE_ONLY_NOT_ACTUAL_SITE_ALLOCATION | ARC-02/05, DUDBC-2081, SCOPE_TO_CONFIRM | PROPOSED_NOT_ADMITTED_TO_APPROVED_WBS | FS | 0 | 387 | 389 | 429 | 427 | 40 |  | HAR-0676 |  |
| HAR-0678 | HAR.MEP_ROUGH_IN.THIRD | MEP_ROUGH_IN | THIRD | Third floor: Sanitary wall sleeve, shaft access and cleanout placement | 1 | ILLUSTRATIVE_CREW_PLANNING_SEED_NOT_APPROVED | NOT_MEASURED | PLUMBING | REFERENCE_ONLY_NOT_ACTUAL_SITE_ALLOCATION | ARC-02/05, DUDBC-2081, SCOPE_TO_CONFIRM | PROPOSED_NOT_ADMITTED_TO_APPROVED_WBS | FS | 0 | 389 | 390 | 430 | 429 | 40 |  | HAR-0677 |  |
| HAR-0679 | HAR.MEP_ROUGH_IN.THIRD | MEP_ROUGH_IN | THIRD | Third floor: Electrical concealed conduit and switchboard rough in | 2 | ILLUSTRATIVE_CREW_PLANNING_SEED_NOT_APPROVED | NOT_MEASURED | ELECTRICAL | REFERENCE_ONLY_NOT_ACTUAL_SITE_ALLOCATION | ARC-02/05, DUDBC-2081, SCOPE_TO_CONFIRM | PROPOSED_NOT_ADMITTED_TO_APPROVED_WBS | FS | 0 | 390 | 392 | 432 | 430 | 40 |  | HAR-0678 |  |
| HAR-0680 | HAR.MEP_ROUGH_IN.THIRD | MEP_ROUGH_IN | THIRD | Third floor: Electrical riser ducts, earthing/bonding rough in | 2 | ILLUSTRATIVE_CREW_PLANNING_SEED_NOT_APPROVED | NOT_MEASURED | ELECTRICAL | REFERENCE_ONLY_NOT_ACTUAL_SITE_ALLOCATION | ARC-02/05, DUDBC-2081, SCOPE_TO_CONFIRM | PROPOSED_NOT_ADMITTED_TO_APPROVED_WBS | FS | 0 | 392 | 394 | 434 | 432 | 40 |  | HAR-0679 |  |
| HAR-0681 | HAR.MEP_ROUGH_IN.THIRD | MEP_ROUGH_IN | THIRD | Third floor: Fire detection/alarm conduits and interfaces | 2 | ILLUSTRATIVE_CREW_PLANNING_SEED_NOT_APPROVED | NOT_MEASURED | FIRE | REFERENCE_ONLY_NOT_ACTUAL_SITE_ALLOCATION | ARC-02/05, DUDBC-2081, SCOPE_TO_CONFIRM | PROPOSED_NOT_ADMITTED_TO_APPROVED_WBS | FS | 0 | 394 | 396 | 436 | 434 | 40 |  | HAR-0680 |  |
| HAR-0682 | HAR.MEP_ROUGH_IN.THIRD | MEP_ROUGH_IN | THIRD | Third floor: Emergency/exit-lighting circuits rough in | 1 | ILLUSTRATIVE_CREW_PLANNING_SEED_NOT_APPROVED | NOT_MEASURED | ELECTRICAL | REFERENCE_ONLY_NOT_ACTUAL_SITE_ALLOCATION | ARC-02/05, DUDBC-2081, SCOPE_TO_CONFIRM | PROPOSED_NOT_ADMITTED_TO_APPROVED_WBS | FS | 0 | 396 | 397 | 437 | 436 | 40 |  | HAR-0681 |  |
| HAR-0683 | HAR.MEP_ROUGH_IN.THIRD | MEP_ROUGH_IN | THIRD | Third floor: Telecom/data/CCTV service raceway rough in (if in scope) | 2 | ILLUSTRATIVE_CREW_PLANNING_SEED_NOT_APPROVED | NOT_MEASURED | LOW_VOLTAGE | REFERENCE_ONLY_NOT_ACTUAL_SITE_ALLOCATION | ARC-02/05, DUDBC-2081, SCOPE_TO_CONFIRM | PROPOSED_NOT_ADMITTED_TO_APPROVED_WBS | FS | 0 | 397 | 399 | 439 | 437 | 40 |  | HAR-0682 |  |
| HAR-0684 | HAR.MEP_ROUGH_IN.THIRD | MEP_ROUGH_IN | THIRD | Third floor: Ventilation / exhaust pathways and shafts (subject to design) | 2 | ILLUSTRATIVE_CREW_PLANNING_SEED_NOT_APPROVED | NOT_MEASURED | VENTILATION | REFERENCE_ONLY_NOT_ACTUAL_SITE_ALLOCATION | ARC-02/05, DUDBC-2081, SCOPE_TO_CONFIRM | PROPOSED_NOT_ADMITTED_TO_APPROVED_WBS | FS | 0 | 399 | 401 | 441 | 439 | 40 |  | HAR-0683 |  |
| HAR-0685 | HAR.MEP_ROUGH_IN.THIRD | MEP_ROUGH_IN | THIRD | Third floor: Lift shaft dimension, embed and access coordination (where applicable) | 1 | ILLUSTRATIVE_CREW_PLANNING_SEED_NOT_APPROVED | NOT_MEASURED | LIFT | REFERENCE_ONLY_NOT_ACTUAL_SITE_ALLOCATION | ARC-02/05, DUDBC-2081, SCOPE_TO_CONFIRM | PROPOSED_NOT_ADMITTED_TO_APPROVED_WBS | FS | 0 | 401 | 402 | 442 | 441 | 40 |  | HAR-0684 |  |
| HAR-0686 | HAR.MEP_ROUGH_IN.THIRD | MEP_ROUGH_IN | THIRD | Third floor: MEP pressure/leak tests before plaster | 0 | MILESTONE_ZERO_DURATION | NOT_MEASURED | INSPECTION | REFERENCE_ONLY_NOT_ACTUAL_SITE_ALLOCATION | ARC-02/05, DUDBC-2081, SCOPE_TO_CONFIRM | PROPOSED_NOT_ADMITTED_TO_APPROVED_WBS | FS | 0 | 402 | 402 | 442 | 442 | 40 |  | HAR-0685 | True |
| HAR-0687 | HAR.MEP_ROUGH_IN.THIRD | MEP_ROUGH_IN | THIRD | Third floor: MEP cable continuity and conduit inspection hold | 0 | MILESTONE_ZERO_DURATION | NOT_MEASURED | INSPECTION | REFERENCE_ONLY_NOT_ACTUAL_SITE_ALLOCATION | ARC-02/05, DUDBC-2081, SCOPE_TO_CONFIRM | PROPOSED_NOT_ADMITTED_TO_APPROVED_WBS | FS | 0 | 402 | 402 | 442 | 442 | 40 |  | HAR-0686 | True |
| HAR-0688 | HAR.MEP_ROUGH_IN.THIRD | MEP_ROUGH_IN | THIRD | Third floor: Repair chase cuts and firestop service penetrations | 1 | ILLUSTRATIVE_CREW_PLANNING_SEED_NOT_APPROVED | NOT_MEASURED | MASONRY | REFERENCE_ONLY_NOT_ACTUAL_SITE_ALLOCATION | ARC-02/05, DUDBC-2081, SCOPE_TO_CONFIRM | PROPOSED_NOT_ADMITTED_TO_APPROVED_WBS | FS | 0 | 402 | 403 | 443 | 442 | 40 |  | HAR-0687 |  |
| HAR-0689 | HAR.MEP_ROUGH_IN.THIRD | MEP_ROUGH_IN | THIRD | Third floor: MEP first-fix release milestone | 0 | MILESTONE_ZERO_DURATION | NOT_MEASURED | INSPECTION | REFERENCE_ONLY_NOT_ACTUAL_SITE_ALLOCATION | ARC-02/05, DUDBC-2081, SCOPE_TO_CONFIRM | PROPOSED_NOT_ADMITTED_TO_APPROVED_WBS | FS | 0 | 403 | 403 | 443 | 443 | 40 |  | HAR-0688 | True |
| HAR-0690 | HAR.FINISHES.THIRD | FINISHES | THIRD | Third floor: Wet area screed and falls inspection | 2 | ILLUSTRATIVE_CREW_PLANNING_SEED_NOT_APPROVED | NOT_MEASURED | FLOORING | REFERENCE_ONLY_NOT_ACTUAL_SITE_ALLOCATION | ARC-02/05, DUDBC-2081, SCOPE_TO_CONFIRM | PROPOSED_NOT_ADMITTED_TO_APPROVED_WBS | FS | 0 | 403 | 405 | 445 | 443 | 40 |  | HAR-0689 |  |
| HAR-0691 | HAR.FINISHES.THIRD | FINISHES | THIRD | Third floor: Waterproofing substrate moisture / surface preparation | 2 | ILLUSTRATIVE_CREW_PLANNING_SEED_NOT_APPROVED | NOT_MEASURED | WATERPROOFING | REFERENCE_ONLY_NOT_ACTUAL_SITE_ALLOCATION | ARC-02/05, DUDBC-2081, SCOPE_TO_CONFIRM | PROPOSED_NOT_ADMITTED_TO_APPROVED_WBS | FS | 0 | 405 | 407 | 447 | 445 | 40 |  | HAR-0690, HAR-0051 |  |
| HAR-0692 | HAR.FINISHES.THIRD | FINISHES | THIRD | Third floor: Wet area waterproofing membranes and upstands | 2 | ILLUSTRATIVE_CREW_PLANNING_SEED_NOT_APPROVED | NOT_MEASURED | WATERPROOFING | REFERENCE_ONLY_NOT_ACTUAL_SITE_ALLOCATION | ARC-02/05, DUDBC-2081, SCOPE_TO_CONFIRM | PROPOSED_NOT_ADMITTED_TO_APPROVED_WBS | FS | 0 | 407 | 409 | 449 | 447 | 40 |  | HAR-0691 |  |
| HAR-0693 | HAR.FINISHES.THIRD | FINISHES | THIRD | Third floor: Flood test and waterproofing hold | 0 | MILESTONE_ZERO_DURATION | NOT_MEASURED | INSPECTION | REFERENCE_ONLY_NOT_ACTUAL_SITE_ALLOCATION | ARC-02/05, DUDBC-2081, SCOPE_TO_CONFIRM | PROPOSED_NOT_ADMITTED_TO_APPROVED_WBS | FS | 0 | 409 | 409 | 449 | 449 | 40 |  | HAR-0692 | True |
| HAR-0694 | HAR.FINISHES.THIRD | FINISHES | THIRD | Third floor: Internal plaster/render to walls | 4 | ILLUSTRATIVE_CREW_PLANNING_SEED_NOT_APPROVED | NOT_MEASURED | PLASTER | REFERENCE_ONLY_NOT_ACTUAL_SITE_ALLOCATION | ARC-02/05, DUDBC-2081, SCOPE_TO_CONFIRM | PROPOSED_NOT_ADMITTED_TO_APPROVED_WBS | FS | 0 | 409 | 413 | 453 | 449 | 40 |  | HAR-0693 |  |
| HAR-0695 | HAR.FINISHES.THIRD | FINISHES | THIRD | Third floor: External render and wall repair | 4 | ILLUSTRATIVE_CREW_PLANNING_SEED_NOT_APPROVED | NOT_MEASURED | PLASTER | REFERENCE_ONLY_NOT_ACTUAL_SITE_ALLOCATION | ARC-02/05, DUDBC-2081, SCOPE_TO_CONFIRM | PROPOSED_NOT_ADMITTED_TO_APPROVED_WBS | FS | 0 | 413 | 417 | 457 | 453 | 40 |  | HAR-0694 |  |
| HAR-0696 | HAR.FINISHES.THIRD | FINISHES | THIRD | Third floor: Plaster curing and line/plumb QA | 2 | ILLUSTRATIVE_CREW_PLANNING_SEED_NOT_APPROVED | NOT_MEASURED | PLASTER | REFERENCE_ONLY_NOT_ACTUAL_SITE_ALLOCATION | ARC-02/05, DUDBC-2081, SCOPE_TO_CONFIRM | PROPOSED_NOT_ADMITTED_TO_APPROVED_WBS | FS | 0 | 417 | 419 | 459 | 457 | 40 |  | HAR-0695 |  |
| HAR-0697 | HAR.FINISHES.THIRD | FINISHES | THIRD | Third floor: Floor levelling / screed and flatness checks | 2 | ILLUSTRATIVE_CREW_PLANNING_SEED_NOT_APPROVED | NOT_MEASURED | FLOORING | REFERENCE_ONLY_NOT_ACTUAL_SITE_ALLOCATION | ARC-02/05, DUDBC-2081, SCOPE_TO_CONFIRM | PROPOSED_NOT_ADMITTED_TO_APPROVED_WBS | FS | 0 | 419 | 421 | 461 | 459 | 40 |  | HAR-0696 |  |
| HAR-0698 | HAR.FINISHES.THIRD | FINISHES | THIRD | Third floor: Ceiling suspension / plasterboard preparation where designed | 2 | ILLUSTRATIVE_CREW_PLANNING_SEED_NOT_APPROVED | NOT_MEASURED | CEILING | REFERENCE_ONLY_NOT_ACTUAL_SITE_ALLOCATION | ARC-02/05, DUDBC-2081, SCOPE_TO_CONFIRM | PROPOSED_NOT_ADMITTED_TO_APPROVED_WBS | FS | 0 | 421 | 423 | 463 | 461 | 40 |  | HAR-0697 |  |
| HAR-0699 | HAR.FINISHES.THIRD | FINISHES | THIRD | Third floor: Floor tile/stone/finish laying | 4 | ILLUSTRATIVE_CREW_PLANNING_SEED_NOT_APPROVED | NOT_MEASURED | FLOORING | REFERENCE_ONLY_NOT_ACTUAL_SITE_ALLOCATION | ARC-02/05, DUDBC-2081, SCOPE_TO_CONFIRM | PROPOSED_NOT_ADMITTED_TO_APPROVED_WBS | FS | 0 | 423 | 427 | 467 | 463 | 40 |  | HAR-0698 |  |
| HAR-0700 | HAR.FINISHES.THIRD | FINISHES | THIRD | Third floor: Wall tiles in wet and service areas | 3 | ILLUSTRATIVE_CREW_PLANNING_SEED_NOT_APPROVED | NOT_MEASURED | FLOORING | REFERENCE_ONLY_NOT_ACTUAL_SITE_ALLOCATION | ARC-02/05, DUDBC-2081, SCOPE_TO_CONFIRM | PROPOSED_NOT_ADMITTED_TO_APPROVED_WBS | FS | 0 | 427 | 430 | 470 | 467 | 40 |  | HAR-0699 |  |

| activity_id | wbs | phase | scope | title | duration_workdays | duration_basis | quantity_basis | crew_category | crew_basis | source_refs | status | logic_type | lag_workdays | planned_start_workday | planned_finish_workday | latest_finish_workday | latest_start_workday | total_float_workdays | critical | predecessor_ids | engineering_hold |
| --- | --- | --- | --- | --- | --- | --- | --- | --- | --- | --- | --- | --- | --- | --- | --- | --- | --- | --- | --- | --- | --- |
| HAR-0701 | HAR.FINISHES.THIRD | FINISHES | THIRD | Third floor: Door frame installation and alignment | 2 | ILLUSTRATIVE_CREW_PLANNING_SEED_NOT_APPROVED | NOT_MEASURED | JOINERY | REFERENCE_ONLY_NOT_ACTUAL_SITE_ALLOCATION | ARC-02/05, DUDBC-2081, SCOPE_TO_CONFIRM | PROPOSED_NOT_ADMITTED_TO_APPROVED_WBS | FS | 0 | 430 | 432 | 472 | 470 | 40 |  | HAR-0700, HAR-0053 |  |
| HAR-0702 | HAR.FINISHES.THIRD | FINISHES | THIRD | Third floor: Window frame installation / flashing / sealant | 2 | ILLUSTRATIVE_CREW_PLANNING_SEED_NOT_APPROVED | NOT_MEASURED | JOINERY | REFERENCE_ONLY_NOT_ACTUAL_SITE_ALLOCATION | ARC-02/05, DUDBC-2081, SCOPE_TO_CONFIRM | PROPOSED_NOT_ADMITTED_TO_APPROVED_WBS | FS | 0 | 432 | 434 | 474 | 472 | 40 |  | HAR-0701 |  |
| HAR-0703 | HAR.FINISHES.THIRD | FINISHES | THIRD | Third floor: Internal door leaves, hardware and locks | 2 | ILLUSTRATIVE_CREW_PLANNING_SEED_NOT_APPROVED | NOT_MEASURED | JOINERY | REFERENCE_ONLY_NOT_ACTUAL_SITE_ALLOCATION | ARC-02/05, DUDBC-2081, SCOPE_TO_CONFIRM | PROPOSED_NOT_ADMITTED_TO_APPROVED_WBS | FS | 0 | 434 | 436 | 476 | 474 | 40 |  | HAR-0702 |  |
| HAR-0704 | HAR.FINISHES.THIRD | FINISHES | THIRD | Third floor: Electrical cable pulling, fittings, DB final connections | 2 | ILLUSTRATIVE_CREW_PLANNING_SEED_NOT_APPROVED | NOT_MEASURED | ELECTRICAL | REFERENCE_ONLY_NOT_ACTUAL_SITE_ALLOCATION | ARC-02/05, DUDBC-2081, SCOPE_TO_CONFIRM | PROPOSED_NOT_ADMITTED_TO_APPROVED_WBS | FS | 0 | 436 | 438 | 478 | 476 | 40 |  | HAR-0703 |  |
| HAR-0705 | HAR.FINISHES.THIRD | FINISHES | THIRD | Third floor: Plumbing fixtures, valves, sanitary fittings | 2 | ILLUSTRATIVE_CREW_PLANNING_SEED_NOT_APPROVED | NOT_MEASURED | PLUMBING | REFERENCE_ONLY_NOT_ACTUAL_SITE_ALLOCATION | ARC-02/05, DUDBC-2081, SCOPE_TO_CONFIRM | PROPOSED_NOT_ADMITTED_TO_APPROVED_WBS | FS | 0 | 438 | 440 | 480 | 478 | 40 |  | HAR-0704 |  |
| HAR-0706 | HAR.FINISHES.THIRD | FINISHES | THIRD | Third floor: Fire alarm devices, emergency lighting and first-stage checks | 2 | ILLUSTRATIVE_CREW_PLANNING_SEED_NOT_APPROVED | NOT_MEASURED | FIRE | REFERENCE_ONLY_NOT_ACTUAL_SITE_ALLOCATION | ARC-02/05, DUDBC-2081, SCOPE_TO_CONFIRM | PROPOSED_NOT_ADMITTED_TO_APPROVED_WBS | FS | 0 | 440 | 442 | 482 | 480 | 40 |  | HAR-0705 |  |
| HAR-0707 | HAR.FINISHES.THIRD | FINISHES | THIRD | Third floor: Surface primer, putty and finish coats | 3 | ILLUSTRATIVE_CREW_PLANNING_SEED_NOT_APPROVED | NOT_MEASURED | PAINTING | REFERENCE_ONLY_NOT_ACTUAL_SITE_ALLOCATION | ARC-02/05, DUDBC-2081, SCOPE_TO_CONFIRM | PROPOSED_NOT_ADMITTED_TO_APPROVED_WBS | FS | 0 | 442 | 445 | 485 | 482 | 40 |  | HAR-0706 |  |
| HAR-0708 | HAR.FINISHES.THIRD | FINISHES | THIRD | Third floor: Balustrades, handrails and stair finishes | 2 | ILLUSTRATIVE_CREW_PLANNING_SEED_NOT_APPROVED | NOT_MEASURED | METALWORK | REFERENCE_ONLY_NOT_ACTUAL_SITE_ALLOCATION | ARC-02/05, DUDBC-2081, SCOPE_TO_CONFIRM | PROPOSED_NOT_ADMITTED_TO_APPROVED_WBS | FS | 0 | 445 | 447 | 487 | 485 | 40 |  | HAR-0707 |  |
| HAR-0709 | HAR.FINISHES.THIRD | FINISHES | THIRD | Third floor: Room-level electrical, plumbing and leakage tests | 0 | MILESTONE_ZERO_DURATION | NOT_MEASURED | INSPECTION | REFERENCE_ONLY_NOT_ACTUAL_SITE_ALLOCATION | ARC-02/05, DUDBC-2081, SCOPE_TO_CONFIRM | PROPOSED_NOT_ADMITTED_TO_APPROVED_WBS | FS | 0 | 447 | 447 | 487 | 487 | 40 |  | HAR-0708 | True |
| HAR-0710 | HAR.FINISHES.THIRD | FINISHES | THIRD | Third floor: Floor defects/punch list and as-built capture | 2 | ILLUSTRATIVE_CREW_PLANNING_SEED_NOT_APPROVED | NOT_MEASURED | QA | REFERENCE_ONLY_NOT_ACTUAL_SITE_ALLOCATION | ARC-02/05, DUDBC-2081, SCOPE_TO_CONFIRM | PROPOSED_NOT_ADMITTED_TO_APPROVED_WBS | FS | 0 | 447 | 449 | 489 | 487 | 40 |  | HAR-0709 |  |
| HAR-0711 | HAR.SUPERSTRUCTURE.FOURTH | SUPERSTRUCTURE | FOURTH | Fourth floor: Level/grid set-out and survey acceptance | 1 | ILLUSTRATIVE_CREW_PLANNING_SEED_NOT_APPROVED | NOT_MEASURED | SURVEY | REFERENCE_ONLY_NOT_ACTUAL_SITE_ALLOCATION | ARC-02/05, STR-03/17, RPT-2083 | PROPOSED_NOT_ADMITTED_TO_APPROVED_WBS | FS | 0 | 370 | 371 | 371 | 370 | 0 | True | HAR-0666 |  |
| HAR-0712 | HAR.SUPERSTRUCTURE.FOURTH | SUPERSTRUCTURE | FOURTH | Fourth floor: Working platform, access/scaffold / fall protection | 2 | ILLUSTRATIVE_CREW_PLANNING_SEED_NOT_APPROVED | NOT_MEASURED | FORMWORK | REFERENCE_ONLY_NOT_ACTUAL_SITE_ALLOCATION | ARC-02/05, STR-03/17, RPT-2083 | PROPOSED_NOT_ADMITTED_TO_APPROVED_WBS | FS | 0 | 371 | 373 | 373 | 371 | 0 | True | HAR-0711 |  |
| HAR-0713 | HAR.SUPERSTRUCTURE.FOURTH | SUPERSTRUCTURE | FOURTH | Fourth floor: Column reinforcement cutting/bending and splice checks | 2 | ILLUSTRATIVE_CREW_PLANNING_SEED_NOT_APPROVED | NOT_MEASURED | REBAR | REFERENCE_ONLY_NOT_ACTUAL_SITE_ALLOCATION | ARC-02/05, STR-03/17, RPT-2083 | PROPOSED_NOT_ADMITTED_TO_APPROVED_WBS | FS | 0 | 373 | 375 | 375 | 373 | 0 | True | HAR-0712 |  |
| HAR-0714 | HAR.SUPERSTRUCTURE.FOURTH | SUPERSTRUCTURE | FOURTH | Fourth floor: Column tie/confinement six-leg detail inspection | 0 | MILESTONE_ZERO_DURATION | NOT_MEASURED | ENGINEER_INSPECTION | REFERENCE_ONLY_NOT_ACTUAL_SITE_ALLOCATION | ARC-02/05, STR-03/17, RPT-2083 | PROPOSED_NOT_ADMITTED_TO_APPROVED_WBS | FS | 0 | 375 | 375 | 375 | 375 | 0 | True | HAR-0713 | True |
| HAR-0715 | HAR.SUPERSTRUCTURE.FOURTH | SUPERSTRUCTURE | FOURTH | Fourth floor: Column shutter, line and verticality | 2 | ILLUSTRATIVE_CREW_PLANNING_SEED_NOT_APPROVED | NOT_MEASURED | FORMWORK | REFERENCE_ONLY_NOT_ACTUAL_SITE_ALLOCATION | ARC-02/05, STR-03/17, RPT-2083 | PROPOSED_NOT_ADMITTED_TO_APPROVED_WBS | FS | 0 | 375 | 377 | 377 | 375 | 0 | True | HAR-0714 |  |
| HAR-0716 | HAR.SUPERSTRUCTURE.FOURTH | SUPERSTRUCTURE | FOURTH | Fourth floor: Column M25 pour, vibration and samples | 1 | ILLUSTRATIVE_CREW_PLANNING_SEED_NOT_APPROVED | NOT_MEASURED | CONCRETE | REFERENCE_ONLY_NOT_ACTUAL_SITE_ALLOCATION | ARC-02/05, STR-03/17, RPT-2083 | PROPOSED_NOT_ADMITTED_TO_APPROVED_WBS | FS | 0 | 377 | 378 | 378 | 377 | 0 | True | HAR-0715 |  |
| HAR-0717 | HAR.SUPERSTRUCTURE.FOURTH | SUPERSTRUCTURE | FOURTH | Fourth floor: Column/beam junction strength/strip hold | 2 | ILLUSTRATIVE_CREW_PLANNING_SEED_NOT_APPROVED | NOT_MEASURED | ENGINEER_INSPECTION | REFERENCE_ONLY_NOT_ACTUAL_SITE_ALLOCATION | ARC-02/05, STR-03/17, RPT-2083 | PROPOSED_NOT_ADMITTED_TO_APPROVED_WBS | FS | 0 | 378 | 380 | 380 | 378 | 0 | True | HAR-0716 |  |
| HAR-0718 | HAR.SUPERSTRUCTURE.FOURTH | SUPERSTRUCTURE | FOURTH | Fourth floor: Shear/lift wall reinforcement and boundary elements | 2 | ILLUSTRATIVE_CREW_PLANNING_SEED_NOT_APPROVED | NOT_MEASURED | REBAR | REFERENCE_ONLY_NOT_ACTUAL_SITE_ALLOCATION | ARC-02/05, STR-03/17, RPT-2083 | PROPOSED_NOT_ADMITTED_TO_APPROVED_WBS | FS | 0 | 380 | 382 | 382 | 380 | 0 | True | HAR-0717 |  |
| HAR-0719 | HAR.SUPERSTRUCTURE.FOURTH | SUPERSTRUCTURE | FOURTH | Fourth floor: Shear/lift wall embedded plates, boxes, sleeves | 1 | ILLUSTRATIVE_CREW_PLANNING_SEED_NOT_APPROVED | NOT_MEASURED | MEP_COORDINATION | REFERENCE_ONLY_NOT_ACTUAL_SITE_ALLOCATION | ARC-02/05, STR-03/17, RPT-2083 | PROPOSED_NOT_ADMITTED_TO_APPROVED_WBS | FS | 0 | 382 | 383 | 383 | 382 | 0 | True | HAR-0718 |  |
| HAR-0720 | HAR.SUPERSTRUCTURE.FOURTH | SUPERSTRUCTURE | FOURTH | Fourth floor: Shear/lift wall formwork and inspection | 1 | ILLUSTRATIVE_CREW_PLANNING_SEED_NOT_APPROVED | NOT_MEASURED | FORMWORK | REFERENCE_ONLY_NOT_ACTUAL_SITE_ALLOCATION | ARC-02/05, STR-03/17, RPT-2083 | PROPOSED_NOT_ADMITTED_TO_APPROVED_WBS | FS | 0 | 383 | 384 | 384 | 383 | 0 | True | HAR-0719 |  |
| HAR-0721 | HAR.SUPERSTRUCTURE.FOURTH | SUPERSTRUCTURE | FOURTH | Fourth floor: Shear/lift wall M25 pour and tests | 1 | ILLUSTRATIVE_CREW_PLANNING_SEED_NOT_APPROVED | NOT_MEASURED | CONCRETE | REFERENCE_ONLY_NOT_ACTUAL_SITE_ALLOCATION | ARC-02/05, STR-03/17, RPT-2083 | PROPOSED_NOT_ADMITTED_TO_APPROVED_WBS | FS | 0 | 384 | 385 | 385 | 384 | 0 | True | HAR-0720 |  |
| HAR-0722 | HAR.SUPERSTRUCTURE.FOURTH | SUPERSTRUCTURE | FOURTH | Fourth floor: Beam soffit formwork, props and deck platforms | 3 | ILLUSTRATIVE_CREW_PLANNING_SEED_NOT_APPROVED | NOT_MEASURED | FORMWORK | REFERENCE_ONLY_NOT_ACTUAL_SITE_ALLOCATION | ARC-02/05, STR-03/17, RPT-2083 | PROPOSED_NOT_ADMITTED_TO_APPROVED_WBS | FS | 0 | 385 | 388 | 388 | 385 | 0 | True | HAR-0721 |  |
| HAR-0723 | HAR.SUPERSTRUCTURE.FOURTH | SUPERSTRUCTURE | FOURTH | Fourth floor: Slab deck, openings, stair flights and terrace edge shuttering | 3 | ILLUSTRATIVE_CREW_PLANNING_SEED_NOT_APPROVED | NOT_MEASURED | FORMWORK | REFERENCE_ONLY_NOT_ACTUAL_SITE_ALLOCATION | ARC-02/05, STR-03/17, RPT-2083 | PROPOSED_NOT_ADMITTED_TO_APPROVED_WBS | FS | 0 | 388 | 391 | 391 | 388 | 0 | True | HAR-0722 |  |
| HAR-0724 | HAR.SUPERSTRUCTURE.FOURTH | SUPERSTRUCTURE | FOURTH | Fourth floor: Beam flexural and shear reinforcement including junction continuity | 3 | ILLUSTRATIVE_CREW_PLANNING_SEED_NOT_APPROVED | NOT_MEASURED | REBAR | REFERENCE_ONLY_NOT_ACTUAL_SITE_ALLOCATION | ARC-02/05, STR-03/17, RPT-2083 | PROPOSED_NOT_ADMITTED_TO_APPROVED_WBS | FS | 0 | 391 | 394 | 394 | 391 | 0 | True | HAR-0723 |  |
| HAR-0725 | HAR.SUPERSTRUCTURE.FOURTH | SUPERSTRUCTURE | FOURTH | Fourth floor: Slab top/bottom mats, extra bars and staircase steel | 3 | ILLUSTRATIVE_CREW_PLANNING_SEED_NOT_APPROVED | NOT_MEASURED | REBAR | REFERENCE_ONLY_NOT_ACTUAL_SITE_ALLOCATION | ARC-02/05, STR-03/17, RPT-2083 | PROPOSED_NOT_ADMITTED_TO_APPROVED_WBS | FS | 0 | 394 | 397 | 397 | 394 | 0 | True | HAR-0724 |  |
| HAR-0726 | HAR.SUPERSTRUCTURE.FOURTH | SUPERSTRUCTURE | FOURTH | Fourth floor: Electrical conduits, plumbing sleeves and floor penetrations | 2 | ILLUSTRATIVE_CREW_PLANNING_SEED_NOT_APPROVED | NOT_MEASURED | MEP_COORDINATION | REFERENCE_ONLY_NOT_ACTUAL_SITE_ALLOCATION | ARC-02/05, STR-03/17, RPT-2083 | PROPOSED_NOT_ADMITTED_TO_APPROVED_WBS | FS | 0 | 397 | 399 | 399 | 397 | 0 | True | HAR-0725 |  |
| HAR-0727 | HAR.SUPERSTRUCTURE.FOURTH | SUPERSTRUCTURE | FOURTH | Fourth floor: Beam/slab/stair formwork & steel hold-point inspection | 0 | MILESTONE_ZERO_DURATION | NOT_MEASURED | ENGINEER_INSPECTION | REFERENCE_ONLY_NOT_ACTUAL_SITE_ALLOCATION | ARC-02/05, STR-03/17, RPT-2083 | PROPOSED_NOT_ADMITTED_TO_APPROVED_WBS | FS | 0 | 399 | 399 | 399 | 399 | 0 | True | HAR-0726 | True |
| HAR-0728 | HAR.SUPERSTRUCTURE.FOURTH | SUPERSTRUCTURE | FOURTH | Fourth floor: M25 beam/slab/stair placement, slump/cubes and leveling | 2 | ILLUSTRATIVE_CREW_PLANNING_SEED_NOT_APPROVED | PROVISIONAL_GEOMETRY_FROM_SOURCE | CONCRETE | REFERENCE_ONLY_NOT_ACTUAL_SITE_ALLOCATION | ARC-02/05, STR-03/17, RPT-2083 | PROPOSED_NOT_ADMITTED_TO_APPROVED_WBS | FS | 0 | 399 | 401 | 401 | 399 | 0 | True | HAR-0727 |  |
| HAR-0729 | HAR.SUPERSTRUCTURE.FOURTH | SUPERSTRUCTURE | FOURTH | Fourth floor: Curing, prop-retention and construction-load control | 7 | ILLUSTRATIVE_CREW_PLANNING_SEED_NOT_APPROVED | NOT_MEASURED | CONCRETE | REFERENCE_ONLY_NOT_ACTUAL_SITE_ALLOCATION | ARC-02/05, STR-03/17, RPT-2083 | PROPOSED_NOT_ADMITTED_TO_APPROVED_WBS | FS | 0 | 401 | 408 | 408 | 401 | 0 | True | HAR-0728 |  |
| HAR-0730 | HAR.SUPERSTRUCTURE.FOURTH | SUPERSTRUCTURE | FOURTH | Fourth floor: Structural pour and dimensional QA hold | 0 | MILESTONE_ZERO_DURATION | NOT_MEASURED | ENGINEER_INSPECTION | REFERENCE_ONLY_NOT_ACTUAL_SITE_ALLOCATION | ARC-02/05, STR-03/17, RPT-2083 | PROPOSED_NOT_ADMITTED_TO_APPROVED_WBS | FS | 0 | 408 | 408 | 408 | 408 | 0 | True | HAR-0729 | True |
| HAR-0731 | HAR.MASONRY.FOURTH | MASONRY | FOURTH | Fourth floor: Masonry set-out, openings and wall thickness check | 1 | ILLUSTRATIVE_CREW_PLANNING_SEED_NOT_APPROVED | NOT_MEASURED | SURVEY | REFERENCE_ONLY_NOT_ACTUAL_SITE_ALLOCATION | ARC-02/05, CAD-R000002-PROVISIONAL | PROPOSED_NOT_ADMITTED_TO_APPROVED_WBS | FS | 0 | 408 | 409 | 409 | 408 | 0 | True | HAR-0730 |  |
| HAR-0732 | HAR.MASONRY.FOURTH | MASONRY | FOURTH | Fourth floor: Masonry material sampling, wetting and mortar preparation | 1 | ILLUSTRATIVE_CREW_PLANNING_SEED_NOT_APPROVED | NOT_MEASURED | MASONRY | REFERENCE_ONLY_NOT_ACTUAL_SITE_ALLOCATION | ARC-02/05, CAD-R000002-PROVISIONAL | PROPOSED_NOT_ADMITTED_TO_APPROVED_WBS | FS | 0 | 409 | 410 | 410 | 409 | 0 | True | HAR-0731 |  |
| HAR-0733 | HAR.MASONRY.FOURTH | MASONRY | FOURTH | Fourth floor: External wall masonry lifts incl. lintel interface | 4 | ILLUSTRATIVE_CREW_PLANNING_SEED_NOT_APPROVED | NOT_MEASURED | MASONRY | REFERENCE_ONLY_NOT_ACTUAL_SITE_ALLOCATION | ARC-02/05, CAD-R000002-PROVISIONAL | PROPOSED_NOT_ADMITTED_TO_APPROVED_WBS | FS | 0 | 410 | 414 | 414 | 410 | 0 | True | HAR-0732 |  |
| HAR-0734 | HAR.MASONRY.FOURTH | MASONRY | FOURTH | Fourth floor: Internal partition masonry lifts and ties | 3 | ILLUSTRATIVE_CREW_PLANNING_SEED_NOT_APPROVED | NOT_MEASURED | MASONRY | REFERENCE_ONLY_NOT_ACTUAL_SITE_ALLOCATION | ARC-02/05, CAD-R000002-PROVISIONAL | PROPOSED_NOT_ADMITTED_TO_APPROVED_WBS | FS | 0 | 414 | 417 | 417 | 414 | 0 | True | HAR-0733 |  |
| HAR-0735 | HAR.MASONRY.FOURTH | MASONRY | FOURTH | Fourth floor: Door and window opening verification with schedules | 1 | ILLUSTRATIVE_CREW_PLANNING_SEED_NOT_APPROVED | NOT_MEASURED | SURVEY | REFERENCE_ONLY_NOT_ACTUAL_SITE_ALLOCATION | ARC-02/05, CAD-R000002-PROVISIONAL | PROPOSED_NOT_ADMITTED_TO_APPROVED_WBS | FS | 0 | 417 | 418 | 418 | 417 | 0 | True | HAR-0734 |  |
| HAR-0736 | HAR.MASONRY.FOURTH | MASONRY | FOURTH | Fourth floor: Nonstructural wall hold / seismic separation check | 0 | MILESTONE_ZERO_DURATION | NOT_MEASURED | ENGINEER_INSPECTION | REFERENCE_ONLY_NOT_ACTUAL_SITE_ALLOCATION | ARC-02/05, CAD-R000002-PROVISIONAL | PROPOSED_NOT_ADMITTED_TO_APPROVED_WBS | FS | 0 | 418 | 418 | 418 | 418 | 0 | True | HAR-0735 | True |
| HAR-0737 | HAR.MASONRY.FOURTH | MASONRY | FOURTH | Fourth floor: Internal and external chasing coordinates agreed with MEP | 1 | ILLUSTRATIVE_CREW_PLANNING_SEED_NOT_APPROVED | NOT_MEASURED | MEP_COORDINATION | REFERENCE_ONLY_NOT_ACTUAL_SITE_ALLOCATION | ARC-02/05, CAD-R000002-PROVISIONAL | PROPOSED_NOT_ADMITTED_TO_APPROVED_WBS | FS | 0 | 418 | 419 | 419 | 418 | 0 | True | HAR-0736 |  |
| HAR-0738 | HAR.MEP_ROUGH_IN.FOURTH | MEP_ROUGH_IN | FOURTH | Fourth floor: MEP floor drawing coordination and ceiling-zone clash review | 2 | ILLUSTRATIVE_CREW_PLANNING_SEED_NOT_APPROVED | NOT_MEASURED | MEP_COORDINATION | REFERENCE_ONLY_NOT_ACTUAL_SITE_ALLOCATION | ARC-02/05, DUDBC-2081, SCOPE_TO_CONFIRM | PROPOSED_NOT_ADMITTED_TO_APPROVED_WBS | FS | 0 | 419 | 421 | 421 | 419 | 0 | True | HAR-0737, HAR-0054, HAR-0055, HAR-0056, HAR-0058 |  |
| HAR-0739 | HAR.MEP_ROUGH_IN.FOURTH | MEP_ROUGH_IN | FOURTH | Fourth floor: Drainage stack riser supports and sleeve installation | 2 | ILLUSTRATIVE_CREW_PLANNING_SEED_NOT_APPROVED | NOT_MEASURED | PLUMBING | REFERENCE_ONLY_NOT_ACTUAL_SITE_ALLOCATION | ARC-02/05, DUDBC-2081, SCOPE_TO_CONFIRM | PROPOSED_NOT_ADMITTED_TO_APPROVED_WBS | FS | 0 | 421 | 423 | 423 | 421 | 0 | True | HAR-0738 |  |
| HAR-0740 | HAR.MEP_ROUGH_IN.FOURTH | MEP_ROUGH_IN | FOURTH | Fourth floor: Cold water distribution and pressure-line rough in | 2 | ILLUSTRATIVE_CREW_PLANNING_SEED_NOT_APPROVED | NOT_MEASURED | PLUMBING | REFERENCE_ONLY_NOT_ACTUAL_SITE_ALLOCATION | ARC-02/05, DUDBC-2081, SCOPE_TO_CONFIRM | PROPOSED_NOT_ADMITTED_TO_APPROVED_WBS | FS | 0 | 423 | 425 | 425 | 423 | 0 | True | HAR-0739 |  |
| HAR-0741 | HAR.MEP_ROUGH_IN.FOURTH | MEP_ROUGH_IN | FOURTH | Fourth floor: Soil/waste/vent pipe branches and floor traps | 2 | ILLUSTRATIVE_CREW_PLANNING_SEED_NOT_APPROVED | NOT_MEASURED | PLUMBING | REFERENCE_ONLY_NOT_ACTUAL_SITE_ALLOCATION | ARC-02/05, DUDBC-2081, SCOPE_TO_CONFIRM | PROPOSED_NOT_ADMITTED_TO_APPROVED_WBS | FS | 0 | 425 | 427 | 427 | 425 | 0 | True | HAR-0740 |  |
| HAR-0742 | HAR.MEP_ROUGH_IN.FOURTH | MEP_ROUGH_IN | FOURTH | Fourth floor: Sanitary wall sleeve, shaft access and cleanout placement | 1 | ILLUSTRATIVE_CREW_PLANNING_SEED_NOT_APPROVED | NOT_MEASURED | PLUMBING | REFERENCE_ONLY_NOT_ACTUAL_SITE_ALLOCATION | ARC-02/05, DUDBC-2081, SCOPE_TO_CONFIRM | PROPOSED_NOT_ADMITTED_TO_APPROVED_WBS | FS | 0 | 427 | 428 | 428 | 427 | 0 | True | HAR-0741 |  |
| HAR-0743 | HAR.MEP_ROUGH_IN.FOURTH | MEP_ROUGH_IN | FOURTH | Fourth floor: Electrical concealed conduit and switchboard rough in | 2 | ILLUSTRATIVE_CREW_PLANNING_SEED_NOT_APPROVED | NOT_MEASURED | ELECTRICAL | REFERENCE_ONLY_NOT_ACTUAL_SITE_ALLOCATION | ARC-02/05, DUDBC-2081, SCOPE_TO_CONFIRM | PROPOSED_NOT_ADMITTED_TO_APPROVED_WBS | FS | 0 | 428 | 430 | 430 | 428 | 0 | True | HAR-0742 |  |
| HAR-0744 | HAR.MEP_ROUGH_IN.FOURTH | MEP_ROUGH_IN | FOURTH | Fourth floor: Electrical riser ducts, earthing/bonding rough in | 2 | ILLUSTRATIVE_CREW_PLANNING_SEED_NOT_APPROVED | NOT_MEASURED | ELECTRICAL | REFERENCE_ONLY_NOT_ACTUAL_SITE_ALLOCATION | ARC-02/05, DUDBC-2081, SCOPE_TO_CONFIRM | PROPOSED_NOT_ADMITTED_TO_APPROVED_WBS | FS | 0 | 430 | 432 | 432 | 430 | 0 | True | HAR-0743 |  |
| HAR-0745 | HAR.MEP_ROUGH_IN.FOURTH | MEP_ROUGH_IN | FOURTH | Fourth floor: Fire detection/alarm conduits and interfaces | 2 | ILLUSTRATIVE_CREW_PLANNING_SEED_NOT_APPROVED | NOT_MEASURED | FIRE | REFERENCE_ONLY_NOT_ACTUAL_SITE_ALLOCATION | ARC-02/05, DUDBC-2081, SCOPE_TO_CONFIRM | PROPOSED_NOT_ADMITTED_TO_APPROVED_WBS | FS | 0 | 432 | 434 | 434 | 432 | 0 | True | HAR-0744 |  |
| HAR-0746 | HAR.MEP_ROUGH_IN.FOURTH | MEP_ROUGH_IN | FOURTH | Fourth floor: Emergency/exit-lighting circuits rough in | 1 | ILLUSTRATIVE_CREW_PLANNING_SEED_NOT_APPROVED | NOT_MEASURED | ELECTRICAL | REFERENCE_ONLY_NOT_ACTUAL_SITE_ALLOCATION | ARC-02/05, DUDBC-2081, SCOPE_TO_CONFIRM | PROPOSED_NOT_ADMITTED_TO_APPROVED_WBS | FS | 0 | 434 | 435 | 435 | 434 | 0 | True | HAR-0745 |  |
| HAR-0747 | HAR.MEP_ROUGH_IN.FOURTH | MEP_ROUGH_IN | FOURTH | Fourth floor: Telecom/data/CCTV service raceway rough in (if in scope) | 2 | ILLUSTRATIVE_CREW_PLANNING_SEED_NOT_APPROVED | NOT_MEASURED | LOW_VOLTAGE | REFERENCE_ONLY_NOT_ACTUAL_SITE_ALLOCATION | ARC-02/05, DUDBC-2081, SCOPE_TO_CONFIRM | PROPOSED_NOT_ADMITTED_TO_APPROVED_WBS | FS | 0 | 435 | 437 | 437 | 435 | 0 | True | HAR-0746 |  |
| HAR-0748 | HAR.MEP_ROUGH_IN.FOURTH | MEP_ROUGH_IN | FOURTH | Fourth floor: Ventilation / exhaust pathways and shafts (subject to design) | 2 | ILLUSTRATIVE_CREW_PLANNING_SEED_NOT_APPROVED | NOT_MEASURED | VENTILATION | REFERENCE_ONLY_NOT_ACTUAL_SITE_ALLOCATION | ARC-02/05, DUDBC-2081, SCOPE_TO_CONFIRM | PROPOSED_NOT_ADMITTED_TO_APPROVED_WBS | FS | 0 | 437 | 439 | 439 | 437 | 0 | True | HAR-0747 |  |
| HAR-0749 | HAR.MEP_ROUGH_IN.FOURTH | MEP_ROUGH_IN | FOURTH | Fourth floor: Lift shaft dimension, embed and access coordination (where applicable) | 1 | ILLUSTRATIVE_CREW_PLANNING_SEED_NOT_APPROVED | NOT_MEASURED | LIFT | REFERENCE_ONLY_NOT_ACTUAL_SITE_ALLOCATION | ARC-02/05, DUDBC-2081, SCOPE_TO_CONFIRM | PROPOSED_NOT_ADMITTED_TO_APPROVED_WBS | FS | 0 | 439 | 440 | 440 | 439 | 0 | True | HAR-0748 |  |
| HAR-0750 | HAR.MEP_ROUGH_IN.FOURTH | MEP_ROUGH_IN | FOURTH | Fourth floor: MEP pressure/leak tests before plaster | 0 | MILESTONE_ZERO_DURATION | NOT_MEASURED | INSPECTION | REFERENCE_ONLY_NOT_ACTUAL_SITE_ALLOCATION | ARC-02/05, DUDBC-2081, SCOPE_TO_CONFIRM | PROPOSED_NOT_ADMITTED_TO_APPROVED_WBS | FS | 0 | 440 | 440 | 440 | 440 | 0 | True | HAR-0749 | True |
| HAR-0751 | HAR.MEP_ROUGH_IN.FOURTH | MEP_ROUGH_IN | FOURTH | Fourth floor: MEP cable continuity and conduit inspection hold | 0 | MILESTONE_ZERO_DURATION | NOT_MEASURED | INSPECTION | REFERENCE_ONLY_NOT_ACTUAL_SITE_ALLOCATION | ARC-02/05, DUDBC-2081, SCOPE_TO_CONFIRM | PROPOSED_NOT_ADMITTED_TO_APPROVED_WBS | FS | 0 | 440 | 440 | 440 | 440 | 0 | True | HAR-0750 | True |
| HAR-0752 | HAR.MEP_ROUGH_IN.FOURTH | MEP_ROUGH_IN | FOURTH | Fourth floor: Repair chase cuts and firestop service penetrations | 1 | ILLUSTRATIVE_CREW_PLANNING_SEED_NOT_APPROVED | NOT_MEASURED | MASONRY | REFERENCE_ONLY_NOT_ACTUAL_SITE_ALLOCATION | ARC-02/05, DUDBC-2081, SCOPE_TO_CONFIRM | PROPOSED_NOT_ADMITTED_TO_APPROVED_WBS | FS | 0 | 440 | 441 | 441 | 440 | 0 | True | HAR-0751 |  |
| HAR-0753 | HAR.MEP_ROUGH_IN.FOURTH | MEP_ROUGH_IN | FOURTH | Fourth floor: MEP first-fix release milestone | 0 | MILESTONE_ZERO_DURATION | NOT_MEASURED | INSPECTION | REFERENCE_ONLY_NOT_ACTUAL_SITE_ALLOCATION | ARC-02/05, DUDBC-2081, SCOPE_TO_CONFIRM | PROPOSED_NOT_ADMITTED_TO_APPROVED_WBS | FS | 0 | 441 | 441 | 441 | 441 | 0 | True | HAR-0752 | True |
| HAR-0754 | HAR.FINISHES.FOURTH | FINISHES | FOURTH | Fourth floor: Wet area screed and falls inspection | 2 | ILLUSTRATIVE_CREW_PLANNING_SEED_NOT_APPROVED | NOT_MEASURED | FLOORING | REFERENCE_ONLY_NOT_ACTUAL_SITE_ALLOCATION | ARC-02/05, DUDBC-2081, SCOPE_TO_CONFIRM | PROPOSED_NOT_ADMITTED_TO_APPROVED_WBS | FS | 0 | 441 | 443 | 443 | 441 | 0 | True | HAR-0753 |  |
| HAR-0755 | HAR.FINISHES.FOURTH | FINISHES | FOURTH | Fourth floor: Waterproofing substrate moisture / surface preparation | 2 | ILLUSTRATIVE_CREW_PLANNING_SEED_NOT_APPROVED | NOT_MEASURED | WATERPROOFING | REFERENCE_ONLY_NOT_ACTUAL_SITE_ALLOCATION | ARC-02/05, DUDBC-2081, SCOPE_TO_CONFIRM | PROPOSED_NOT_ADMITTED_TO_APPROVED_WBS | FS | 0 | 443 | 445 | 445 | 443 | 0 | True | HAR-0754, HAR-0051 |  |
| HAR-0756 | HAR.FINISHES.FOURTH | FINISHES | FOURTH | Fourth floor: Wet area waterproofing membranes and upstands | 2 | ILLUSTRATIVE_CREW_PLANNING_SEED_NOT_APPROVED | NOT_MEASURED | WATERPROOFING | REFERENCE_ONLY_NOT_ACTUAL_SITE_ALLOCATION | ARC-02/05, DUDBC-2081, SCOPE_TO_CONFIRM | PROPOSED_NOT_ADMITTED_TO_APPROVED_WBS | FS | 0 | 445 | 447 | 447 | 445 | 0 | True | HAR-0755 |  |
| HAR-0757 | HAR.FINISHES.FOURTH | FINISHES | FOURTH | Fourth floor: Flood test and waterproofing hold | 0 | MILESTONE_ZERO_DURATION | NOT_MEASURED | INSPECTION | REFERENCE_ONLY_NOT_ACTUAL_SITE_ALLOCATION | ARC-02/05, DUDBC-2081, SCOPE_TO_CONFIRM | PROPOSED_NOT_ADMITTED_TO_APPROVED_WBS | FS | 0 | 447 | 447 | 447 | 447 | 0 | True | HAR-0756 | True |
| HAR-0758 | HAR.FINISHES.FOURTH | FINISHES | FOURTH | Fourth floor: Internal plaster/render to walls | 4 | ILLUSTRATIVE_CREW_PLANNING_SEED_NOT_APPROVED | NOT_MEASURED | PLASTER | REFERENCE_ONLY_NOT_ACTUAL_SITE_ALLOCATION | ARC-02/05, DUDBC-2081, SCOPE_TO_CONFIRM | PROPOSED_NOT_ADMITTED_TO_APPROVED_WBS | FS | 0 | 447 | 451 | 451 | 447 | 0 | True | HAR-0757 |  |
| HAR-0759 | HAR.FINISHES.FOURTH | FINISHES | FOURTH | Fourth floor: External render and wall repair | 4 | ILLUSTRATIVE_CREW_PLANNING_SEED_NOT_APPROVED | NOT_MEASURED | PLASTER | REFERENCE_ONLY_NOT_ACTUAL_SITE_ALLOCATION | ARC-02/05, DUDBC-2081, SCOPE_TO_CONFIRM | PROPOSED_NOT_ADMITTED_TO_APPROVED_WBS | FS | 0 | 451 | 455 | 455 | 451 | 0 | True | HAR-0758 |  |
| HAR-0760 | HAR.FINISHES.FOURTH | FINISHES | FOURTH | Fourth floor: Plaster curing and line/plumb QA | 2 | ILLUSTRATIVE_CREW_PLANNING_SEED_NOT_APPROVED | NOT_MEASURED | PLASTER | REFERENCE_ONLY_NOT_ACTUAL_SITE_ALLOCATION | ARC-02/05, DUDBC-2081, SCOPE_TO_CONFIRM | PROPOSED_NOT_ADMITTED_TO_APPROVED_WBS | FS | 0 | 455 | 457 | 457 | 455 | 0 | True | HAR-0759 |  |
| HAR-0761 | HAR.FINISHES.FOURTH | FINISHES | FOURTH | Fourth floor: Floor levelling / screed and flatness checks | 2 | ILLUSTRATIVE_CREW_PLANNING_SEED_NOT_APPROVED | NOT_MEASURED | FLOORING | REFERENCE_ONLY_NOT_ACTUAL_SITE_ALLOCATION | ARC-02/05, DUDBC-2081, SCOPE_TO_CONFIRM | PROPOSED_NOT_ADMITTED_TO_APPROVED_WBS | FS | 0 | 457 | 459 | 459 | 457 | 0 | True | HAR-0760 |  |
| HAR-0762 | HAR.FINISHES.FOURTH | FINISHES | FOURTH | Fourth floor: Ceiling suspension / plasterboard preparation where designed | 2 | ILLUSTRATIVE_CREW_PLANNING_SEED_NOT_APPROVED | NOT_MEASURED | CEILING | REFERENCE_ONLY_NOT_ACTUAL_SITE_ALLOCATION | ARC-02/05, DUDBC-2081, SCOPE_TO_CONFIRM | PROPOSED_NOT_ADMITTED_TO_APPROVED_WBS | FS | 0 | 459 | 461 | 461 | 459 | 0 | True | HAR-0761 |  |
| HAR-0763 | HAR.FINISHES.FOURTH | FINISHES | FOURTH | Fourth floor: Floor tile/stone/finish laying | 4 | ILLUSTRATIVE_CREW_PLANNING_SEED_NOT_APPROVED | NOT_MEASURED | FLOORING | REFERENCE_ONLY_NOT_ACTUAL_SITE_ALLOCATION | ARC-02/05, DUDBC-2081, SCOPE_TO_CONFIRM | PROPOSED_NOT_ADMITTED_TO_APPROVED_WBS | FS | 0 | 461 | 465 | 465 | 461 | 0 | True | HAR-0762 |  |
| HAR-0764 | HAR.FINISHES.FOURTH | FINISHES | FOURTH | Fourth floor: Wall tiles in wet and service areas | 3 | ILLUSTRATIVE_CREW_PLANNING_SEED_NOT_APPROVED | NOT_MEASURED | FLOORING | REFERENCE_ONLY_NOT_ACTUAL_SITE_ALLOCATION | ARC-02/05, DUDBC-2081, SCOPE_TO_CONFIRM | PROPOSED_NOT_ADMITTED_TO_APPROVED_WBS | FS | 0 | 465 | 468 | 468 | 465 | 0 | True | HAR-0763 |  |
| HAR-0765 | HAR.FINISHES.FOURTH | FINISHES | FOURTH | Fourth floor: Door frame installation and alignment | 2 | ILLUSTRATIVE_CREW_PLANNING_SEED_NOT_APPROVED | NOT_MEASURED | JOINERY | REFERENCE_ONLY_NOT_ACTUAL_SITE_ALLOCATION | ARC-02/05, DUDBC-2081, SCOPE_TO_CONFIRM | PROPOSED_NOT_ADMITTED_TO_APPROVED_WBS | FS | 0 | 468 | 470 | 470 | 468 | 0 | True | HAR-0764, HAR-0053 |  |
| HAR-0766 | HAR.FINISHES.FOURTH | FINISHES | FOURTH | Fourth floor: Window frame installation / flashing / sealant | 2 | ILLUSTRATIVE_CREW_PLANNING_SEED_NOT_APPROVED | NOT_MEASURED | JOINERY | REFERENCE_ONLY_NOT_ACTUAL_SITE_ALLOCATION | ARC-02/05, DUDBC-2081, SCOPE_TO_CONFIRM | PROPOSED_NOT_ADMITTED_TO_APPROVED_WBS | FS | 0 | 470 | 472 | 472 | 470 | 0 | True | HAR-0765 |  |
| HAR-0767 | HAR.FINISHES.FOURTH | FINISHES | FOURTH | Fourth floor: Internal door leaves, hardware and locks | 2 | ILLUSTRATIVE_CREW_PLANNING_SEED_NOT_APPROVED | NOT_MEASURED | JOINERY | REFERENCE_ONLY_NOT_ACTUAL_SITE_ALLOCATION | ARC-02/05, DUDBC-2081, SCOPE_TO_CONFIRM | PROPOSED_NOT_ADMITTED_TO_APPROVED_WBS | FS | 0 | 472 | 474 | 474 | 472 | 0 | True | HAR-0766 |  |
| HAR-0768 | HAR.FINISHES.FOURTH | FINISHES | FOURTH | Fourth floor: Electrical cable pulling, fittings, DB final connections | 2 | ILLUSTRATIVE_CREW_PLANNING_SEED_NOT_APPROVED | NOT_MEASURED | ELECTRICAL | REFERENCE_ONLY_NOT_ACTUAL_SITE_ALLOCATION | ARC-02/05, DUDBC-2081, SCOPE_TO_CONFIRM | PROPOSED_NOT_ADMITTED_TO_APPROVED_WBS | FS | 0 | 474 | 476 | 476 | 474 | 0 | True | HAR-0767 |  |
| HAR-0769 | HAR.FINISHES.FOURTH | FINISHES | FOURTH | Fourth floor: Plumbing fixtures, valves, sanitary fittings | 2 | ILLUSTRATIVE_CREW_PLANNING_SEED_NOT_APPROVED | NOT_MEASURED | PLUMBING | REFERENCE_ONLY_NOT_ACTUAL_SITE_ALLOCATION | ARC-02/05, DUDBC-2081, SCOPE_TO_CONFIRM | PROPOSED_NOT_ADMITTED_TO_APPROVED_WBS | FS | 0 | 476 | 478 | 478 | 476 | 0 | True | HAR-0768 |  |
| HAR-0770 | HAR.FINISHES.FOURTH | FINISHES | FOURTH | Fourth floor: Fire alarm devices, emergency lighting and first-stage checks | 2 | ILLUSTRATIVE_CREW_PLANNING_SEED_NOT_APPROVED | NOT_MEASURED | FIRE | REFERENCE_ONLY_NOT_ACTUAL_SITE_ALLOCATION | ARC-02/05, DUDBC-2081, SCOPE_TO_CONFIRM | PROPOSED_NOT_ADMITTED_TO_APPROVED_WBS | FS | 0 | 478 | 480 | 480 | 478 | 0 | True | HAR-0769 |  |

| activity_id | wbs | phase | scope | title | duration_workdays | duration_basis | quantity_basis | crew_category | crew_basis | source_refs | status | logic_type | lag_workdays | planned_start_workday | planned_finish_workday | latest_finish_workday | latest_start_workday | total_float_workdays | critical | predecessor_ids | engineering_hold |
| --- | --- | --- | --- | --- | --- | --- | --- | --- | --- | --- | --- | --- | --- | --- | --- | --- | --- | --- | --- | --- | --- |
| HAR-0771 | HAR.FINISHES.FOURTH | FINISHES | FOURTH | Fourth floor: Surface primer, putty and finish coats | 3 | ILLUSTRATIVE_CREW_PLANNING_SEED_NOT_APPROVED | NOT_MEASURED | PAINTING | REFERENCE_ONLY_NOT_ACTUAL_SITE_ALLOCATION | ARC-02/05, DUDBC-2081, SCOPE_TO_CONFIRM | PROPOSED_NOT_ADMITTED_TO_APPROVED_WBS | FS | 0 | 480 | 483 | 483 | 480 | 0 | True | HAR-0770 |  |
| HAR-0772 | HAR.FINISHES.FOURTH | FINISHES | FOURTH | Fourth floor: Balustrades, handrails and stair finishes | 2 | ILLUSTRATIVE_CREW_PLANNING_SEED_NOT_APPROVED | NOT_MEASURED | METALWORK | REFERENCE_ONLY_NOT_ACTUAL_SITE_ALLOCATION | ARC-02/05, DUDBC-2081, SCOPE_TO_CONFIRM | PROPOSED_NOT_ADMITTED_TO_APPROVED_WBS | FS | 0 | 483 | 485 | 485 | 483 | 0 | True | HAR-0771 |  |
| HAR-0773 | HAR.FINISHES.FOURTH | FINISHES | FOURTH | Fourth floor: Kitchen/fit-out carpentry, residential level where applicable | 2 | ILLUSTRATIVE_CREW_PLANNING_SEED_NOT_APPROVED | NOT_MEASURED | INTERIOR_FITOUT | REFERENCE_ONLY_NOT_ACTUAL_SITE_ALLOCATION | ARC-02/05, DUDBC-2081, SCOPE_TO_CONFIRM | PROPOSED_NOT_ADMITTED_TO_APPROVED_WBS | FS | 0 | 485 | 487 | 487 | 485 | 0 | True | HAR-0772 |  |
| HAR-0774 | HAR.FINISHES.FOURTH | FINISHES | FOURTH | Fourth floor: Room-level electrical, plumbing and leakage tests | 0 | MILESTONE_ZERO_DURATION | NOT_MEASURED | INSPECTION | REFERENCE_ONLY_NOT_ACTUAL_SITE_ALLOCATION | ARC-02/05, DUDBC-2081, SCOPE_TO_CONFIRM | PROPOSED_NOT_ADMITTED_TO_APPROVED_WBS | FS | 0 | 487 | 487 | 487 | 487 | 0 | True | HAR-0773 | True |
| HAR-0775 | HAR.FINISHES.FOURTH | FINISHES | FOURTH | Fourth floor: Floor defects/punch list and as-built capture | 2 | ILLUSTRATIVE_CREW_PLANNING_SEED_NOT_APPROVED | NOT_MEASURED | QA | REFERENCE_ONLY_NOT_ACTUAL_SITE_ALLOCATION | ARC-02/05, DUDBC-2081, SCOPE_TO_CONFIRM | PROPOSED_NOT_ADMITTED_TO_APPROVED_WBS | FS | 0 | 487 | 489 | 489 | 487 | 0 | True | HAR-0774 |  |
| HAR-0776 | HAR.ROOF.TERRACE | ROOF | TERRACE | Roof plan / terraces geometry and surface fall check | 2 | ILLUSTRATIVE_CREW_PLANNING_SEED_NOT_APPROVED | NOT_MEASURED | WATERPROOFING | REFERENCE_ONLY_NOT_ACTUAL_SITE_ALLOCATION | ARC-05, RPT-2083, SCOPE_TO_CONFIRM | PROPOSED_NOT_ADMITTED_TO_APPROVED_WBS | FS | 0 | 408 | 410 | 463 | 461 | 53 |  | HAR-0730 |  |
| HAR-0777 | HAR.ROOF.TERRACE | ROOF | TERRACE | Terrace ponding, slope design and outlets review | 2 | ILLUSTRATIVE_CREW_PLANNING_SEED_NOT_APPROVED | NOT_MEASURED | WATERPROOFING | REFERENCE_ONLY_NOT_ACTUAL_SITE_ALLOCATION | ARC-05, RPT-2083, SCOPE_TO_CONFIRM | PROPOSED_NOT_ADMITTED_TO_APPROVED_WBS | FS | 0 | 410 | 412 | 465 | 463 | 53 |  | HAR-0776 |  |
| HAR-0778 | HAR.ROOF.TERRACE | ROOF | TERRACE | Roof parapet and opening perimeter setting-out | 1 | ILLUSTRATIVE_CREW_PLANNING_SEED_NOT_APPROVED | NOT_MEASURED | WATERPROOFING | REFERENCE_ONLY_NOT_ACTUAL_SITE_ALLOCATION | ARC-05, RPT-2083, SCOPE_TO_CONFIRM | PROPOSED_NOT_ADMITTED_TO_APPROVED_WBS | FS | 0 | 412 | 413 | 466 | 465 | 53 |  | HAR-0777 |  |
| HAR-0779 | HAR.ROOF.TERRACE | ROOF | TERRACE | Parapet construction / anchors / guard edge safety | 3 | ILLUSTRATIVE_CREW_PLANNING_SEED_NOT_APPROVED | NOT_MEASURED | WATERPROOFING | REFERENCE_ONLY_NOT_ACTUAL_SITE_ALLOCATION | ARC-05, RPT-2083, SCOPE_TO_CONFIRM | PROPOSED_NOT_ADMITTED_TO_APPROVED_WBS | FS | 0 | 413 | 416 | 469 | 466 | 53 |  | HAR-0778 |  |
| HAR-0780 | HAR.ROOF.TERRACE | ROOF | TERRACE | Roof screed formation and drainage gradient | 3 | ILLUSTRATIVE_CREW_PLANNING_SEED_NOT_APPROVED | NOT_MEASURED | WATERPROOFING | REFERENCE_ONLY_NOT_ACTUAL_SITE_ALLOCATION | ARC-05, RPT-2083, SCOPE_TO_CONFIRM | PROPOSED_NOT_ADMITTED_TO_APPROVED_WBS | FS | 0 | 416 | 419 | 472 | 469 | 53 |  | HAR-0779 |  |
| HAR-0781 | HAR.ROOF.TERRACE | ROOF | TERRACE | Roof expansion joints, penetrations and cove formation | 2 | ILLUSTRATIVE_CREW_PLANNING_SEED_NOT_APPROVED | NOT_MEASURED | WATERPROOFING | REFERENCE_ONLY_NOT_ACTUAL_SITE_ALLOCATION | ARC-05, RPT-2083, SCOPE_TO_CONFIRM | PROPOSED_NOT_ADMITTED_TO_APPROVED_WBS | FS | 0 | 419 | 421 | 474 | 472 | 53 |  | HAR-0780 |  |
| HAR-0782 | HAR.ROOF.TERRACE | ROOF | TERRACE | Roof membrane / waterproofing layer and flashings | 3 | ILLUSTRATIVE_CREW_PLANNING_SEED_NOT_APPROVED | NOT_MEASURED | WATERPROOFING | REFERENCE_ONLY_NOT_ACTUAL_SITE_ALLOCATION | ARC-05, RPT-2083, SCOPE_TO_CONFIRM | PROPOSED_NOT_ADMITTED_TO_APPROVED_WBS | FS | 0 | 421 | 424 | 477 | 474 | 53 |  | HAR-0781 |  |
| HAR-0783 | HAR.ROOF.TERRACE | ROOF | TERRACE | Drain outlet grilles and rainwater downpipes | 2 | ILLUSTRATIVE_CREW_PLANNING_SEED_NOT_APPROVED | NOT_MEASURED | WATERPROOFING | REFERENCE_ONLY_NOT_ACTUAL_SITE_ALLOCATION | ARC-05, RPT-2083, SCOPE_TO_CONFIRM | PROPOSED_NOT_ADMITTED_TO_APPROVED_WBS | FS | 0 | 424 | 426 | 479 | 477 | 53 |  | HAR-0782 |  |
| HAR-0784 | HAR.ROOF.TERRACE | ROOF | TERRACE | Terrace membrane flood/ponding test hold | 0 | MILESTONE_ZERO_DURATION | NOT_MEASURED | INSPECTION | REFERENCE_ONLY_NOT_ACTUAL_SITE_ALLOCATION | ARC-05, RPT-2083, SCOPE_TO_CONFIRM | PROPOSED_NOT_ADMITTED_TO_APPROVED_WBS | FS | 0 | 426 | 426 | 479 | 479 | 53 |  | HAR-0783 | True |
| HAR-0785 | HAR.ROOF.TERRACE | ROOF | TERRACE | Roof thermal protection / topping screed if specified | 2 | ILLUSTRATIVE_CREW_PLANNING_SEED_NOT_APPROVED | NOT_MEASURED | WATERPROOFING | REFERENCE_ONLY_NOT_ACTUAL_SITE_ALLOCATION | ARC-05, RPT-2083, SCOPE_TO_CONFIRM | PROPOSED_NOT_ADMITTED_TO_APPROVED_WBS | FS | 0 | 426 | 428 | 481 | 479 | 53 |  | HAR-0784 |  |
| HAR-0786 | HAR.ROOF.TERRACE | ROOF | TERRACE | Weathering/protection tile or finish installation | 3 | ILLUSTRATIVE_CREW_PLANNING_SEED_NOT_APPROVED | NOT_MEASURED | WATERPROOFING | REFERENCE_ONLY_NOT_ACTUAL_SITE_ALLOCATION | ARC-05, RPT-2083, SCOPE_TO_CONFIRM | PROPOSED_NOT_ADMITTED_TO_APPROVED_WBS | FS | 0 | 428 | 431 | 484 | 481 | 53 |  | HAR-0785 |  |
| HAR-0787 | HAR.ROOF.TERRACE | ROOF | TERRACE | Upper/lower terrace level separation and railing | 3 | ILLUSTRATIVE_CREW_PLANNING_SEED_NOT_APPROVED | NOT_MEASURED | WATERPROOFING | REFERENCE_ONLY_NOT_ACTUAL_SITE_ALLOCATION | ARC-05, RPT-2083, SCOPE_TO_CONFIRM | PROPOSED_NOT_ADMITTED_TO_APPROVED_WBS | FS | 0 | 431 | 434 | 487 | 484 | 53 |  | HAR-0786 |  |
| HAR-0788 | HAR.ROOF.TERRACE | ROOF | TERRACE | Machine/lift roof penetration firestopping, if designed | 2 | ILLUSTRATIVE_CREW_PLANNING_SEED_NOT_APPROVED | NOT_MEASURED | WATERPROOFING | REFERENCE_ONLY_NOT_ACTUAL_SITE_ALLOCATION | ARC-05, RPT-2083, SCOPE_TO_CONFIRM | PROPOSED_NOT_ADMITTED_TO_APPROVED_WBS | FS | 0 | 434 | 436 | 489 | 487 | 53 |  | HAR-0787 |  |
| HAR-0789 | HAR.ROOF.TERRACE | ROOF | TERRACE | Roof rainwater and overflow trial | 0 | MILESTONE_ZERO_DURATION | NOT_MEASURED | INSPECTION | REFERENCE_ONLY_NOT_ACTUAL_SITE_ALLOCATION | ARC-05, RPT-2083, SCOPE_TO_CONFIRM | PROPOSED_NOT_ADMITTED_TO_APPROVED_WBS | FS | 0 | 436 | 436 | 489 | 489 | 53 |  | HAR-0788 | True |
| HAR-0790 | HAR.ROOF.TERRACE | ROOF | TERRACE | Roof final watertightness inspection | 0 | MILESTONE_ZERO_DURATION | NOT_MEASURED | INSPECTION | REFERENCE_ONLY_NOT_ACTUAL_SITE_ALLOCATION | ARC-05, RPT-2083, SCOPE_TO_CONFIRM | PROPOSED_NOT_ADMITTED_TO_APPROVED_WBS | FS | 0 | 436 | 436 | 489 | 489 | 53 |  | HAR-0789 | True |
| HAR-0791 | HAR.EXTERNAL_WORKS.SITE | EXTERNAL_WORKS | SITE | Site-wide underground drainage alignments and trench permit | 2 | ILLUSTRATIVE_CREW_PLANNING_SEED_NOT_APPROVED | NOT_MEASURED | GENERAL_CIVIL_REFERENCE | REFERENCE_ONLY_NOT_ACTUAL_SITE_ALLOCATION | ARC-01/05, BOQ-WITHOUT-BASEMENT, SCOPE_TO_CONFIRM | PROPOSED_NOT_ADMITTED_TO_APPROVED_WBS | FS | 0 | 218 | 220 | 433 | 431 | 213 |  | HAR-0454 |  |
| HAR-0792 | HAR.EXTERNAL_WORKS.SITE | EXTERNAL_WORKS | SITE | Site drainage, manholes, septic/soak-pit layout source review | 2 | ILLUSTRATIVE_CREW_PLANNING_SEED_NOT_APPROVED | NOT_MEASURED | GENERAL_CIVIL_REFERENCE | REFERENCE_ONLY_NOT_ACTUAL_SITE_ALLOCATION | ARC-01/05, BOQ-WITHOUT-BASEMENT, SCOPE_TO_CONFIRM | PROPOSED_NOT_ADMITTED_TO_APPROVED_WBS | FS | 0 | 220 | 222 | 435 | 433 | 213 |  | HAR-0791 |  |
| HAR-0793 | HAR.EXTERNAL_WORKS.SITE | EXTERNAL_WORKS | SITE | Underground sewer/storm pipe bedding and placement | 4 | ILLUSTRATIVE_CREW_PLANNING_SEED_NOT_APPROVED | NOT_MEASURED | GENERAL_CIVIL_REFERENCE | REFERENCE_ONLY_NOT_ACTUAL_SITE_ALLOCATION | ARC-01/05, BOQ-WITHOUT-BASEMENT, SCOPE_TO_CONFIRM | PROPOSED_NOT_ADMITTED_TO_APPROVED_WBS | FS | 0 | 222 | 226 | 439 | 435 | 213 |  | HAR-0792 |  |
| HAR-0794 | HAR.EXTERNAL_WORKS.SITE | EXTERNAL_WORKS | SITE | Underground service trenches, backfill and compaction tests | 3 | ILLUSTRATIVE_CREW_PLANNING_SEED_NOT_APPROVED | NOT_MEASURED | GENERAL_CIVIL_REFERENCE | REFERENCE_ONLY_NOT_ACTUAL_SITE_ALLOCATION | ARC-01/05, BOQ-WITHOUT-BASEMENT, SCOPE_TO_CONFIRM | PROPOSED_NOT_ADMITTED_TO_APPROVED_WBS | FS | 0 | 226 | 229 | 442 | 439 | 213 |  | HAR-0793 |  |
| HAR-0795 | HAR.EXTERNAL_WORKS.SITE | EXTERNAL_WORKS | SITE | Septic tank / soak pit permit, design and verification hold | 0 | MILESTONE_ZERO_DURATION | NOT_MEASURED | GENERAL_CIVIL_REFERENCE | REFERENCE_ONLY_NOT_ACTUAL_SITE_ALLOCATION | ARC-01/05, BOQ-WITHOUT-BASEMENT, SCOPE_TO_CONFIRM | PROPOSED_NOT_ADMITTED_TO_APPROVED_WBS | FS | 0 | 229 | 229 | 442 | 442 | 213 |  | HAR-0794 | True |
| HAR-0796 | HAR.EXTERNAL_WORKS.SITE | EXTERNAL_WORKS | SITE | Septic / soak / water tank structural work where approved | 5 | ILLUSTRATIVE_CREW_PLANNING_SEED_NOT_APPROVED | NOT_MEASURED | GENERAL_CIVIL_REFERENCE | REFERENCE_ONLY_NOT_ACTUAL_SITE_ALLOCATION | ARC-01/05, BOQ-WITHOUT-BASEMENT, SCOPE_TO_CONFIRM | PROPOSED_NOT_ADMITTED_TO_APPROVED_WBS | FS | 0 | 229 | 234 | 447 | 442 | 213 |  | HAR-0795 |  |
| HAR-0797 | HAR.EXTERNAL_WORKS.SITE | EXTERNAL_WORKS | SITE | External rainwater connections to storm system | 2 | ILLUSTRATIVE_CREW_PLANNING_SEED_NOT_APPROVED | NOT_MEASURED | GENERAL_CIVIL_REFERENCE | REFERENCE_ONLY_NOT_ACTUAL_SITE_ALLOCATION | ARC-01/05, BOQ-WITHOUT-BASEMENT, SCOPE_TO_CONFIRM | PROPOSED_NOT_ADMITTED_TO_APPROVED_WBS | FS | 0 | 234 | 236 | 449 | 447 | 213 |  | HAR-0796 |  |
| HAR-0798 | HAR.EXTERNAL_WORKS.SITE | EXTERNAL_WORKS | SITE | Water supply connection, meters and tests | 2 | ILLUSTRATIVE_CREW_PLANNING_SEED_NOT_APPROVED | NOT_MEASURED | GENERAL_CIVIL_REFERENCE | REFERENCE_ONLY_NOT_ACTUAL_SITE_ALLOCATION | ARC-01/05, BOQ-WITHOUT-BASEMENT, SCOPE_TO_CONFIRM | PROPOSED_NOT_ADMITTED_TO_APPROVED_WBS | FS | 0 | 236 | 238 | 451 | 449 | 213 |  | HAR-0797 |  |
| HAR-0799 | HAR.EXTERNAL_WORKS.SITE | EXTERNAL_WORKS | SITE | Utility power connection request and supplier inspection | 3 | ILLUSTRATIVE_CREW_PLANNING_SEED_NOT_APPROVED | NOT_MEASURED | GENERAL_CIVIL_REFERENCE | REFERENCE_ONLY_NOT_ACTUAL_SITE_ALLOCATION | ARC-01/05, BOQ-WITHOUT-BASEMENT, SCOPE_TO_CONFIRM | PROPOSED_NOT_ADMITTED_TO_APPROVED_WBS | FS | 0 | 238 | 241 | 454 | 451 | 213 |  | HAR-0798 |  |
| HAR-0800 | HAR.EXTERNAL_WORKS.SITE | EXTERNAL_WORKS | SITE | Electrical earth pit and earthing resistance test | 2 | ILLUSTRATIVE_CREW_PLANNING_SEED_NOT_APPROVED | NOT_MEASURED | GENERAL_CIVIL_REFERENCE | REFERENCE_ONLY_NOT_ACTUAL_SITE_ALLOCATION | ARC-01/05, BOQ-WITHOUT-BASEMENT, SCOPE_TO_CONFIRM | PROPOSED_NOT_ADMITTED_TO_APPROVED_WBS | FS | 0 | 241 | 243 | 456 | 454 | 213 |  | HAR-0799 |  |
| HAR-0801 | HAR.EXTERNAL_WORKS.SITE | EXTERNAL_WORKS | SITE | External walls/weather seals and service penetrations | 3 | ILLUSTRATIVE_CREW_PLANNING_SEED_NOT_APPROVED | NOT_MEASURED | GENERAL_CIVIL_REFERENCE | REFERENCE_ONLY_NOT_ACTUAL_SITE_ALLOCATION | ARC-01/05, BOQ-WITHOUT-BASEMENT, SCOPE_TO_CONFIRM | PROPOSED_NOT_ADMITTED_TO_APPROVED_WBS | FS | 0 | 243 | 246 | 459 | 456 | 213 |  | HAR-0800 |  |
| HAR-0802 | HAR.EXTERNAL_WORKS.SITE | EXTERNAL_WORKS | SITE | Exterior facade substrate repairs / primer | 2 | ILLUSTRATIVE_CREW_PLANNING_SEED_NOT_APPROVED | NOT_MEASURED | GENERAL_CIVIL_REFERENCE | REFERENCE_ONLY_NOT_ACTUAL_SITE_ALLOCATION | ARC-01/05, BOQ-WITHOUT-BASEMENT, SCOPE_TO_CONFIRM | PROPOSED_NOT_ADMITTED_TO_APPROVED_WBS | FS | 0 | 246 | 248 | 461 | 459 | 213 |  | HAR-0801 |  |
| HAR-0803 | HAR.EXTERNAL_WORKS.SITE | EXTERNAL_WORKS | SITE | Exterior painting or cladding as specified | 4 | ILLUSTRATIVE_CREW_PLANNING_SEED_NOT_APPROVED | NOT_MEASURED | GENERAL_CIVIL_REFERENCE | REFERENCE_ONLY_NOT_ACTUAL_SITE_ALLOCATION | ARC-01/05, BOQ-WITHOUT-BASEMENT, SCOPE_TO_CONFIRM | PROPOSED_NOT_ADMITTED_TO_APPROVED_WBS | FS | 0 | 248 | 252 | 465 | 461 | 213 |  | HAR-0802 |  |
| HAR-0804 | HAR.EXTERNAL_WORKS.SITE | EXTERNAL_WORKS | SITE | Ground-level external paving base and compaction | 3 | ILLUSTRATIVE_CREW_PLANNING_SEED_NOT_APPROVED | NOT_MEASURED | GENERAL_CIVIL_REFERENCE | REFERENCE_ONLY_NOT_ACTUAL_SITE_ALLOCATION | ARC-01/05, BOQ-WITHOUT-BASEMENT, SCOPE_TO_CONFIRM | PROPOSED_NOT_ADMITTED_TO_APPROVED_WBS | FS | 0 | 252 | 255 | 468 | 465 | 213 |  | HAR-0803 |  |
| HAR-0805 | HAR.EXTERNAL_WORKS.SITE | EXTERNAL_WORKS | SITE | Paving/floor finish and surface drainage falls | 3 | ILLUSTRATIVE_CREW_PLANNING_SEED_NOT_APPROVED | NOT_MEASURED | GENERAL_CIVIL_REFERENCE | REFERENCE_ONLY_NOT_ACTUAL_SITE_ALLOCATION | ARC-01/05, BOQ-WITHOUT-BASEMENT, SCOPE_TO_CONFIRM | PROPOSED_NOT_ADMITTED_TO_APPROVED_WBS | FS | 0 | 255 | 258 | 471 | 468 | 213 |  | HAR-0804 |  |
| HAR-0806 | HAR.EXTERNAL_WORKS.SITE | EXTERNAL_WORKS | SITE | Parking/entrance ramps and access gradients | 3 | ILLUSTRATIVE_CREW_PLANNING_SEED_NOT_APPROVED | NOT_MEASURED | GENERAL_CIVIL_REFERENCE | REFERENCE_ONLY_NOT_ACTUAL_SITE_ALLOCATION | ARC-01/05, BOQ-WITHOUT-BASEMENT, SCOPE_TO_CONFIRM | PROPOSED_NOT_ADMITTED_TO_APPROVED_WBS | FS | 0 | 258 | 261 | 474 | 471 | 213 |  | HAR-0805 |  |
| HAR-0807 | HAR.EXTERNAL_WORKS.SITE | EXTERNAL_WORKS | SITE | Entrance landing, staircase and handrails | 3 | ILLUSTRATIVE_CREW_PLANNING_SEED_NOT_APPROVED | NOT_MEASURED | GENERAL_CIVIL_REFERENCE | REFERENCE_ONLY_NOT_ACTUAL_SITE_ALLOCATION | ARC-01/05, BOQ-WITHOUT-BASEMENT, SCOPE_TO_CONFIRM | PROPOSED_NOT_ADMITTED_TO_APPROVED_WBS | FS | 0 | 261 | 264 | 477 | 474 | 213 |  | HAR-0806 |  |
| HAR-0808 | HAR.EXTERNAL_WORKS.SITE | EXTERNAL_WORKS | SITE | Boundary / gate coordination and installation | 3 | ILLUSTRATIVE_CREW_PLANNING_SEED_NOT_APPROVED | NOT_MEASURED | GENERAL_CIVIL_REFERENCE | REFERENCE_ONLY_NOT_ACTUAL_SITE_ALLOCATION | ARC-01/05, BOQ-WITHOUT-BASEMENT, SCOPE_TO_CONFIRM | PROPOSED_NOT_ADMITTED_TO_APPROVED_WBS | FS | 0 | 264 | 267 | 480 | 477 | 213 |  | HAR-0807 |  |
| HAR-0809 | HAR.EXTERNAL_WORKS.SITE | EXTERNAL_WORKS | SITE | Site lighting and exterior fixtures | 2 | ILLUSTRATIVE_CREW_PLANNING_SEED_NOT_APPROVED | NOT_MEASURED | GENERAL_CIVIL_REFERENCE | REFERENCE_ONLY_NOT_ACTUAL_SITE_ALLOCATION | ARC-01/05, BOQ-WITHOUT-BASEMENT, SCOPE_TO_CONFIRM | PROPOSED_NOT_ADMITTED_TO_APPROVED_WBS | FS | 0 | 267 | 269 | 482 | 480 | 213 |  | HAR-0808 |  |
| HAR-0810 | HAR.EXTERNAL_WORKS.SITE | EXTERNAL_WORKS | SITE | Accessible entrance, signage and external fire route | 2 | ILLUSTRATIVE_CREW_PLANNING_SEED_NOT_APPROVED | NOT_MEASURED | GENERAL_CIVIL_REFERENCE | REFERENCE_ONLY_NOT_ACTUAL_SITE_ALLOCATION | ARC-01/05, BOQ-WITHOUT-BASEMENT, SCOPE_TO_CONFIRM | PROPOSED_NOT_ADMITTED_TO_APPROVED_WBS | FS | 0 | 269 | 271 | 484 | 482 | 213 |  | HAR-0809 |  |
| HAR-0811 | HAR.EXTERNAL_WORKS.SITE | EXTERNAL_WORKS | SITE | Site waste clearance and landscaping / reinstatement | 3 | ILLUSTRATIVE_CREW_PLANNING_SEED_NOT_APPROVED | NOT_MEASURED | GENERAL_CIVIL_REFERENCE | REFERENCE_ONLY_NOT_ACTUAL_SITE_ALLOCATION | ARC-01/05, BOQ-WITHOUT-BASEMENT, SCOPE_TO_CONFIRM | PROPOSED_NOT_ADMITTED_TO_APPROVED_WBS | FS | 0 | 271 | 274 | 487 | 484 | 213 |  | HAR-0810 |  |
| HAR-0812 | HAR.EXTERNAL_WORKS.SITE | EXTERNAL_WORKS | SITE | External service pressure/leak and drainage flow test | 0 | MILESTONE_ZERO_DURATION | NOT_MEASURED | GENERAL_CIVIL_REFERENCE | REFERENCE_ONLY_NOT_ACTUAL_SITE_ALLOCATION | ARC-01/05, BOQ-WITHOUT-BASEMENT, SCOPE_TO_CONFIRM | PROPOSED_NOT_ADMITTED_TO_APPROVED_WBS | FS | 0 | 274 | 274 | 487 | 487 | 213 |  | HAR-0811 | True |
| HAR-0813 | HAR.EXTERNAL_WORKS.SITE | EXTERNAL_WORKS | SITE | External area snag / property boundary QA | 2 | ILLUSTRATIVE_CREW_PLANNING_SEED_NOT_APPROVED | NOT_MEASURED | GENERAL_CIVIL_REFERENCE | REFERENCE_ONLY_NOT_ACTUAL_SITE_ALLOCATION | ARC-01/05, BOQ-WITHOUT-BASEMENT, SCOPE_TO_CONFIRM | PROPOSED_NOT_ADMITTED_TO_APPROVED_WBS | FS | 0 | 274 | 276 | 489 | 487 | 213 |  | HAR-0812 |  |
| HAR-0814 | HAR.MILESTONES.HANDOVER | MILESTONES | HANDOVER | All 5 floor fit-outs, terraces and site externals ready for integrated testing | 0 | MILESTONE_ZERO_DURATION | NOT_MEASURED | GENERAL_CIVIL_REFERENCE | REFERENCE_ONLY_NOT_ACTUAL_SITE_ALLOCATION | ARC-2026, STR-2026, RPT-2083, NEP-DUDBC-2081 | PROPOSED_NOT_ADMITTED_TO_APPROVED_WBS | FS | 0 | 489 | 489 | 489 | 489 | 0 | True | HAR-0518, HAR-0582, HAR-0646, HAR-0710, HAR-0775, HAR-0790, HAR-0813 |  |
| HAR-0815 | HAR.COMMISSIONING.WHOLE_BUILDING | COMMISSIONING | WHOLE_BUILDING | Electrical distribution board checks and circuit schedules | 2 | ILLUSTRATIVE_CREW_PLANNING_SEED_NOT_APPROVED | NOT_MEASURED | QA_SPECIALIST | REFERENCE_ONLY_NOT_ACTUAL_SITE_ALLOCATION | ARC-2026, STR-2026, RPT-2083, SCOPE_TO_CONFIRM | PROPOSED_NOT_ADMITTED_TO_APPROVED_WBS | FS | 0 | 489 | 491 | 491 | 489 | 0 | True | HAR-0814 |  |
| HAR-0816 | HAR.COMMISSIONING.WHOLE_BUILDING | COMMISSIONING | WHOLE_BUILDING | Earth continuity, insulation resistance and polarity verification | 2 | ILLUSTRATIVE_CREW_PLANNING_SEED_NOT_APPROVED | NOT_MEASURED | QA_SPECIALIST | REFERENCE_ONLY_NOT_ACTUAL_SITE_ALLOCATION | ARC-2026, STR-2026, RPT-2083, SCOPE_TO_CONFIRM | PROPOSED_NOT_ADMITTED_TO_APPROVED_WBS | FS | 0 | 491 | 493 | 493 | 491 | 0 | True | HAR-0815 |  |
| HAR-0817 | HAR.COMMISSIONING.WHOLE_BUILDING | COMMISSIONING | WHOLE_BUILDING | Emergency and egress lighting operational demonstration | 1 | ILLUSTRATIVE_CREW_PLANNING_SEED_NOT_APPROVED | NOT_MEASURED | QA_SPECIALIST | REFERENCE_ONLY_NOT_ACTUAL_SITE_ALLOCATION | ARC-2026, STR-2026, RPT-2083, SCOPE_TO_CONFIRM | PROPOSED_NOT_ADMITTED_TO_APPROVED_WBS | FS | 0 | 493 | 494 | 494 | 493 | 0 | True | HAR-0816 |  |
| HAR-0818 | HAR.COMMISSIONING.WHOLE_BUILDING | COMMISSIONING | WHOLE_BUILDING | Fire alarm and detectors cause-effect commissioning | 2 | ILLUSTRATIVE_CREW_PLANNING_SEED_NOT_APPROVED | NOT_MEASURED | QA_SPECIALIST | REFERENCE_ONLY_NOT_ACTUAL_SITE_ALLOCATION | ARC-2026, STR-2026, RPT-2083, SCOPE_TO_CONFIRM | PROPOSED_NOT_ADMITTED_TO_APPROVED_WBS | FS | 0 | 494 | 496 | 496 | 494 | 0 | True | HAR-0817 |  |
| HAR-0819 | HAR.COMMISSIONING.WHOLE_BUILDING | COMMISSIONING | WHOLE_BUILDING | Fire extinguisher/standpipe checks where designed | 1 | ILLUSTRATIVE_CREW_PLANNING_SEED_NOT_APPROVED | NOT_MEASURED | QA_SPECIALIST | REFERENCE_ONLY_NOT_ACTUAL_SITE_ALLOCATION | ARC-2026, STR-2026, RPT-2083, SCOPE_TO_CONFIRM | PROPOSED_NOT_ADMITTED_TO_APPROVED_WBS | FS | 0 | 496 | 497 | 497 | 496 | 0 | True | HAR-0818 |  |
| HAR-0820 | HAR.COMMISSIONING.WHOLE_BUILDING | COMMISSIONING | WHOLE_BUILDING | Water supply flushing and disinfection | 2 | ILLUSTRATIVE_CREW_PLANNING_SEED_NOT_APPROVED | NOT_MEASURED | QA_SPECIALIST | REFERENCE_ONLY_NOT_ACTUAL_SITE_ALLOCATION | ARC-2026, STR-2026, RPT-2083, SCOPE_TO_CONFIRM | PROPOSED_NOT_ADMITTED_TO_APPROVED_WBS | FS | 0 | 497 | 499 | 499 | 497 | 0 | True | HAR-0819 |  |
| HAR-0821 | HAR.COMMISSIONING.WHOLE_BUILDING | COMMISSIONING | WHOLE_BUILDING | Internal water pressure tests and leakage rectification | 2 | ILLUSTRATIVE_CREW_PLANNING_SEED_NOT_APPROVED | NOT_MEASURED | QA_SPECIALIST | REFERENCE_ONLY_NOT_ACTUAL_SITE_ALLOCATION | ARC-2026, STR-2026, RPT-2083, SCOPE_TO_CONFIRM | PROPOSED_NOT_ADMITTED_TO_APPROVED_WBS | FS | 0 | 499 | 501 | 501 | 499 | 0 | True | HAR-0820 |  |
| HAR-0822 | HAR.COMMISSIONING.WHOLE_BUILDING | COMMISSIONING | WHOLE_BUILDING | Sewer, vent stack and storm-water flow tests | 2 | ILLUSTRATIVE_CREW_PLANNING_SEED_NOT_APPROVED | NOT_MEASURED | QA_SPECIALIST | REFERENCE_ONLY_NOT_ACTUAL_SITE_ALLOCATION | ARC-2026, STR-2026, RPT-2083, SCOPE_TO_CONFIRM | PROPOSED_NOT_ADMITTED_TO_APPROVED_WBS | FS | 0 | 501 | 503 | 503 | 501 | 0 | True | HAR-0821 |  |
| HAR-0823 | HAR.COMMISSIONING.WHOLE_BUILDING | COMMISSIONING | WHOLE_BUILDING | Lift equipment acceptance, statutory inspection and commissioning | 4 | ILLUSTRATIVE_CREW_PLANNING_SEED_NOT_APPROVED | NOT_MEASURED | QA_SPECIALIST | REFERENCE_ONLY_NOT_ACTUAL_SITE_ALLOCATION | ARC-2026, STR-2026, RPT-2083, SCOPE_TO_CONFIRM | PROPOSED_NOT_ADMITTED_TO_APPROVED_WBS | FS | 0 | 503 | 507 | 507 | 503 | 0 | True | HAR-0822 |  |
| HAR-0824 | HAR.COMMISSIONING.WHOLE_BUILDING | COMMISSIONING | WHOLE_BUILDING | Ventilation / exhaust fan operation and air-flow tests | 2 | ILLUSTRATIVE_CREW_PLANNING_SEED_NOT_APPROVED | NOT_MEASURED | QA_SPECIALIST | REFERENCE_ONLY_NOT_ACTUAL_SITE_ALLOCATION | ARC-2026, STR-2026, RPT-2083, SCOPE_TO_CONFIRM | PROPOSED_NOT_ADMITTED_TO_APPROVED_WBS | FS | 0 | 507 | 509 | 509 | 507 | 0 | True | HAR-0823 |  |
| HAR-0825 | HAR.COMMISSIONING.WHOLE_BUILDING | COMMISSIONING | WHOLE_BUILDING | Wet-area / terrace final water-tightness inspection | 2 | ILLUSTRATIVE_CREW_PLANNING_SEED_NOT_APPROVED | NOT_MEASURED | QA_SPECIALIST | REFERENCE_ONLY_NOT_ACTUAL_SITE_ALLOCATION | ARC-2026, STR-2026, RPT-2083, SCOPE_TO_CONFIRM | PROPOSED_NOT_ADMITTED_TO_APPROVED_WBS | FS | 0 | 509 | 511 | 511 | 509 | 0 | True | HAR-0824 |  |
| HAR-0826 | HAR.COMMISSIONING.WHOLE_BUILDING | COMMISSIONING | WHOLE_BUILDING | Surface finishes, glazing, lock and ironmongery inspections | 2 | ILLUSTRATIVE_CREW_PLANNING_SEED_NOT_APPROVED | NOT_MEASURED | QA_SPECIALIST | REFERENCE_ONLY_NOT_ACTUAL_SITE_ALLOCATION | ARC-2026, STR-2026, RPT-2083, SCOPE_TO_CONFIRM | PROPOSED_NOT_ADMITTED_TO_APPROVED_WBS | FS | 0 | 511 | 513 | 513 | 511 | 0 | True | HAR-0825 |  |
| HAR-0827 | HAR.COMMISSIONING.WHOLE_BUILDING | COMMISSIONING | WHOLE_BUILDING | Structural nonconformance and change-order closure | 2 | ILLUSTRATIVE_CREW_PLANNING_SEED_NOT_APPROVED | NOT_MEASURED | QA_SPECIALIST | REFERENCE_ONLY_NOT_ACTUAL_SITE_ALLOCATION | ARC-2026, STR-2026, RPT-2083, SCOPE_TO_CONFIRM | PROPOSED_NOT_ADMITTED_TO_APPROVED_WBS | FS | 0 | 513 | 515 | 515 | 513 | 0 | True | HAR-0826 |  |
| HAR-0828 | HAR.COMMISSIONING.WHOLE_BUILDING | COMMISSIONING | WHOLE_BUILDING | Materials certificates and concrete cube-results consolidation | 2 | ILLUSTRATIVE_CREW_PLANNING_SEED_NOT_APPROVED | NOT_MEASURED | QA_SPECIALIST | REFERENCE_ONLY_NOT_ACTUAL_SITE_ALLOCATION | ARC-2026, STR-2026, RPT-2083, SCOPE_TO_CONFIRM | PROPOSED_NOT_ADMITTED_TO_APPROVED_WBS | FS | 0 | 515 | 517 | 517 | 515 | 0 | True | HAR-0827 |  |
| HAR-0829 | HAR.COMMISSIONING.WHOLE_BUILDING | COMMISSIONING | WHOLE_BUILDING | As-built architecture and structural setting-out markups | 2 | ILLUSTRATIVE_CREW_PLANNING_SEED_NOT_APPROVED | NOT_MEASURED | QA_SPECIALIST | REFERENCE_ONLY_NOT_ACTUAL_SITE_ALLOCATION | ARC-2026, STR-2026, RPT-2083, SCOPE_TO_CONFIRM | PROPOSED_NOT_ADMITTED_TO_APPROVED_WBS | FS | 0 | 517 | 519 | 519 | 517 | 0 | True | HAR-0828 |  |
| HAR-0830 | HAR.COMMISSIONING.WHOLE_BUILDING | COMMISSIONING | WHOLE_BUILDING | As-built MEP single-line, riser and plumbing markups | 2 | ILLUSTRATIVE_CREW_PLANNING_SEED_NOT_APPROVED | NOT_MEASURED | QA_SPECIALIST | REFERENCE_ONLY_NOT_ACTUAL_SITE_ALLOCATION | ARC-2026, STR-2026, RPT-2083, SCOPE_TO_CONFIRM | PROPOSED_NOT_ADMITTED_TO_APPROVED_WBS | FS | 0 | 519 | 521 | 521 | 519 | 0 | True | HAR-0829 |  |
| HAR-0831 | HAR.COMMISSIONING.WHOLE_BUILDING | COMMISSIONING | WHOLE_BUILDING | Equipment warranties, manuals and spares handover | 2 | ILLUSTRATIVE_CREW_PLANNING_SEED_NOT_APPROVED | NOT_MEASURED | QA_SPECIALIST | REFERENCE_ONLY_NOT_ACTUAL_SITE_ALLOCATION | ARC-2026, STR-2026, RPT-2083, SCOPE_TO_CONFIRM | PROPOSED_NOT_ADMITTED_TO_APPROVED_WBS | FS | 0 | 521 | 523 | 523 | 521 | 0 | True | HAR-0830 |  |
| HAR-0832 | HAR.COMMISSIONING.WHOLE_BUILDING | COMMISSIONING | WHOLE_BUILDING | Life safety and operations training | 2 | ILLUSTRATIVE_CREW_PLANNING_SEED_NOT_APPROVED | NOT_MEASURED | QA_SPECIALIST | REFERENCE_ONLY_NOT_ACTUAL_SITE_ALLOCATION | ARC-2026, STR-2026, RPT-2083, SCOPE_TO_CONFIRM | PROPOSED_NOT_ADMITTED_TO_APPROVED_WBS | FS | 0 | 523 | 525 | 525 | 523 | 0 | True | HAR-0831 |  |
| HAR-0833 | HAR.COMMISSIONING.WHOLE_BUILDING | COMMISSIONING | WHOLE_BUILDING | Defect snag schedule and room-by-room closeout | 3 | ILLUSTRATIVE_CREW_PLANNING_SEED_NOT_APPROVED | NOT_MEASURED | QA_SPECIALIST | REFERENCE_ONLY_NOT_ACTUAL_SITE_ALLOCATION | ARC-2026, STR-2026, RPT-2083, SCOPE_TO_CONFIRM | PROPOSED_NOT_ADMITTED_TO_APPROVED_WBS | FS | 0 | 525 | 528 | 528 | 525 | 0 | True | HAR-0832 |  |
| HAR-0834 | HAR.COMMISSIONING.WHOLE_BUILDING | COMMISSIONING | WHOLE_BUILDING | Independent engineer / municipal inspections when applicable | 0 | MILESTONE_ZERO_DURATION | NOT_MEASURED | QA_SPECIALIST | REFERENCE_ONLY_NOT_ACTUAL_SITE_ALLOCATION | ARC-2026, STR-2026, RPT-2083, SCOPE_TO_CONFIRM | PROPOSED_NOT_ADMITTED_TO_APPROVED_WBS | FS | 0 | 528 | 528 | 528 | 528 | 0 | True | HAR-0833 | True |
| HAR-0835 | HAR.COMMISSIONING.WHOLE_BUILDING | COMMISSIONING | WHOLE_BUILDING | Owner walkthrough and defect list signoff | 0 | MILESTONE_ZERO_DURATION | NOT_MEASURED | QA_SPECIALIST | REFERENCE_ONLY_NOT_ACTUAL_SITE_ALLOCATION | ARC-2026, STR-2026, RPT-2083, SCOPE_TO_CONFIRM | PROPOSED_NOT_ADMITTED_TO_APPROVED_WBS | FS | 0 | 528 | 528 | 528 | 528 | 0 | True | HAR-0834 | True |
| HAR-0836 | HAR.COMMISSIONING.WHOLE_BUILDING | COMMISSIONING | WHOLE_BUILDING | Final cleaning, removal of temporary works | 2 | ILLUSTRATIVE_CREW_PLANNING_SEED_NOT_APPROVED | NOT_MEASURED | QA_SPECIALIST | REFERENCE_ONLY_NOT_ACTUAL_SITE_ALLOCATION | ARC-2026, STR-2026, RPT-2083, SCOPE_TO_CONFIRM | PROPOSED_NOT_ADMITTED_TO_APPROVED_WBS | FS | 0 | 528 | 530 | 530 | 528 | 0 | True | HAR-0835 |  |
| HAR-0837 | HAR.COMMISSIONING.WHOLE_BUILDING | COMMISSIONING | WHOLE_BUILDING | Handover document and photograph record final QA | 2 | ILLUSTRATIVE_CREW_PLANNING_SEED_NOT_APPROVED | NOT_MEASURED | QA_SPECIALIST | REFERENCE_ONLY_NOT_ACTUAL_SITE_ALLOCATION | ARC-2026, STR-2026, RPT-2083, SCOPE_TO_CONFIRM | PROPOSED_NOT_ADMITTED_TO_APPROVED_WBS | FS | 0 | 530 | 532 | 532 | 530 | 0 | True | HAR-0836 |  |
| HAR-0838 | HAR.COMMISSIONING.WHOLE_BUILDING | COMMISSIONING | WHOLE_BUILDING | Practical completion milestone - unapproved until signed | 0 | MILESTONE_ZERO_DURATION | NOT_MEASURED | QA_SPECIALIST | REFERENCE_ONLY_NOT_ACTUAL_SITE_ALLOCATION | ARC-2026, STR-2026, RPT-2083, SCOPE_TO_CONFIRM | PROPOSED_NOT_ADMITTED_TO_APPROVED_WBS | FS | 0 | 532 | 532 | 532 | 532 | 0 | True | HAR-0837 | True |
| HAR-0839 | HAR.MILESTONES.END | MILESTONES | END | Provisional schedule network end / NOT construction approval | 0 | MILESTONE_ZERO_DURATION | NOT_MEASURED | GENERAL_CIVIL_REFERENCE | REFERENCE_ONLY_NOT_ACTUAL_SITE_ALLOCATION | OWNER-DIRECTION-2026-11-13 | PROPOSED_NOT_ADMITTED_TO_APPROVED_WBS | FS | 0 | 532 | 532 | 532 | 532 | 0 | True | HAR-0838 |  |
